# elaboration_project_plan

Schedule from MS Project, 2007-03-01 to 2007-11-12, A marks actual dates.
Duke University

## Calendars

- Standard: Mon-Fri 08:00-12:00, 13:00-17:00; Sat-Sun off.

## Resources

| Resource |
| --- |
| Patrick |
| Ram |
| Elaborators |
| PriyatamElaborators |
| Development team |
| Pri |
| Priyatam |
| Ramakrishna |
| Kruttik |
| Manav |
| Developers |
| Development teatm |
| BAH |
| Adopters |
| Pryatam |
| Kula |

## Schedule

| ID | WBS | Task | Type | Duration | Start | Finish | Predecessors | Complete | Remaining | Total slack | Constraint | Resources | Work | Actual work |
| --- | --- | --- | --- | --- | --- | --- | --- | --- | --- | --- | --- | --- | --- | --- |
| 1 | 1 | **Iteration 1 (eligibility, study personnel, registration management, multi-site study)** |  | 33d | 2007-03-01 A | 2007-04-16 |  | 59% | 13.37d | 149d |  |  | 21056h | 12808.6h |
| 2 | 1.1 | Iteration start | milestone | 0d | 2007-03-01 | 2007-03-01 |  |  |  | 0d | start no earlier than 2007-03-01 |  |  |  |
| 3 | 1.2 | **Project Management** |  | 30d | 2007-03-01 A | 2007-04-11 | 2 | 57% | 12.86d | 152d |  | Patrick; Adopters; BAH | 2640h | 1531.42h |
| 4 | 1.2.1 | **Draft project plan (task 1.1)** |  | 30d | 2007-03-01 A | 2007-04-11 |  | 67% | 10d | 152d |  | Patrick; Adopters; BAH | 960h | 640h |
| 5 | 1.2.1.1 | Developer draft |  | 5d | 2007-03-01 A | 2007-03-07 A |  | 100% |  |  |  | Patrick | 40h | 40h |
| 6 | 1.2.1.2 | BAH review |  | 5d | 2007-03-08 A | 2007-03-14 A | 5 | 100% |  |  |  | BAH | 40h | 40h |
| 7 | 1.2.1.3 | Developer update |  | 5d | 2007-03-15 A | 2007-03-21 A | 6 | 100% |  |  |  | Patrick | 40h | 40h |
| 8 | 1.2.1.4 | Adopter review |  | 3d | 2007-03-22 A | 2007-03-26 A | 7 | 100% |  |  |  | Adopters | 24h | 24h |
| 9 | 1.2.1.5 | Developer update |  | 2d | 2007-03-27 A | 2007-03-28 A | 8 | 100% |  |  |  | Patrick | 16h | 16h |
| 10 | 1.2.1.6 | Deliver project plan to BAH (task 1.1) | milestone | 0d | 2007-03-28 A | 2007-03-28 A | 9 | 100% |  |  |  | Patrick |  |  |
| 11 | 1.2.1.7 | BAH review project plan (task 1.1) |  | 10d | 2007-03-29 | 2007-04-11 | 10 |  |  | 145d |  | BAH | 80h |  |
| 12 | 1.2.2 | **Update risk matrix (task 1.4.1)** |  | 20d | 2007-03-01 A | 2007-03-28 |  | 50% | 10d | 162d |  | Patrick; BAH | 480h | 240h |
| 13 | 1.2.2.1 | Update risk matrix for week 1 |  | 5d | 2007-03-01 A | 2007-03-07 A |  | 100% |  |  |  | Patrick | 40h | 40h |
| 14 | 1.2.2.2 | Update risk matrix for week 2 |  | 5d | 2007-03-08 A | 2007-03-14 A | 13 | 100% |  |  |  | Patrick | 40h | 40h |
| 15 | 1.2.2.3 | Deliver risk matrix to BAH (task 1.4.1) | milestone | 0d | 2007-03-14 A | 2007-03-14 A | 14 | 100% |  |  |  | Patrick |  |  |
| 16 | 1.2.2.4 | BAH review risk matrix (task 1.4.1) |  | 10d | 2007-03-15 | 2007-03-28 | 15 |  |  | 162d |  | BAH | 80h |  |
| 17 | 1.2.3 | **Monthly report (task 1.3.1)** |  | 20d | 2007-03-15 A | 2007-04-11 | 15 | 50% | 10d | 152d |  | Patrick; BAH | 480h | 240h |
| 18 | 1.2.3.1 | Update risk matrix for week 3 |  | 5d | 2007-03-15 A | 2007-03-21 A |  | 100% |  |  |  | Patrick | 40h | 40h |
| 19 | 1.2.3.2 | Update risk matrix for week 4 |  | 5d | 2007-03-22 A | 2007-03-28 A | 18 | 100% |  |  |  | Patrick | 40h | 40h |
| 20 | 1.2.3.3 | Deliver monthly report and risk matrix to BAH (task 1.3.1) | milestone | 0d | 2007-03-28 A | 2007-03-28 A | 19 | 100% |  |  |  | Patrick |  |  |
| 21 | 1.2.3.4 | BAH review monthly report and risk matrix (task 1.3.1) |  | 10d | 2007-03-29 | 2007-04-11 | 20 |  |  | 152d |  | BAH | 80h |  |
| 22 | 1.3 | **Requirements and use cases** |  | 32d | 2007-03-01 A | 2007-04-13 | 2 | 38% | 19.93d | 150d |  | Developers; Adopters; BAH | 4048h | 1711.43h |
| 23 | 1.3.1 | **Create level 1 use cases and requirements** |  | 4d | 2007-03-01 A | 2007-03-06 |  | 83% | 0.67d | 0d |  | Developers | 288h | 250.67h |
| 24 | 1.3.1.1 | **Level 1 use cases for eligibility** |  | 2d | 2007-03-01 A | 2007-03-02 A |  | 100% |  |  |  | Kruttik; Priyatam | 64h | 64h |
| 25 | 1.3.1.1.1 | Use case document (task 3.1.1) |  | 1d | 2007-03-01 A | 2007-03-01 A |  | 100% |  |  |  | Kruttik; Priyatam | 16h | 16h |
| 26 | 1.3.1.1.2 | Requirements document (3.2.1) |  | 1d | 2007-03-02 A | 2007-03-02 A | 25 | 100% |  |  |  | Kruttik; Priyatam | 16h | 16h |

| ID | WBS | Task | Duration | Start | Finish | Predecessors | Complete | Remaining | Total slack | Free slack | Resources | Work | Actual work |
| --- | --- | --- | --- | --- | --- | --- | --- | --- | --- | --- | --- | --- | --- |
| 27 | 1.3.1.2 | **Level 1 use cases for study personnel** | 2d | 2007-03-01 A | 2007-03-02 A |  | 100% |  |  |  | Priyatam; Kula | 64h | 64h |
| 28 | 1.3.1.2.1 | Use case document (task 3.1.1) | 1d | 2007-03-01 A | 2007-03-01 A |  | 100% |  |  |  | Priyatam; Kula | 16h | 16h |
| 29 | 1.3.1.2.2 | Requirements document (3.2.1) | 1d | 2007-03-02 A | 2007-03-02 A | 28 | 100% |  |  |  | Priyatam; Kula | 16h | 16h |
| 30 | 1.3.1.3 | **Level 1 use cases for registration management** | 2d | 2007-03-01 A | 2007-03-02 A |  | 100% |  |  |  | Ramakrishna | 32h | 32h |
| 31 | 1.3.1.3.1 | Use case document (task 3.1.1) | 1d | 2007-03-01 A | 2007-03-01 A |  | 100% |  |  |  | Ramakrishna | 8h | 8h |
| 32 | 1.3.1.3.2 | Requirements document (3.2.1) | 1d | 2007-03-02 A | 2007-03-02 A | 31 | 100% |  |  |  | Ramakrishna | 8h | 8h |
| 33 | 1.3.1.4 | **Level 1 use cases for multi-site study** | 4d | 2007-03-01 A | 2007-03-06 A |  | 100% |  |  |  | Manav | 64h | 64h |
| 34 | 1.3.1.4.1 | Use case document (task 3.1.1) | 2d | 2007-03-01 A | 2007-03-02 A |  | 100% |  |  |  | Manav | 16h | 16h |
| 35 | 1.3.1.4.2 | Requirements document (3.2.1) | 2d | 2007-03-05 A | 2007-03-06 A | 34 | 100% |  |  |  | Manav | 16h | 16h |
| 36 | 1.3.1.5 | **Level 1 use cases for C3D integration** | 2d | 2007-03-01 | 2007-03-02 |  |  |  | 2d |  | Manav | 32h |  |
| 37 | 1.3.1.5.1 | Use case document (task 3.1.1) | 1d | 2007-03-01 | 2007-03-01 |  |  |  | 2d | 0d | Manav | 8h |  |
| 38 | 1.3.1.5.2 | Requirements document (3.2.1) | 1d | 2007-03-02 | 2007-03-02 | 37 |  |  | 2d |  | Manav | 8h |  |
| 39 | 1.3.2 | **Update use case document (task 3.1.1, task 5.2.1)** | 9d | 2007-03-07 A | 2007-03-19 | 23 | 80% | 1.8d | 160d | 0d | Developers; Adopters | 1416h | 1171.2h |
| 40 | 1.3.2.1 | **Update eligibility use cases** | 9d | 2007-03-07 A | 2007-03-19 A |  | 100% |  |  |  | Kruttik; Adopters; Priyatam | 312h | 312h |
| 41 | 1.3.2.1.1 | Developer update | 2d | 2007-03-07 A | 2007-03-08 A |  | 100% |  |  |  | Kruttik; Priyatam | 32h | 32h |
| 42 | 1.3.2.1.2 | Adopter review | 5d | 2007-03-09 A | 2007-03-15 A | 41 | 100% |  |  |  | Adopters | 40h | 40h |
| 43 | 1.3.2.1.3 | Developer update | 1d | 2007-03-16 A | 2007-03-16 A | 42 | 100% |  |  |  | Kruttik; Priyatam | 16h | 16h |
| 44 | 1.3.2.1.4 | Adopter sign-off | 1d | 2007-03-19 A | 2007-03-19 A | 43 | 100% |  |  |  | Adopters | 8h | 8h |
| 45 | 1.3.2.2 | **Update study personnel use cases** | 9d | 2007-03-07 A | 2007-03-19 A |  | 100% |  |  |  | Priyatam; Adopters; Kula | 312h | 312h |
| 46 | 1.3.2.2.1 | Developer update | 2d | 2007-03-07 A | 2007-03-08 A |  | 100% |  |  |  | Priyatam; Kula | 32h | 32h |
| 47 | 1.3.2.2.2 | Adopter review | 5d | 2007-03-09 A | 2007-03-15 A | 46 | 100% |  |  |  | Adopters | 40h | 40h |
| 48 | 1.3.2.2.3 | Developer update | 1d | 2007-03-16 A | 2007-03-16 A | 47 | 100% |  |  |  | Priyatam; Kula | 16h | 16h |
| 49 | 1.3.2.2.4 | Adopter sign-off | 1d | 2007-03-19 A | 2007-03-19 A | 48 | 100% |  |  |  | Adopters | 8h | 8h |
| 50 | 1.3.2.3 | **Update registration management use cases** | 9d | 2007-03-07 A | 2007-03-19 A |  | 100% |  |  |  | Ramakrishna; Adopters | 216h | 216h |
| 51 | 1.3.2.3.1 | Developer update | 2d | 2007-03-07 A | 2007-03-08 A |  | 100% |  |  |  | Ramakrishna | 16h | 16h |
| 52 | 1.3.2.3.2 | Adopter review | 5d | 2007-03-09 A | 2007-03-15 A | 51 | 100% |  |  |  | Adopters | 40h | 40h |
| 53 | 1.3.2.3.3 | Developer update | 1d | 2007-03-16 A | 2007-03-16 A | 52 | 100% |  |  |  | Ramakrishna | 8h | 8h |
| 54 | 1.3.2.3.4 | Adopter sign-off | 1d | 2007-03-19 A | 2007-03-19 A | 53 | 100% |  |  |  | Adopters | 8h | 8h |

| ID | WBS | Task | Duration | Start | Finish | Predecessors | Complete | Total slack | Free slack | Resources | Work | Actual work |
| --- | --- | --- | --- | --- | --- | --- | --- | --- | --- | --- | --- | --- |
| 55 | 1.3.2.4 | **Update multi-site trial use cases** | 9d | 2007-03-07 A | 2007-03-19 A |  | 100% |  |  | Manav; Adopters | 216h | 216h |
| 56 | 1.3.2.4.1 | Developer update | 2d | 2007-03-07 A | 2007-03-08 A |  | 100% |  |  | Manav | 16h | 16h |
| 57 | 1.3.2.4.2 | Adopter review | 5d | 2007-03-09 A | 2007-03-15 A | 56 | 100% |  |  | Adopters | 40h | 40h |
| 58 | 1.3.2.4.3 | Developer update | 1d | 2007-03-16 A | 2007-03-16 A | 57 | 100% |  |  | Manav | 8h | 8h |
| 59 | 1.3.2.4.4 | Adopter sign-off | 1d | 2007-03-19 A | 2007-03-19 A | 58 | 100% |  |  | Adopters | 8h | 8h |
| 60 | 1.3.2.5 | **Update C3D integration use cases** | 9d | 2007-03-07 | 2007-03-19 |  |  | 160d |  | Manav; Adopters | 216h |  |
| 61 | 1.3.2.5.1 | Developer update | 2d | 2007-03-07 | 2007-03-08 |  |  | 120d | 0d | Manav | 16h |  |
| 62 | 1.3.2.5.2 | Adopter review | 5d | 2007-03-09 | 2007-03-15 | 61 |  | 120d | 0d | Adopters | 40h |  |
| 63 | 1.3.2.5.3 | Developer update | 1d | 2007-03-16 | 2007-03-16 | 62 |  | 120d | 0d | Manav | 8h |  |
| 64 | 1.3.2.5.4 | Adopter sign-off | 1d | 2007-03-19 | 2007-03-19 | 63 |  | 120d |  | Adopters | 8h |  |
| 65 | 1.3.3 | **Update requirements document (task 3.2.1, task 5.3.1)** | 9d | 2007-03-20 | 2007-03-30 | 39 |  | 160d |  | Developers; Adopters | 1416h |  |
| 66 | 1.3.3.1 | **Update eligibility requirements** | 9d | 2007-03-20 | 2007-03-30 |  |  | 160d |  | Kruttik; Priyatam; Adopters | 312h |  |
| 67 | 1.3.3.1.1 | Developer update | 2d | 2007-03-20 | 2007-03-21 |  |  | 120d | 0d | Kruttik; Priyatam | 32h |  |
| 68 | 1.3.3.1.2 | Adopter review | 5d | 2007-03-22 | 2007-03-28 | 67 |  | 120d | 0d | Adopters | 40h |  |
| 69 | 1.3.3.1.3 | Developer update | 1d | 2007-03-29 | 2007-03-29 | 68 |  | 120d | 0d | Kruttik; Priyatam | 16h |  |
| 70 | 1.3.3.1.4 | Adopter sign-off | 1d | 2007-03-30 | 2007-03-30 | 69 |  | 120d |  | Adopters | 8h |  |
| 71 | 1.3.3.2 | **Update study personel requirements** | 9d | 2007-03-20 | 2007-03-30 |  |  | 160d |  | Priyatam; Adopters; Kula | 312h |  |
| 72 | 1.3.3.2.1 | Developer update | 2d | 2007-03-20 | 2007-03-21 |  |  | 120d | 0d | Priyatam; Kula | 32h |  |
| 73 | 1.3.3.2.2 | Adopter review | 5d | 2007-03-22 | 2007-03-28 | 72 |  | 120d | 0d | Adopters | 40h |  |
| 74 | 1.3.3.2.3 | Developer update | 1d | 2007-03-29 | 2007-03-29 | 73 |  | 120d | 0d | Priyatam; Kula | 16h |  |
| 75 | 1.3.3.2.4 | Adopter sign-off | 1d | 2007-03-30 | 2007-03-30 | 74 |  | 120d |  | Adopters | 8h |  |
| 76 | 1.3.3.3 | **Update registration management requirements** | 9d | 2007-03-20 | 2007-03-30 |  |  | 160d |  | Ramakrishna; Adopters | 216h |  |
| 77 | 1.3.3.3.1 | Developer update | 2d | 2007-03-20 | 2007-03-21 |  |  | 120d | 0d | Ramakrishna | 16h |  |
| 78 | 1.3.3.3.2 | Adopter review | 5d | 2007-03-22 | 2007-03-28 | 77 |  | 120d | 0d | Adopters | 40h |  |
| 79 | 1.3.3.3.3 | Developer update | 1d | 2007-03-29 | 2007-03-29 | 78 |  | 120d | 0d | Ramakrishna | 8h |  |
| 80 | 1.3.3.3.4 | Adopter sign-off | 1d | 2007-03-30 | 2007-03-30 | 79 |  | 120d |  | Adopters | 8h |  |

| ID | WBS | Task | Type | Duration | Start | Finish | Predecessors | Complete | Remaining | Total slack | Free slack | Resources | Work | Actual work |
| --- | --- | --- | --- | --- | --- | --- | --- | --- | --- | --- | --- | --- | --- | --- |
| 81 | 1.3.3.4 | **Update multi-site trial requirements** |  | 9d | 2007-03-20 | 2007-03-30 |  |  |  | 160d |  | Manav; Adopters | 216h |  |
| 82 | 1.3.3.4.1 | Developer update |  | 2d | 2007-03-20 | 2007-03-21 |  |  |  | 120d | 0d | Manav | 16h |  |
| 83 | 1.3.3.4.2 | Adopter review |  | 5d | 2007-03-22 | 2007-03-28 | 82 |  |  | 120d | 0d | Adopters | 40h |  |
| 84 | 1.3.3.4.3 | Developer update |  | 1d | 2007-03-29 | 2007-03-29 | 83 |  |  | 120d | 0d | Manav | 8h |  |
| 85 | 1.3.3.4.4 | Adopter sign-off |  | 1d | 2007-03-30 | 2007-03-30 | 84 |  |  | 120d |  | Adopters | 8h |  |
| 86 | 1.3.3.5 | **Update C3D integration requirements** |  | 9d | 2007-03-20 | 2007-03-30 |  |  |  | 160d |  | Manav; Adopters | 216h |  |
| 87 | 1.3.3.5.1 | Developer update |  | 2d | 2007-03-20 | 2007-03-21 |  |  |  | 120d | 0d | Manav | 16h |  |
| 88 | 1.3.3.5.2 | Adopter review |  | 5d | 2007-03-22 | 2007-03-28 | 87 |  |  | 120d | 0d | Adopters | 40h |  |
| 89 | 1.3.3.5.3 | Developer update |  | 1d | 2007-03-29 | 2007-03-29 | 88 |  |  | 120d | 0d | Manav | 8h |  |
| 90 | 1.3.3.5.4 | Adopter sign-off |  | 1d | 2007-03-30 | 2007-03-30 | 89 |  |  | 120d |  | Adopters | 8h |  |
| 91 | 1.3.4 | Developer deliver use case document to BAH (task 3.1.1, task 5.2.1) | milestone | 0d | 2007-03-30 A | 2007-03-30 A | 65 | 100% |  |  |  | Patrick |  |  |
| 92 | 1.3.5 | BAH review use case document (task 3.1.1, task 5.2.1) |  | 10d | 2007-04-02 | 2007-04-13 | 91 |  |  | 323d |  | BAH | 80h |  |
| 93 | 1.3.6 | Developer deliver requirements document to BAH (task 3.2.1, task 5.3.1) | milestone | 0d | 2007-03-30 A | 2007-03-30 A | 65 | 100% |  |  |  | Patrick |  |  |
| 94 | 1.3.7 | BAH review requirements document (task 3.2.1, task 5.3.1) |  | 10d | 2007-04-02 | 2007-04-13 | 93 |  |  | 323d |  | BAH | 80h |  |
| 95 | 1.4 | **Analysis and Design** |  | 29d | 2007-03-07 A | 2007-04-16 | 23, 2 | 70% | 8.76d | 149d |  | Developers; Adopters; BAH | 4248h | 3193.74h |
| 96 | 1.4.1 | **Perform level 1 design** |  | 2d | 2007-03-07 A | 2007-03-08 A |  | 100% |  |  |  | Developers | 48h | 48h |
| 97 | 1.4.1.1 | Cursory BRIDG harmonization |  | 1d | 2007-03-07 A | 2007-03-07 A |  | 100% |  |  |  | Developers | 8h | 8h |
| 98 | 1.4.1.2 | Update implementation model |  | 1d | 2007-03-08 A | 2007-03-08 A | 97 | 100% |  |  |  | Developers | 8h | 8h |
| 99 | 1.4.1.3 | Cursory system design |  | 2d | 2007-03-07 A | 2007-03-08 A |  | 100% |  |  |  | Developers | 16h | 16h |
| 100 | 1.4.2 | **Modeling (task 3.3.1)** |  | 27d | 2007-03-09 A | 2007-04-16 | 96 | 80% | 5.4d | 149d |  | Developers; Adopters | 1104h | 937.6h |
| 101 | 1.4.2.1 | **Update model** |  | 6d | 2007-03-09 A | 2007-03-16 A |  | 100% |  |  |  | Developers | 264h | 264h |
| 102 | 1.4.2.1.1 | **BRIDG harmonization** |  | 3d | 2007-03-09 A | 2007-03-13 A | 96 | 100% |  |  |  |  | 96h | 96h |
| 103 | 1.4.2.1.1.1 | Harmonize Study model |  | 2d | 2007-03-09 A | 2007-03-12 A |  | 100% |  |  |  | Kruttik; Priyatam; Manav | 48h | 48h |
| 104 | 1.4.2.1.1.2 | Harmonize Personnel model |  | 3d | 2007-03-09 A | 2007-03-13 A |  | 100% |  |  |  | Ramakrishna | 24h | 24h |
| 105 | 1.4.2.1.1.3 | Harmonize Multi-site Study model |  | 3d | 2007-03-09 A | 2007-03-13 A |  | 100% |  |  |  | Manav | 24h | 24h |

| ID | WBS | Task | Type | Duration | Start | Finish | Predecessors | Complete | Remaining | Total slack | Resources | Work | Actual work |
| --- | --- | --- | --- | --- | --- | --- | --- | --- | --- | --- | --- | --- | --- |
| 106 | 1.4.2.1.2 | **Model implementation** |  | 3d | 2007-03-14 A | 2007-03-16 A | 102 | 100% |  |  |  | 120h | 120h |
| 107 | 1.4.2.1.2.1 | Implement Study model |  | 3d | 2007-03-14 A | 2007-03-16 A |  | 100% |  |  | Kruttik; Priyatam; Manav | 72h | 72h |
| 108 | 1.4.2.1.2.2 | Implement Personnel model |  | 3d | 2007-03-14 A | 2007-03-16 A |  | 100% |  |  | Ramakrishna | 24h | 24h |
| 109 | 1.4.2.1.2.3 | Implement Multi-site Study model |  | 3d | 2007-03-14 A | 2007-03-16 A |  | 100% |  |  | Manav | 24h | 24h |
| 110 | 1.4.2.2 | Adopter review |  | 5d | 2007-03-19 A | 2007-03-23 A | 101 | 100% |  |  | Adopters | 40h | 40h |
| 111 | 1.4.2.3 | **Update model** |  | 6d | 2007-03-26 A | 2007-04-02 A | 110 | 100% |  |  | Developers | 288h | 288h |
| 112 | 1.4.2.3.1 | **BRIDG harmonization** |  | 3d | 2007-03-26 A | 2007-03-28 A | 110 | 100% |  |  |  | 120h | 120h |
| 113 | 1.4.2.3.1.1 | Harmonize Study model |  | 3d | 2007-03-26 A | 2007-03-28 A |  | 100% |  |  | Kruttik; Priyatam; Manav | 72h | 72h |
| 114 | 1.4.2.3.1.2 | Harmonize Personnel model |  | 3d | 2007-03-26 A | 2007-03-28 A |  | 100% |  |  | Ramakrishna | 24h | 24h |
| 115 | 1.4.2.3.1.3 | Harmonize Multi-site Study model |  | 3d | 2007-03-26 A | 2007-03-28 A |  | 100% |  |  | Manav | 24h | 24h |
| 116 | 1.4.2.3.2 | **Model implementation** |  | 3d | 2007-03-29 A | 2007-04-02 A | 112 | 100% |  |  |  | 120h | 120h |
| 117 | 1.4.2.3.2.1 | Implement Study model |  | 3d | 2007-03-29 A | 2007-04-02 A |  | 100% |  |  | Kruttik; Priyatam; Manav | 72h | 72h |
| 118 | 1.4.2.3.2.2 | Implement Personnel model |  | 3d | 2007-03-29 A | 2007-04-02 A |  | 100% |  |  | Ramakrishna | 24h | 24h |
| 119 | 1.4.2.3.2.3 | Implement Multi-site Study model |  | 3d | 2007-03-29 A | 2007-04-02 A |  | 100% |  |  | Manav | 24h | 24h |
| 120 | 1.4.2.4 | Developer deliver UML to BAH (task 3.3.1) | milestone | 0d | 2007-04-02 A | 2007-04-02 A | 111 | 100% |  |  | Patrick |  |  |
| 121 | 1.4.2.5 | BAH review of UML (task 3.3.1) |  | 10d | 2007-04-03 | 2007-04-16 | 120 |  |  | 149d | BAH | 80h |  |
| 122 | 1.4.3 | **System design (task 3.4.1)** |  | 25d | 2007-03-09 A | 2007-04-12 | 96 | 71% | 7.35d | 151d | Developers; BAH | 2160h | 1722.35h |
| 123 | 1.4.3.1 | **Design eligibility** |  | 15d | 2007-03-09 A | 2007-03-29 A |  | 100% |  |  | Kruttik; Priyatam | 480h | 480h |
| 124 | 1.4.3.1.1 | Draft UML |  | 5d | 2007-03-09 A | 2007-03-15 A |  | 100% |  |  | Kruttik; Priyatam | 80h | 80h |
| 125 | 1.4.3.1.2 | Team review |  | 5d | 2007-03-16 A | 2007-03-22 A | 124 | 100% |  |  | Kruttik; Priyatam | 80h | 80h |
| 126 | 1.4.3.1.3 | Update design document |  | 5d | 2007-03-23 A | 2007-03-29 A | 125 | 100% |  |  | Kruttik; Priyatam | 80h | 80h |
| 127 | 1.4.3.2 | **Design personnel** |  | 15d | 2007-03-09 A | 2007-03-29 A |  | 100% |  |  | Priyatam; Kula | 480h | 480h |
| 128 | 1.4.3.2.1 | Draft UML |  | 5d | 2007-03-09 A | 2007-03-15 A |  | 100% |  |  | Priyatam; Kula | 80h | 80h |
| 129 | 1.4.3.2.2 | Team review |  | 5d | 2007-03-16 A | 2007-03-22 A | 128 | 100% |  |  | Priyatam; Kula | 80h | 80h |
| 130 | 1.4.3.2.3 | Update design document |  | 5d | 2007-03-23 A | 2007-03-29 A | 129 | 100% |  |  | Priyatam; Kula | 80h | 80h |

| ID | WBS | Task | Type | Duration | Start | Finish | Predecessors | Complete | Remaining | Total slack | Free slack | Resources | Work | Actual work |
| --- | --- | --- | --- | --- | --- | --- | --- | --- | --- | --- | --- | --- | --- | --- |
| 131 | 1.4.3.3 | **Design registration management** |  | 15d | 2007-03-09 A | 2007-03-29 A |  | 100% |  |  |  | Ramakrishna | 240h | 240h |
| 132 | 1.4.3.3.1 | Draft UML |  | 5d | 2007-03-09 A | 2007-03-15 A |  | 100% |  |  |  | Ramakrishna | 40h | 40h |
| 133 | 1.4.3.3.2 | Team review |  | 5d | 2007-03-16 A | 2007-03-22 A | 132 | 100% |  |  |  | Ramakrishna | 40h | 40h |
| 134 | 1.4.3.3.3 | Update design document |  | 5d | 2007-03-23 A | 2007-03-29 A | 133 | 100% |  |  |  | Ramakrishna | 40h | 40h |
| 135 | 1.4.3.4 | **Design multi-site study** |  | 15d | 2007-03-09 A | 2007-03-29 A |  | 100% |  |  |  | Manav | 240h | 240h |
| 136 | 1.4.3.4.1 | Draft UML |  | 5d | 2007-03-09 A | 2007-03-15 A |  | 100% |  |  |  | Manav | 40h | 40h |
| 137 | 1.4.3.4.2 | Team review |  | 5d | 2007-03-16 A | 2007-03-22 A | 136 | 100% |  |  |  | Manav | 40h | 40h |
| 138 | 1.4.3.4.3 | Update design document |  | 5d | 2007-03-23 A | 2007-03-29 A | 137 | 100% |  |  |  | Manav | 40h | 40h |
| 139 | 1.4.3.5 | **Design C3D integration** |  | 15d | 2007-03-09 | 2007-03-29 |  |  |  | 151d | 0d | Manav | 240h |  |
| 140 | 1.4.3.5.1 | Draft UML |  | 5d | 2007-03-09 | 2007-03-15 |  |  |  | 144d | 0d | Manav | 40h |  |
| 141 | 1.4.3.5.2 | Team review |  | 5d | 2007-03-16 | 2007-03-22 | 140 |  |  | 144d | 0d | Manav | 40h |  |
| 142 | 1.4.3.5.3 | Update design document |  | 5d | 2007-03-23 | 2007-03-29 | 141 |  |  | 144d |  | Manav | 40h |  |
| 143 | 1.4.3.6 | Deliver design doc to BAH (task 3.4.1) | milestone | 0d | 2007-03-29 | 2007-03-29 | 139 |  |  | 151d | 0d | Patrick |  |  |
| 144 | 1.4.3.7 | BAH review design doc (task 3.4.1) |  | 10d | 2007-03-30 | 2007-04-12 | 143 |  |  | 151d |  | BAH | 80h |  |
| 145 | 1.4.4 | **Research** |  | 10d | 2007-03-09 | 2007-03-22 | 96 |  |  | 166d |  | Manav | 240h |  |
| 146 | 1.4.4.1 | **Investigate C3D integration** |  | 10d | 2007-03-09 | 2007-03-22 | 96 |  |  | 166d |  | Manav | 160h |  |
| 147 | 1.4.4.1.1 | Review release 1 code |  | 5d | 2007-03-09 | 2007-03-15 |  |  |  | 166d | 0d | Manav | 40h |  |
| 148 | 1.4.4.1.2 | Review release 1 security model |  | 5d | 2007-03-16 | 2007-03-22 | 147 |  |  | 166d |  | Manav | 40h |  |
| 149 | 1.5 | **Implementation (task 3.5.1)** |  | 25d | 2007-03-09 A | 2007-04-12 | 96, 2 | 72% | 7d | 151d |  | Developers; BAH | 2984h | 2436h |
| 150 | 1.5.1 | **Database layer** |  | 6d | 2007-03-09 A | 2007-03-16 A |  | 100% |  |  |  | Developers | 432h | 432h |
| 151 | 1.5.1.1 | **Eligibility model** |  | 4d | 2007-03-09 A | 2007-03-14 A |  | 100% |  |  |  | Kruttik; Priyatam | 112h | 112h |
| 152 | 1.5.1.1.1 | Create DDLs |  | 1d | 2007-03-09 A | 2007-03-09 A |  | 100% |  |  |  | Kruttik; Priyatam | 16h | 16h |
| 153 | 1.5.1.1.2 | Apply to database |  | 1d | 2007-03-12 A | 2007-03-12 A | 152 | 100% |  |  |  | Kruttik; Priyatam | 16h | 16h |
| 154 | 1.5.1.1.3 | Create test data |  | 1d | 2007-03-13 A | 2007-03-13 A | 153 | 100% |  |  |  | Kruttik; Priyatam | 16h | 16h |
| 155 | 1.5.1.1.4 | Create data access objects (DAOs) |  | 1d | 2007-03-14 A | 2007-03-14 A | 154 | 100% |  |  |  |  |  |  |

| ID | WBS | Task | Duration | Start | Finish | Predecessors | Complete | Remaining | Total slack | Resources | Work | Actual work |
| --- | --- | --- | --- | --- | --- | --- | --- | --- | --- | --- | --- | --- |
| 156 | 1.5.1.2 | **Study personnel** | 6d | 2007-03-09 A | 2007-03-16 A |  | 100% |  |  | Priyatam; Kula | 176h | 176h |
| 157 | 1.5.1.2.1 | Investigate how to implement Person with Role | 2d | 2007-03-09 A | 2007-03-12 A |  | 100% |  |  | Priyatam; Kula | 32h | 32h |
| 158 | 1.5.1.2.2 | Create DDLs | 1d | 2007-03-13 A | 2007-03-13 A | 157 | 100% |  |  | Priyatam; Kula | 16h | 16h |
| 159 | 1.5.1.2.3 | Apply to database | 1d | 2007-03-14 A | 2007-03-14 A | 158 | 100% |  |  | Priyatam; Kula | 16h | 16h |
| 160 | 1.5.1.2.4 | Create test data | 1d | 2007-03-15 A | 2007-03-15 A | 159 | 100% |  |  | Priyatam; Kula | 16h | 16h |
| 161 | 1.5.1.2.5 | Create data access objects (DAOs) | 1d | 2007-03-16 A | 2007-03-16 A | 160 | 100% |  |  |  |  |  |
| 162 | 1.5.1.3 | **Multi-site** | 4d | 2007-03-09 A | 2007-03-14 A |  | 100% |  |  | Manav | 64h | 64h |
| 163 | 1.5.1.3.1 | Create DDLs | 1d | 2007-03-09 A | 2007-03-09 A |  | 100% |  |  | Manav | 8h | 8h |
| 164 | 1.5.1.3.2 | Apply to database | 1d | 2007-03-12 A | 2007-03-12 A | 163 | 100% |  |  | Manav | 8h | 8h |
| 165 | 1.5.1.3.3 | Create test data | 1d | 2007-03-13 A | 2007-03-13 A | 164 | 100% |  |  | Manav | 8h | 8h |
| 166 | 1.5.1.3.4 | Create data access objects (DAOs) | 1d | 2007-03-14 A | 2007-03-14 A | 165 | 100% |  |  | Manav | 8h | 8h |
| 167 | 1.5.1.4 | Unit testing | 4d | 2007-03-09 A | 2007-03-14 A |  | 100% |  |  | Developers | 32h | 32h |
| 168 | 1.5.2 | **Deployment** | 2d | 2007-03-15 A | 2007-03-16 A |  | 100% |  |  | Manav | 32h | 32h |
| 169 | 1.5.2.1 | Deploy a second C3PR for multi-site testing | 2d | 2007-03-15 A | 2007-03-16 A | 162 | 100% |  |  | Manav | 16h | 16h |
| 170 | 1.5.3 | **Business layer** | 12d | 2007-03-09 A | 2007-03-26 |  | 63% | 4.5d | 164d | Developers | 720h | 524h |
| 171 | 1.5.3.1 | **Implement eligibility APIs** | 7d | 2007-03-15 A | 2007-03-23 A | 151 | 100% |  |  | Kruttik; Priyatam | 224h | 224h |
| 172 | 1.5.3.1.1 | Design APIs | 2d | 2007-03-15 A | 2007-03-16 A |  | 100% |  |  | Kruttik; Priyatam | 32h | 32h |
| 173 | 1.5.3.1.2 | Implement APIs | 3d | 2007-03-19 A | 2007-03-21 A | 172 | 100% |  |  | Kruttik; Priyatam | 48h | 48h |
| 174 | 1.5.3.1.3 | Deploy APIs | 2d | 2007-03-22 A | 2007-03-23 A | 173 | 100% |  |  | Kruttik; Priyatam | 32h | 32h |
| 175 | 1.5.3.2 | **Implement study personnel APIs** | 6d | 2007-03-19 A | 2007-03-26 A | 156 | 100% |  |  | Ramakrishna | 96h | 96h |
| 176 | 1.5.3.2.1 | Design APIs | 2d | 2007-03-19 A | 2007-03-20 A |  | 100% |  |  | Ramakrishna | 16h | 16h |
| 177 | 1.5.3.2.2 | Implement APIs | 3d | 2007-03-21 A | 2007-03-23 A | 176 | 100% |  |  | Ramakrishna | 24h | 24h |
| 178 | 1.5.3.2.3 | Deploy APIs | 1d | 2007-03-26 A | 2007-03-26 A | 177 | 100% |  |  | Ramakrishna | 8h | 8h |
| 179 | 1.5.3.3 | **Implement C3PR registration APIs** | 6d | 2007-03-15 A | 2007-03-22 A | 162 | 100% |  |  | Manav | 96h | 96h |
| 180 | 1.5.3.3.1 | Design APIs | 2d | 2007-03-15 A | 2007-03-16 A |  | 100% |  |  | Manav | 16h | 16h |
| 181 | 1.5.3.3.2 | Implement APIs | 3d | 2007-03-19 A | 2007-03-21 A | 180 | 100% |  |  | Manav | 24h | 24h |
| 182 | 1.5.3.3.3 | Deploy APIs | 1d | 2007-03-22 A | 2007-03-22 A | 181 | 100% |  |  | Manav | 8h | 8h |

| ID | WBS | Task | Type | Duration | Start | Finish | Predecessors | Complete | Remaining | Total slack | Free slack | Resources | Work | Actual work |
| --- | --- | --- | --- | --- | --- | --- | --- | --- | --- | --- | --- | --- | --- | --- |
| 183 | 1.5.3.4 | **Business rules** |  | 5d | 2007-03-09 | 2007-03-15 |  |  |  | 171d |  | Ramakrishna | 160h |  |
| 184 | 1.5.3.4.1 | Duplicate registrations |  | 5d | 2007-03-09 | 2007-03-15 |  |  |  | 164d |  | Ramakrishna | 40h |  |
| 185 | 1.5.3.4.2 | Duplicate subjects |  | 5d | 2007-03-09 | 2007-03-15 |  |  |  | 141d |  | Ramakrishna | 40h |  |
| 186 | 1.5.3.4.3 | Duplicate studies |  | 5d | 2007-03-09 | 2007-03-15 |  |  |  | 141d |  | Ramakrishna | 40h |  |
| 187 | 1.5.3.5 | Unit testing |  | 6d | 2007-03-16 A | 2007-03-23 A | 184 | 100% |  |  |  | Developers | 48h | 48h |
| 188 | 1.5.4 | **ESB** |  | 5d | 2007-03-23 A | 2007-03-29 A | 179 | 100% |  |  |  | Manav | 120h | 120h |
| 189 | 1.5.4.1 | Implement inbound-binding component for C3PR registration |  | 5d | 2007-03-23 A | 2007-03-29 A |  | 100% |  |  |  | Manav | 40h | 40h |
| 190 | 1.5.4.2 | Unit testing |  | 5d | 2007-03-23 A | 2007-03-29 A |  | 100% |  |  |  | Developers | 40h | 40h |
| 191 | 1.5.5 | **Web interface** |  | 17d | 2007-03-09 A | 2007-04-02 A |  | 100% |  |  |  | Developers | 960h | 960h |
| 192 | 1.5.5.1 | **Modify study management interface** |  | 6d | 2007-03-23 A | 2007-03-30 A |  | 100% |  |  |  | Kruttik; Priyatam; Manav | 384h | 384h |
| 193 | 1.5.5.1.1 | Manage eligibility criteria |  | 5d | 2007-03-26 A | 2007-03-30 A | 171 | 100% |  |  |  | Kruttik; Priyatam; Manav | 120h | 120h |
| 194 | 1.5.5.1.2 | Manage multi-site study |  | 5d | 2007-03-23 A | 2007-03-29 A | 179 | 100% |  |  |  | Kruttik; Priyatam; Manav | 120h | 120h |
| 195 | 1.5.5.2 | **Modify study personnel management interface** |  | 5d | 2007-03-27 A | 2007-04-02 A |  | 100% |  |  |  | Priyatam; Kula | 160h | 160h |
| 196 | 1.5.5.2.1 | Manage study personnel |  | 5d | 2007-03-27 A | 2007-04-02 A | 175 | 100% |  |  |  | Priyatam; Kula | 80h | 80h |
| 197 | 1.5.5.3 | **Modify registration interface** |  | 5d | 2007-03-26 A | 2007-03-30 A |  | 100% |  |  |  | Kruttik; Priyatam | 160h | 160h |
| 198 | 1.5.5.3.1 | Check eligibility |  | 5d | 2007-03-26 A | 2007-03-30 A | 171 | 100% |  |  |  | Kruttik; Priyatam | 80h | 80h |
| 199 | 1.5.5.4 | **Modify registration management interface** |  | 5d | 2007-03-09 A | 2007-03-15 A |  | 100% |  |  |  | Ramakrishna | 80h | 80h |
| 200 | 1.5.5.4.1 | Manage study subject registration |  | 5d | 2007-03-09 A | 2007-03-15 A |  | 100% |  |  |  | Ramakrishna | 40h | 40h |
| 201 | 1.5.5.5 | Unit testing |  | 5d | 2007-03-09 A | 2007-03-15 A |  | 100% |  |  |  | Developers | 40h | 40h |
| 202 | 1.5.6 | **Installer** |  | 15d | 2007-03-09 A | 2007-03-29 |  | 33% | 10d | 161d |  | Kruttik | 240h | 80h |
| 203 | 1.5.6.1 | Externalize properties |  | 5d | 2007-03-09 A | 2007-03-15 A |  | 100% |  |  |  | Kruttik | 40h | 40h |
| 204 | 1.5.6.2 | Apply DDLs via ant |  | 5d | 2007-03-16 | 2007-03-22 | 203 |  |  | 131d | 0d | Kruttik | 40h |  |
| 205 | 1.5.6.3 | Make WAR file |  | 5d | 2007-03-23 | 2007-03-29 | 204 |  |  | 131d |  | Kruttik | 40h |  |
| 206 | 1.5.7 | Deliver codebase to BAH (task 3.5.1) | milestone | 0d | 2007-03-29 A | 2007-03-29 A | 150, 188, 168 | 100% |  |  |  | Patrick |  |  |
| 207 | 1.5.8 | BAH review codebase (task 3.5.1) |  | 10d | 2007-03-30 | 2007-04-12 | 206 |  |  | 144d |  | BAH | 80h |  |

| ID | WBS | Task | Type | Duration | Start | Finish | Predecessors | Complete | Remaining | Total slack | Resources | Work | Actual work |
| --- | --- | --- | --- | --- | --- | --- | --- | --- | --- | --- | --- | --- | --- |
| 208 | 1.6 | **Testing** |  | 30d | 2007-03-01 A | 2007-04-11 | 2 | 57% | 12.86d | 152d | Developers; Adopters; BAH | 4952h | 2978.63h |
| 209 | 1.6.1 | **Developer testing** |  | 30d | 2007-03-01 A | 2007-04-11 |  | 57% | 13.04d | 152d | BAH; Adopters; Developers | 1968h | 1154.95h |
| 210 | 1.6.1.1 | **Update developer test plan (task 3.6.1, task 5.4.1)** |  | 30d | 2007-03-01 A | 2007-04-11 |  | 67% | 10d | 152d | Developers; Adopters; BAH | 960h | 640h |
| 211 | 1.6.1.1.1 | Developer draft |  | 5d | 2007-03-01 A | 2007-03-07 A |  | 100% |  |  | Developers | 40h | 40h |
| 212 | 1.6.1.1.2 | Adopter review |  | 5d | 2007-03-08 A | 2007-03-14 A | 211 | 100% |  |  | Adopters | 40h | 40h |
| 213 | 1.6.1.1.3 | Developer update |  | 5d | 2007-03-15 A | 2007-03-21 A | 212 | 100% |  |  | Developers | 40h | 40h |
| 214 | 1.6.1.1.4 | Adopter review and sign |  | 5d | 2007-03-22 A | 2007-03-28 A | 213 | 100% |  |  | Adopters | 40h | 40h |
| 215 | 1.6.1.1.5 | Deliver signed test plan to BAH (task 3.6.1, task 5.4.1) | milestone | 0d | 2007-03-28 A | 2007-03-28 A | 214 | 100% |  |  | Patrick |  |  |
| 216 | 1.6.1.1.6 | BAH review signed test plan (task 3.6.1, task 5.4.1) |  | 10d | 2007-03-29 | 2007-04-11 | 215 |  |  | 325d | BAH | 80h |  |
| 217 | 1.6.1.2 | **Integration and system testing (task 3.8.1)** |  | 10d | 2007-03-23 A | 2007-04-05 | 211, 206FS-5d | 38% | 6.25d | 156d | Developers; BAH | 288h | 108h |
| 218 | 1.6.1.2.1 | Generate test data |  | 1d | 2007-03-23 A | 2007-03-23 A |  | 100% |  |  | Developers | 8h | 8h |
| 219 | 1.6.1.2.2 | Write tests |  | 3d | 2007-03-23 A | 2007-03-27 A |  | 100% |  |  | Developers | 24h | 24h |
| 220 | 1.6.1.2.3 | Validate tests |  | 1d | 2007-03-28 A | 2007-03-28 A | 219 | 100% |  |  | Developers | 8h | 8h |
| 221 | 1.6.1.2.4 | Generate test report |  | 1d | 2007-03-29 A | 2007-03-29 A | 220 | 100% |  |  | Developers | 8h | 8h |
| 222 | 1.6.1.2.5 | Deliver test report to BAH (task 3.8.1) | milestone | 0d | 2007-03-23 A | 2007-03-23 A |  | 100% |  |  | Patrick |  |  |
| 223 | 1.6.1.2.6 | BAH review test report (task 3.8.1) |  | 10d | 2007-03-23 | 2007-04-05 |  |  |  | 156d | BAH | 80h |  |
| 224 | 1.6.2 | **Adopter testing** |  | 30d | 2007-03-01 A | 2007-04-11 |  | 58% | 12.71d | 152d | Adopters; Developers; BAH | 2264h | 1412.25h |
| 225 | 1.6.2.1 | **Adopter deployment** |  | 5d | 2007-03-01 | 2007-03-07 |  |  |  | 177d |  |  |  |
| 226 | 1.6.2.1.1 | Adopter deployment of previous iteration |  | 5d | 2007-03-01 | 2007-03-07 |  |  |  | 177d |  |  |  |
| 227 | 1.6.2.2 | **Update adopter test plan (task 5.5.1)** |  | 30d | 2007-03-01 A | 2007-04-11 |  | 67% | 10d | 152d | Adopters; Developers; BAH | 1000h | 680h |
| 228 | 1.6.2.2.1 | Adopter update test script |  | 5d | 2007-03-01 A | 2007-03-07 A |  | 100% |  |  | Adopters | 40h | 40h |
| 229 | 1.6.2.2.2 | Adopter update test approach |  | 5d | 2007-03-08 A | 2007-03-14 A | 228 | 100% |  |  | Adopters | 40h | 40h |
| 230 | 1.6.2.2.3 | Developer review |  | 5d | 2007-03-15 A | 2007-03-21 A | 229 | 100% |  |  | Patrick; Ram | 80h | 80h |
| 231 | 1.6.2.2.4 | Adopter update |  | 5d | 2007-03-22 A | 2007-03-28 A | 230 | 100% |  |  | Adopters | 40h | 40h |
| 232 | 1.6.2.2.5 | Developer deliver adopter test plan to BAH (task 5.5.1) | milestone | 0d | 2007-03-28 A | 2007-03-28 A | 231 | 100% |  |  | Patrick |  |  |
| 233 | 1.6.2.2.6 | BAH review adopter test plan (task 5.5.1) |  | 10d | 2007-03-29 | 2007-04-11 | 232 |  |  | 152d | BAH | 80h |  |

| ID | WBS | Task | Type | Duration | Start | Finish | Predecessors | Complete | Remaining | Total slack | Resources | Work | Actual work |
| --- | --- | --- | --- | --- | --- | --- | --- | --- | --- | --- | --- | --- | --- |
| 234 | 1.6.2.3 | **Functional testing (task 5.6.1)** |  | 22d | 2007-03-08 A | 2007-04-06 | 228 | 58% | 9.17d | 155d | Adopters; BAH | 544h | 317.33h |
| 235 | 1.6.2.3.1 | Adopter create test data |  | 5d | 2007-03-08 A | 2007-03-14 A |  | 100% |  |  | Adopters | 40h | 40h |
| 236 | 1.6.2.3.2 | Adopter perform test script |  | 5d | 2007-03-15 A | 2007-03-21 A | 235 | 100% |  |  | Adopters | 40h | 40h |
| 237 | 1.6.2.3.3 | Adopter document results |  | 2d | 2007-03-22 A | 2007-03-23 A | 236 | 100% |  |  | Adopters | 16h | 16h |
| 238 | 1.6.2.3.4 | Adopter log bugs |  | 2d | 2007-03-26 A | 2007-03-27 A | 237 | 100% |  |  | Adopters | 16h | 16h |
| 239 | 1.6.2.3.5 | Developer deliver adopter test report to BAH (task 5.6.1) | milestone | 0d | 2007-03-23 A | 2007-03-23 A | 237 | 100% |  |  | Patrick |  |  |
| 240 | 1.6.2.3.6 | BAH review adopter test report (task 5.6.1) |  | 10d | 2007-03-26 | 2007-04-06 | 239 |  |  | 155d | BAH | 80h |  |
| 241 | 1.7 | **Documentation** |  | 15d | 2007-03-23 A | 2007-04-12 | 2 | 26% | 11.11d | 151d | Developers; Adopters; BAH | 1656h | 429.33h |
| 242 | 1.7.1 | **Installation guide (task 3.10.1)** |  | 13d | 2007-03-27 A | 2007-04-12 | 206FS-3d | 23% | 10d | 151d | Developers; BAH | 312h | 72h |
| 243 | 1.7.1.1 | Update installation guide |  | 3d | 2007-03-27 A | 2007-03-29 A |  | 100% |  |  | Developers | 24h | 24h |
| 244 | 1.7.1.2 | Deliver installation guide to BAH (task 3.10.1) | milestone | 0d | 2007-03-29 A | 2007-03-29 A | 243 | 100% |  |  | Patrick |  |  |
| 245 | 1.7.1.3 | BAH review of installation guide (task 3.10.1) |  | 10d | 2007-03-30 | 2007-04-12 | 244 |  |  | 324d | BAH | 80h |  |
| 246 | 1.7.2 | **Administration guide (task 3.13.1)** |  | 13d | 2007-03-27 A | 2007-04-12 | 206FS-3d | 23% | 10d | 151d | Developers; BAH | 312h | 72h |
| 247 | 1.7.2.1 | Update administration guide |  | 3d | 2007-03-27 A | 2007-03-29 A |  | 100% |  |  | Developers | 24h | 24h |
| 248 | 1.7.2.2 | Deliver administration guide to BAH (task 3.13.1) | milestone | 0d | 2007-03-29 A | 2007-03-29 A | 247 | 100% |  |  | Patrick |  |  |
| 249 | 1.7.2.3 | BAH review of administration guide (task 3.13.1) |  | 10d | 2007-03-30 | 2007-04-12 | 248 |  |  | 324d | BAH | 80h |  |
| 250 | 1.7.3 | **Release notes (task 3.14.1)** |  | 13d | 2007-03-27 A | 2007-04-12 | 206FS-3d | 23% | 10d | 151d | Developers; BAH | 312h | 72h |
| 251 | 1.7.3.1 | Update release notes |  | 3d | 2007-03-27 A | 2007-03-29 A |  | 100% |  |  | Developers | 24h | 24h |
| 252 | 1.7.3.2 | Deliver release notes to BAH (task 3.14.1) | milestone | 0d | 2007-03-29 A | 2007-03-29 A | 251 | 100% |  |  | Patrick |  |  |
| 253 | 1.7.3.3 | BAH review of release notes (task 3.14.1) |  | 10d | 2007-03-30 | 2007-04-12 | 252 |  |  | 324d | BAH | 80h |  |
| 254 | 1.7.4 | **Adopter summary of C3PR (task 5.1.1)** |  | 15d | 2007-03-23 A | 2007-04-12 | 206FS-5d | 33% | 10d | 151d | Adopters; BAH | 360h | 120h |
| 255 | 1.7.4.1 | Adopter update summary |  | 3d | 2007-03-23 A | 2007-03-27 A |  | 100% |  |  | Adopters | 24h | 24h |
| 256 | 1.7.4.2 | Developer review summary |  | 1d | 2007-03-28 A | 2007-03-28 A | 255 | 100% |  |  | Developers | 8h | 8h |
| 257 | 1.7.4.3 | Adopter update summary |  | 1d | 2007-03-29 A | 2007-03-29 A | 256 | 100% |  |  | Adopters | 8h | 8h |
| 258 | 1.7.4.4 | Developer deliver C3PR summary to BAH (task 5.1.1) | milestone | 0d | 2007-03-29 A | 2007-03-29 A | 257 | 100% |  |  | Patrick |  |  |
| 259 | 1.7.4.5 | BAH review of C3PR summary (task 5.1.1) |  | 10d | 2007-03-30 | 2007-04-12 | 258 |  |  | 324d | BAH | 80h |  |

| ID | WBS | Task | Type | Duration | Start | Finish | Predecessors | Complete | Total slack | Free slack | Constraint | Resources | Work | Actual work |
| --- | --- | --- | --- | --- | --- | --- | --- | --- | --- | --- | --- | --- | --- | --- |
| 260 | 1.8 | **Support** |  | 22d | 2007-03-01 A | 2007-03-30 A | 2 | 100% |  |  |  | Developers | 528h | 528h |
| 261 | 1.8.1 | Adopter support |  | 22d | 2007-03-01 A | 2007-03-30 A |  | 100% |  |  |  | Developers | 176h | 176h |
| 262 | 1.8.2 | Bug fixing |  | 22d | 2007-03-01 A | 2007-03-30 A |  | 100% |  |  |  | Developers | 176h | 176h |
| 263 | 1.9 | **Demonstration** |  | 0d | 2007-04-09 A | 2007-04-09 A | 2 | 100% |  |  |  | Patrick; Ram; BAH |  |  |
| 264 | 1.9.1 | Demonstrate latest features to BAH | milestone | 0d | 2007-04-09 A | 2007-04-09 A | 2 | 100% |  |  | start no earlier than 2007-04-09 | Patrick; Ram; BAH |  |  |
| 265 | 2 | **Iteration 2 (eligibility, study personnel/security, C3D integration, multi-site study)** |  | 35d | 2007-04-02 | 2007-05-18 |  |  | 0d |  |  |  | 19664h |  |
| 266 | 2.1 | Iteration start | milestone | 0d | 2007-04-02 | 2007-04-02 |  |  | 0d |  | start no earlier than 2007-04-02 |  |  |  |
| 267 | 2.2 | **Project Management** |  | 30d | 2007-04-02 | 2007-05-11 | 266 |  | 130d |  |  | Patrick; Adopters; BAH | 2640h |  |
| 268 | 2.2.1 | **Draft project plan (task 1.1)** |  | 30d | 2007-04-02 | 2007-05-11 |  |  | 130d |  |  | Patrick; Adopters; BAH | 960h |  |
| 269 | 2.2.1.1 | Developer draft |  | 5d | 2007-04-02 | 2007-04-06 |  |  | 303d | 0d |  | Patrick | 40h |  |
| 270 | 2.2.1.2 | BAH review |  | 5d | 2007-04-09 | 2007-04-13 | 269 |  | 303d | 0d |  | BAH | 40h |  |
| 271 | 2.2.1.3 | Developer update |  | 5d | 2007-04-16 | 2007-04-20 | 270 |  | 303d | 0d |  | Patrick | 40h |  |
| 272 | 2.2.1.4 | Adopter review |  | 3d | 2007-04-23 | 2007-04-25 | 271 |  | 303d | 0d |  | Adopters | 24h |  |
| 273 | 2.2.1.5 | Developer update |  | 2d | 2007-04-26 | 2007-04-27 | 272 |  | 303d | 0d |  | Patrick | 16h |  |
| 274 | 2.2.1.6 | Deliver project plan to BAH (task 1.1) | milestone | 0d | 2007-04-27 | 2007-04-27 | 273 |  | 303d | 0d |  | Patrick |  |  |
| 275 | 2.2.1.7 | BAH review project plan (task 1.1) |  | 10d | 2007-04-30 | 2007-05-11 | 274 |  | 303d |  |  | BAH | 80h |  |
| 276 | 2.2.2 | **Update risk matrix (task 1.4.2)** |  | 20d | 2007-04-02 | 2007-04-27 |  |  | 130d |  |  | Patrick; BAH | 480h |  |
| 277 | 2.2.2.1 | Update risk matrix for week 1 |  | 5d | 2007-04-02 | 2007-04-06 |  |  | 303d | 0d |  | Patrick | 40h |  |
| 278 | 2.2.2.2 | Update risk matrix for week 2 |  | 5d | 2007-04-09 | 2007-04-13 | 277 |  | 303d | 0d |  | Patrick | 40h |  |
| 279 | 2.2.2.3 | Deliver risk matrix to BAH (task 1.4.2) | milestone | 0d | 2007-04-13 | 2007-04-13 | 278 |  | 303d | 0d |  | Patrick |  |  |
| 280 | 2.2.2.4 | BAH review risk matrix (task 1.4.2) |  | 10d | 2007-04-16 | 2007-04-27 | 279 |  | 313d |  |  | BAH | 80h |  |
| 281 | 2.2.3 | **Monthly report (task 1.3.2)** |  | 20d | 2007-04-16 | 2007-05-11 | 279 |  | 130d |  |  | Patrick; BAH | 480h |  |
| 282 | 2.2.3.1 | Update risk matrix for week 3 |  | 5d | 2007-04-16 | 2007-04-20 |  |  | 303d | 0d |  | Patrick | 40h |  |
| 283 | 2.2.3.2 | Update risk matrix for week 4 |  | 5d | 2007-04-23 | 2007-04-27 | 282 |  | 303d | 0d |  | Patrick | 40h |  |
| 284 | 2.2.3.3 | Deliver monthly report and risk matrix to BAH (task 1.3.2) | milestone | 0d | 2007-04-27 | 2007-04-27 | 283 |  | 303d | 0d |  | Patrick |  |  |
| 285 | 2.2.3.4 | BAH review monthly report and risk matrix (task 1.3.2) |  | 10d | 2007-04-30 | 2007-05-11 | 284 |  | 303d |  |  | BAH | 80h |  |

| ID | WBS | Task | Duration | Start | Finish | Predecessors | Total slack | Free slack | Resources | Work |
| --- | --- | --- | --- | --- | --- | --- | --- | --- | --- | --- |
| 286 | 2.3 | **Requirements and use cases** | 32d | 2007-04-02 | 2007-05-15 | 266 | 0d |  | Developers; Adopters; BAH | 3600h |
| 287 | 2.3.1 | **Create level 1 use cases and requirements** | 4d | 2007-04-02 | 2007-04-05 |  | 0d |  | Developers | 288h |
| 288 | 2.3.1.1 | **Level 1 use cases for eligibility** | 2d | 2007-04-02 | 2007-04-03 |  | 2d |  | Kruttik; Priyatam | 64h |
| 289 | 2.3.1.1.1 | Use case document (task 3.1.1) | 1d | 2007-04-02 | 2007-04-02 |  | 2d | 0d | Kruttik; Priyatam | 16h |
| 290 | 2.3.1.1.2 | Requirements document (3.2.1) | 1d | 2007-04-03 | 2007-04-03 | 289 | 2d |  | Kruttik; Priyatam | 16h |
| 291 | 2.3.1.2 | **Level 1 use cases for study personnel** | 2d | 2007-04-02 | 2007-04-03 |  | 2d |  | Priyatam; Kula | 64h |
| 292 | 2.3.1.2.1 | Use case document (task 3.1.1) | 1d | 2007-04-02 | 2007-04-02 |  | 2d | 0d | Priyatam; Kula | 16h |
| 293 | 2.3.1.2.2 | Requirements document (3.2.1) | 1d | 2007-04-03 | 2007-04-03 | 292 | 2d |  | Priyatam; Kula | 16h |
| 294 | 2.3.1.3 | **Level 1 use cases for registration management** | 2d | 2007-04-02 | 2007-04-03 |  | 2d |  | Ramakrishna | 32h |
| 295 | 2.3.1.3.1 | Use case document (task 3.1.1) | 1d | 2007-04-02 | 2007-04-02 |  | 2d | 0d | Ramakrishna | 8h |
| 296 | 2.3.1.3.2 | Requirements document (3.2.1) | 1d | 2007-04-03 | 2007-04-03 | 295 | 2d |  | Ramakrishna | 8h |
| 297 | 2.3.1.4 | **Level 1 use cases for multi-site study** | 4d | 2007-04-02 | 2007-04-05 |  | 0d |  | Manav | 64h |
| 298 | 2.3.1.4.1 | Use case document (task 3.1.1) | 2d | 2007-04-02 | 2007-04-03 |  | 0d |  | Manav | 16h |
| 299 | 2.3.1.4.2 | Requirements document (3.2.1) | 2d | 2007-04-04 | 2007-04-05 | 298 | 0d |  | Manav | 16h |
| 300 | 2.3.1.5 | **Level 1 use cases for C3D integration** | 2d | 2007-04-02 | 2007-04-03 |  | 2d |  | Manav | 32h |
| 301 | 2.3.1.5.1 | Use case document (task 3.1.1) | 1d | 2007-04-02 | 2007-04-02 |  | 2d | 0d | Manav | 8h |
| 302 | 2.3.1.5.2 | Requirements document (3.2.1) | 1d | 2007-04-03 | 2007-04-03 | 301 | 2d |  | Manav | 8h |
| 303 | 2.3.2 | **Update use case document (task 3.1.2, task 5.2.2)** | 9d | 2007-04-06 | 2007-04-18 | 287 | 0d |  | Developers; Adopters | 968h |
| 304 | 2.3.2.1 | **Update eligibility use cases** | 9d | 2007-04-06 | 2007-04-18 |  | 0d |  | Kruttik; Adopters; Priyatam | 216h |
| 305 | 2.3.2.1.1 | Developer update | 2d | 2007-04-06 | 2007-04-09 |  | 0d |  | Kruttik; Priyatam | 32h |
| 306 | 2.3.2.1.2 | Adopter review | 5d | 2007-04-10 | 2007-04-16 | 305 | 0d |  | Adopters | 40h |
| 307 | 2.3.2.1.3 | Developer update | 1d | 2007-04-17 | 2007-04-17 | 306 | 0d |  | Kruttik; Priyatam | 16h |
| 308 | 2.3.2.1.4 | Adopter sign-off | 1d | 2007-04-18 | 2007-04-18 | 307 | 0d |  | Adopters | 8h |
| 309 | 2.3.2.2 | **Update study personnel use cases** | 9d | 2007-04-06 | 2007-04-18 |  | 0d |  | Priyatam; Adopters; Kula | 216h |
| 310 | 2.3.2.2.1 | Developer update | 2d | 2007-04-06 | 2007-04-09 |  | 0d |  | Priyatam; Kula | 32h |
| 311 | 2.3.2.2.2 | Adopter review | 5d | 2007-04-10 | 2007-04-16 | 310 | 0d |  | Adopters | 40h |
| 312 | 2.3.2.2.3 | Developer update | 1d | 2007-04-17 | 2007-04-17 | 311 | 0d |  | Priyatam; Kula | 16h |
| 313 | 2.3.2.2.4 | Adopter sign-off | 1d | 2007-04-18 | 2007-04-18 | 312 | 0d |  | Adopters | 8h |

| ID | WBS | Task | Duration | Start | Finish | Predecessors | Total slack | Resources | Work |
| --- | --- | --- | --- | --- | --- | --- | --- | --- | --- |
| 314 | 2.3.2.3 | **Update registration management use cases** | 9d | 2007-04-06 | 2007-04-18 |  | 0d | Ramakrishna; Adopters | 152h |
| 315 | 2.3.2.3.1 | Developer update | 2d | 2007-04-06 | 2007-04-09 |  | 0d | Ramakrishna | 16h |
| 316 | 2.3.2.3.2 | Adopter review | 5d | 2007-04-10 | 2007-04-16 | 315 | 0d | Adopters | 40h |
| 317 | 2.3.2.3.3 | Developer update | 1d | 2007-04-17 | 2007-04-17 | 316 | 0d | Ramakrishna | 8h |
| 318 | 2.3.2.3.4 | Adopter sign-off | 1d | 2007-04-18 | 2007-04-18 | 317 | 0d | Adopters | 8h |
| 319 | 2.3.2.4 | **Update multi-site trial use cases** | 9d | 2007-04-06 | 2007-04-18 |  | 0d | Manav; Adopters | 152h |
| 320 | 2.3.2.4.1 | Developer update | 2d | 2007-04-06 | 2007-04-09 |  | 0d | Manav | 16h |
| 321 | 2.3.2.4.2 | Adopter review | 5d | 2007-04-10 | 2007-04-16 | 320 | 0d | Adopters | 40h |
| 322 | 2.3.2.4.3 | Developer update | 1d | 2007-04-17 | 2007-04-17 | 321 | 0d | Manav | 8h |
| 323 | 2.3.2.4.4 | Adopter sign-off | 1d | 2007-04-18 | 2007-04-18 | 322 | 0d | Adopters | 8h |
| 324 | 2.3.2.5 | **Update C3D integration use cases** | 9d | 2007-04-06 | 2007-04-18 |  | 0d | Manav; Adopters | 152h |
| 325 | 2.3.2.5.1 | Developer update | 2d | 2007-04-06 | 2007-04-09 |  | 0d | Manav | 16h |
| 326 | 2.3.2.5.2 | Adopter review | 5d | 2007-04-10 | 2007-04-16 | 325 | 0d | Adopters | 40h |
| 327 | 2.3.2.5.3 | Developer update | 1d | 2007-04-17 | 2007-04-17 | 326 | 0d | Manav | 8h |
| 328 | 2.3.2.5.4 | Adopter sign-off | 1d | 2007-04-18 | 2007-04-18 | 327 | 0d | Adopters | 8h |
| 329 | 2.3.3 | **Update requirements document (task 3.2.2, task 5.3.2)** | 9d | 2007-04-19 | 2007-05-01 | 303 | 0d | Developers; Adopters | 1416h |
| 330 | 2.3.3.1 | **Update eligibility requirements** | 9d | 2007-04-19 | 2007-05-01 |  | 0d | Kruttik; Priyatam; Adopters | 312h |
| 331 | 2.3.3.1.1 | Developer update | 2d | 2007-04-19 | 2007-04-20 |  | 0d | Kruttik; Priyatam | 32h |
| 332 | 2.3.3.1.2 | Adopter review | 5d | 2007-04-23 | 2007-04-27 | 331 | 0d | Adopters | 40h |
| 333 | 2.3.3.1.3 | Developer update | 1d | 2007-04-30 | 2007-04-30 | 332 | 0d | Kruttik; Priyatam | 16h |
| 334 | 2.3.3.1.4 | Adopter sign-off | 1d | 2007-05-01 | 2007-05-01 | 333 | 0d | Adopters | 8h |
| 335 | 2.3.3.2 | **Update study personel requirements** | 9d | 2007-04-19 | 2007-05-01 |  | 0d | Priyatam; Adopters; Kula | 312h |
| 336 | 2.3.3.2.1 | Developer update | 2d | 2007-04-19 | 2007-04-20 |  | 0d | Priyatam; Kula | 32h |
| 337 | 2.3.3.2.2 | Adopter review | 5d | 2007-04-23 | 2007-04-27 | 336 | 0d | Adopters | 40h |
| 338 | 2.3.3.2.3 | Developer update | 1d | 2007-04-30 | 2007-04-30 | 337 | 0d | Priyatam; Kula | 16h |
| 339 | 2.3.3.2.4 | Adopter sign-off | 1d | 2007-05-01 | 2007-05-01 | 338 | 0d | Adopters | 8h |

| ID | WBS | Task | Type | Duration | Start | Finish | Predecessors | Total slack | Resources | Work |
| --- | --- | --- | --- | --- | --- | --- | --- | --- | --- | --- |
| 340 | 2.3.3.3 | **Update registration management requirements** |  | 9d | 2007-04-19 | 2007-05-01 |  | 0d | Ramakrishna; Adopters | 216h |
| 341 | 2.3.3.3.1 | Developer update |  | 2d | 2007-04-19 | 2007-04-20 |  | 0d | Ramakrishna | 16h |
| 342 | 2.3.3.3.2 | Adopter review |  | 5d | 2007-04-23 | 2007-04-27 | 341 | 0d | Adopters | 40h |
| 343 | 2.3.3.3.3 | Developer update |  | 1d | 2007-04-30 | 2007-04-30 | 342 | 0d | Ramakrishna | 8h |
| 344 | 2.3.3.3.4 | Adopter sign-off |  | 1d | 2007-05-01 | 2007-05-01 | 343 | 0d | Adopters | 8h |
| 345 | 2.3.3.4 | **Update multi-site trial requirements** |  | 9d | 2007-04-19 | 2007-05-01 |  | 0d | Manav; Adopters | 216h |
| 346 | 2.3.3.4.1 | Developer update |  | 2d | 2007-04-19 | 2007-04-20 |  | 0d | Manav | 16h |
| 347 | 2.3.3.4.2 | Adopter review |  | 5d | 2007-04-23 | 2007-04-27 | 346 | 0d | Adopters | 40h |
| 348 | 2.3.3.4.3 | Developer update |  | 1d | 2007-04-30 | 2007-04-30 | 347 | 0d | Manav | 8h |
| 349 | 2.3.3.4.4 | Adopter sign-off |  | 1d | 2007-05-01 | 2007-05-01 | 348 | 0d | Adopters | 8h |
| 350 | 2.3.3.5 | **Update C3D integration requirements** |  | 9d | 2007-04-19 | 2007-05-01 |  | 0d | Manav; Adopters | 216h |
| 351 | 2.3.3.5.1 | Developer update |  | 2d | 2007-04-19 | 2007-04-20 |  | 0d | Manav | 16h |
| 352 | 2.3.3.5.2 | Adopter review |  | 5d | 2007-04-23 | 2007-04-27 | 351 | 0d | Adopters | 40h |
| 353 | 2.3.3.5.3 | Developer update |  | 1d | 2007-04-30 | 2007-04-30 | 352 | 0d | Manav | 8h |
| 354 | 2.3.3.5.4 | Adopter sign-off |  | 1d | 2007-05-01 | 2007-05-01 | 353 | 0d | Adopters | 8h |
| 355 | 2.3.4 | Developer deliver use case document to BAH (task 3.1.2, task 5.2.2) | milestone | 0d | 2007-05-01 | 2007-05-01 | 329 | 0d | Patrick |  |
| 356 | 2.3.5 | BAH review use case document (task 3.1.2, task 5.2.2) |  | 10d | 2007-05-02 | 2007-05-15 | 355 | 128d | BAH | 80h |
| 357 | 2.3.6 | Developer deliver requirements document to BAH (task 3.2.2, task 5.3.2) | milestone | 0d | 2007-05-01 | 2007-05-01 | 329 | 0d | Patrick |  |
| 358 | 2.3.7 | BAH review requirements document (task 3.2.2, task 5.3.2) |  | 10d | 2007-05-02 | 2007-05-15 | 357 | 128d | BAH | 80h |
| 359 | 2.4 | **Analysis and Design** |  | 31d | 2007-04-06 | 2007-05-18 | 287, 266 | 0d | Developers; Adopters; BAH | 4168h |
| 360 | 2.4.1 | **Perform level 1 design** |  | 4d | 2007-04-06 | 2007-04-11 |  | 0d | Developers | 64h |
| 361 | 2.4.1.1 | Cursory BRIDG harmonization |  | 1d | 2007-04-06 | 2007-04-06 |  | 0d | Developers | 8h |
| 362 | 2.4.1.2 | Update implementation model |  | 1d | 2007-04-09 | 2007-04-09 | 361 | 0d | Developers | 8h |
| 363 | 2.4.1.3 | Cursory system design |  | 2d | 2007-04-10 | 2007-04-11 | 362 | 0d | Developers | 16h |

| ID | WBS | Task | Type | Duration | Start | Finish | Predecessors | Total slack | Free slack | Resources | Work |
| --- | --- | --- | --- | --- | --- | --- | --- | --- | --- | --- | --- |
| 364 | 2.4.2 | **Modeling (task 3.3.2)** |  | 27d | 2007-04-12 | 2007-05-18 | 360 | 0d |  | Developers; Adopters | 1080h |
| 365 | 2.4.2.1 | **Update model** |  | 6d | 2007-04-12 | 2007-04-19 |  | 0d |  | Developers | 240h |
| 366 | 2.4.2.1.1 | **BRIDG harmonization** |  | 3d | 2007-04-12 | 2007-04-16 | 360 | 0d |  |  | 96h |
| 367 | 2.4.2.1.1.1 | Harmonize Study model |  | 2d | 2007-04-12 | 2007-04-13 |  | 1d |  | Kruttik; Priyatam; Manav | 48h |
| 368 | 2.4.2.1.1.2 | Harmonize Personnel model |  | 3d | 2007-04-12 | 2007-04-16 |  | 0d |  | Ramakrishna | 24h |
| 369 | 2.4.2.1.1.3 | Harmonize Multi-site Study model |  | 3d | 2007-04-12 | 2007-04-16 |  | 0d |  | Manav | 24h |
| 370 | 2.4.2.1.2 | **Model implementation** |  | 3d | 2007-04-17 | 2007-04-19 | 366 | 0d |  |  | 96h |
| 371 | 2.4.2.1.2.1 | Implement Study model |  | 2d | 2007-04-17 | 2007-04-18 |  | 1d |  | Kruttik; Priyatam; Manav | 48h |
| 372 | 2.4.2.1.2.2 | Implement Personnel model |  | 3d | 2007-04-17 | 2007-04-19 |  | 0d |  | Ramakrishna | 24h |
| 373 | 2.4.2.1.2.3 | Implement Multi-site Study model |  | 3d | 2007-04-17 | 2007-04-19 |  | 0d |  | Manav | 24h |
| 374 | 2.4.2.2 | Adopter review |  | 5d | 2007-04-20 | 2007-04-26 | 365 | 0d |  | Adopters | 40h |
| 375 | 2.4.2.3 | **Update model** |  | 6d | 2007-04-27 | 2007-05-04 | 374 | 0d |  | Developers | 288h |
| 376 | 2.4.2.3.1 | **BRIDG harmonization** |  | 3d | 2007-04-27 | 2007-05-01 | 374 | 0d |  |  | 120h |
| 377 | 2.4.2.3.1.1 | Harmonize Study model |  | 3d | 2007-04-27 | 2007-05-01 |  | 0d |  | Kruttik; Priyatam; Manav | 72h |
| 378 | 2.4.2.3.1.2 | Harmonize Personnel model |  | 3d | 2007-04-27 | 2007-05-01 |  | 0d |  | Ramakrishna | 24h |
| 379 | 2.4.2.3.1.3 | Harmonize Multi-site Study model |  | 3d | 2007-04-27 | 2007-05-01 |  | 0d |  | Manav | 24h |
| 380 | 2.4.2.3.2 | **Model implementation** |  | 3d | 2007-05-02 | 2007-05-04 | 376, 379 | 0d |  |  | 120h |
| 381 | 2.4.2.3.2.1 | Implement Study model |  | 3d | 2007-05-02 | 2007-05-04 |  | 0d |  | Kruttik; Priyatam; Manav | 72h |
| 382 | 2.4.2.3.2.2 | Implement Personnel model |  | 3d | 2007-05-02 | 2007-05-04 |  | 0d |  | Ramakrishna | 24h |
| 383 | 2.4.2.3.2.3 | Implement Multi-site Study model |  | 3d | 2007-05-02 | 2007-05-04 |  | 0d |  | Manav | 24h |
| 384 | 2.4.2.4 | Developer deliver UML to BAH (task 3.3.2) | milestone | 0d | 2007-05-04 | 2007-05-04 | 375, 383 | 0d |  | Patrick |  |
| 385 | 2.4.2.5 | BAH review of UML (task 3.3.2) |  | 10d | 2007-05-07 | 2007-05-18 | 384 | 298d |  | BAH | 80h |
| 386 | 2.4.3 | **System design (task 3.4.2)** |  | 25d | 2007-04-12 | 2007-05-16 | 360 | 127d |  | Developers; BAH | 2160h |
| 387 | 2.4.3.1 | **Design eligibility** |  | 15d | 2007-04-12 | 2007-05-02 |  | 127d | 0d | Kruttik; Priyatam | 480h |
| 388 | 2.4.3.1.1 | Draft UML |  | 5d | 2007-04-12 | 2007-04-18 |  | 300d | 0d | Kruttik; Priyatam | 80h |
| 389 | 2.4.3.1.2 | Team review |  | 5d | 2007-04-19 | 2007-04-25 | 388 | 300d | 0d | Kruttik; Priyatam | 80h |
| 390 | 2.4.3.1.3 | Update design document |  | 5d | 2007-04-26 | 2007-05-02 | 389 | 300d |  | Kruttik; Priyatam | 80h |

| ID | WBS | Task | Type | Duration | Start | Finish | Predecessors | Total slack | Free slack | Resources | Work |
| --- | --- | --- | --- | --- | --- | --- | --- | --- | --- | --- | --- |
| 391 | 2.4.3.2 | **Design personnel** |  | 15d | 2007-04-12 | 2007-05-02 |  | 127d | 0d | Priyatam; Kula | 480h |
| 392 | 2.4.3.2.1 | Draft UML |  | 5d | 2007-04-12 | 2007-04-18 |  | 300d | 0d | Priyatam; Kula | 80h |
| 393 | 2.4.3.2.2 | Team review |  | 5d | 2007-04-19 | 2007-04-25 | 392 | 300d | 0d | Priyatam; Kula | 80h |
| 394 | 2.4.3.2.3 | Update design document |  | 5d | 2007-04-26 | 2007-05-02 | 393 | 300d |  | Priyatam; Kula | 80h |
| 395 | 2.4.3.3 | **Design registration management** |  | 15d | 2007-04-12 | 2007-05-02 |  | 127d | 0d | Ramakrishna | 240h |
| 396 | 2.4.3.3.1 | Draft UML |  | 5d | 2007-04-12 | 2007-04-18 |  | 300d | 0d | Ramakrishna | 40h |
| 397 | 2.4.3.3.2 | Team review |  | 5d | 2007-04-19 | 2007-04-25 | 396 | 300d | 0d | Ramakrishna | 40h |
| 398 | 2.4.3.3.3 | Update design document |  | 5d | 2007-04-26 | 2007-05-02 | 397 | 300d |  | Ramakrishna | 40h |
| 399 | 2.4.3.4 | **Design multi-site study** |  | 15d | 2007-04-12 | 2007-05-02 |  | 127d | 0d | Manav | 240h |
| 400 | 2.4.3.4.1 | Draft UML |  | 5d | 2007-04-12 | 2007-04-18 |  | 300d | 0d | Manav | 40h |
| 401 | 2.4.3.4.2 | Team review |  | 5d | 2007-04-19 | 2007-04-25 | 400 | 300d | 0d | Manav | 40h |
| 402 | 2.4.3.4.3 | Update design document |  | 5d | 2007-04-26 | 2007-05-02 | 401 | 300d |  | Manav | 40h |
| 403 | 2.4.3.5 | **Design C3D integration** |  | 15d | 2007-04-12 | 2007-05-02 |  | 127d | 0d | Manav | 240h |
| 404 | 2.4.3.5.1 | Draft UML |  | 5d | 2007-04-12 | 2007-04-18 |  | 300d | 0d | Manav | 40h |
| 405 | 2.4.3.5.2 | Team review |  | 5d | 2007-04-19 | 2007-04-25 | 404 | 300d | 0d | Manav | 40h |
| 406 | 2.4.3.5.3 | Update design document |  | 5d | 2007-04-26 | 2007-05-02 | 405 | 300d |  | Manav | 40h |
| 407 | 2.4.3.6 | Deliver design doc to BAH (task 3.4.2) | milestone | 0d | 2007-05-02 | 2007-05-02 | 387, 391, 395, 399, 403 | 300d | 0d | Patrick |  |
| 408 | 2.4.3.7 | BAH review design doc (task 3.4.2) |  | 10d | 2007-05-03 | 2007-05-16 | 407 | 300d |  | BAH | 80h |
| 409 | 2.4.4 | **Research** |  | 5d | 2007-04-06 | 2007-04-12 |  | 151d |  | Manav | 120h |
| 410 | 2.4.4.1 | **Investigate C3D integration** |  | 5d | 2007-04-06 | 2007-04-12 |  | 151d |  | Manav | 80h |
| 411 | 2.4.4.1.1 | Investigate C3D SSO versus CTMSi SSO |  | 5d | 2007-04-06 | 2007-04-12 |  | 324d |  | Manav | 40h |
| 412 | 2.5 | **Implementation (task 3.5.2)** |  | 25d | 2007-04-12 | 2007-05-16 | 360, 266 | 0d |  | Developers; BAH | 2376h |
| 413 | 2.5.1 | **Database** |  | 3d | 2007-04-12 | 2007-04-16 |  | 0d |  | Developers | 216h |
| 414 | 2.5.1.1 | **Eligibility model** |  | 3d | 2007-04-12 | 2007-04-16 |  | 0d |  | Kruttik; Priyatam | 96h |
| 415 | 2.5.1.1.1 | Update DDLs |  | 1d | 2007-04-12 | 2007-04-12 |  | 0d |  | Kruttik; Priyatam | 16h |
| 416 | 2.5.1.1.2 | Apply to database |  | 1d | 2007-04-13 | 2007-04-13 | 415 | 0d |  | Kruttik; Priyatam | 16h |
| 417 | 2.5.1.1.3 | Create test data |  | 1d | 2007-04-16 | 2007-04-16 | 416 | 0d |  | Kruttik; Priyatam | 16h |

| ID | WBS | Task | Duration | Start | Finish | Predecessors | Total slack | Free slack | Resources | Work |
| --- | --- | --- | --- | --- | --- | --- | --- | --- | --- | --- |
| 418 | 2.5.1.2 | **Study personnel** | 3d | 2007-04-12 | 2007-04-16 |  | 1d | 0d | Ramakrishna | 48h |
| 419 | 2.5.1.2.1 | Update DDLs | 1d | 2007-04-12 | 2007-04-12 |  | 1d | 0d | Ramakrishna | 8h |
| 420 | 2.5.1.2.2 | Apply to database | 1d | 2007-04-13 | 2007-04-13 | 419 | 1d | 0d | Ramakrishna | 8h |
| 421 | 2.5.1.2.3 | Create test data | 1d | 2007-04-16 | 2007-04-16 | 420 | 1d |  | Ramakrishna | 8h |
| 422 | 2.5.1.3 | **Multi-site** | 3d | 2007-04-12 | 2007-04-16 |  | 1d | 0d | Manav | 48h |
| 423 | 2.5.1.3.1 | Update DDLs | 1d | 2007-04-12 | 2007-04-12 |  | 1d | 0d | Manav | 8h |
| 424 | 2.5.1.3.2 | Apply to database | 1d | 2007-04-13 | 2007-04-13 | 423 | 1d | 0d | Manav | 8h |
| 425 | 2.5.1.3.3 | Create test data | 1d | 2007-04-16 | 2007-04-16 | 424 | 1d |  | Manav | 8h |
| 426 | 2.5.2 | **Business layer** | 10d | 2007-04-17 | 2007-04-30 |  | 0d |  | Developers | 648h |
| 427 | 2.5.2.1 | **Implement eligibility APIs** | 7d | 2007-04-17 | 2007-04-25 | 414 | 0d |  | Kruttik; Priyatam | 176h |
| 428 | 2.5.2.1.1 | Update APIs | 2d | 2007-04-17 | 2007-04-18 |  | 0d |  | Kruttik; Priyatam | 32h |
| 429 | 2.5.2.1.2 | Implement APIs | 3d | 2007-04-19 | 2007-04-23 | 428 | 0d |  | Kruttik; Priyatam | 48h |
| 430 | 2.5.2.1.3 | Deploy APIs | 2d | 2007-04-24 | 2007-04-25 | 429 | 0d |  | Kruttik; Priyatam | 32h |
| 431 | 2.5.2.2 | **Implement study personnel APIs** | 6d | 2007-04-17 | 2007-04-24 | 418 | 1d | 0d | Ramakrishna | 72h |
| 432 | 2.5.2.2.1 | Update APIs | 2d | 2007-04-17 | 2007-04-18 |  | 1d | 0d | Ramakrishna | 16h |
| 433 | 2.5.2.2.2 | Implement APIs | 3d | 2007-04-19 | 2007-04-23 | 432 | 1d | 0d | Ramakrishna | 24h |
| 434 | 2.5.2.2.3 | Deploy APIs | 1d | 2007-04-24 | 2007-04-24 | 433 | 1d |  | Ramakrishna | 8h |
| 435 | 2.5.2.3 | **Implement C3PR registration APIs** | 6d | 2007-04-17 | 2007-04-24 | 422 | 1d | 0d | Manav | 72h |
| 436 | 2.5.2.3.1 | Update APIs | 2d | 2007-04-17 | 2007-04-18 |  | 1d | 0d | Manav | 16h |
| 437 | 2.5.2.3.2 | Implement APIs | 3d | 2007-04-19 | 2007-04-23 | 436 | 1d | 0d | Manav | 24h |
| 438 | 2.5.2.3.3 | Deploy APIs | 1d | 2007-04-24 | 2007-04-24 | 437 | 1d |  | Manav | 8h |
| 439 | 2.5.2.4 | **Implement import eligibility** | 10d | 2007-04-17 | 2007-04-30 | 414 | 139d |  | Kruttik; Priyatam | 272h |
| 440 | 2.5.2.4.1 | Import eligibility from a file | 5d | 2007-04-17 | 2007-04-23 |  | 312d | 0d | Kruttik; Priyatam | 80h |
| 441 | 2.5.2.4.2 | Import eligibility from the caDSR | 5d | 2007-04-24 | 2007-04-30 | 440 | 312d |  | Kruttik; Priyatam | 80h |

| ID | WBS | Task | Type | Duration | Start | Finish | Predecessors | Total slack | Resources | Work |
| --- | --- | --- | --- | --- | --- | --- | --- | --- | --- | --- |
| 442 | 2.5.3 | **ESB** |  | 5d | 2007-04-17 | 2007-04-23 | 413 | 144d | Manav | 56h |
| 443 | 2.5.3.1 | Implement binding components for C3D |  | 5d | 2007-04-17 | 2007-04-23 |  | 317d | Manav | 40h |
| 444 | 2.5.4 | **Security** |  | 5d | 2007-04-12 | 2007-04-18 |  | 147d | Ramakrishna; Manav | 240h |
| 445 | 2.5.4.1 | Connect C3PR roles to GridGrouper groups |  | 5d | 2007-04-12 | 2007-04-18 |  | 320d | Ramakrishna; Manav | 80h |
| 446 | 2.5.4.2 | Hook groups into authorization |  | 5d | 2007-04-12 | 2007-04-18 |  | 320d | Ramakrishna; Manav | 80h |
| 447 | 2.5.5 | **Web interface** |  | 15d | 2007-04-12 | 2007-05-02 |  | 0d | Developers | 736h |
| 448 | 2.5.5.1 | **Modify study management interface** |  | 6d | 2007-04-25 | 2007-05-02 |  | 0d | Kruttik; Priyatam; Manav | 312h |
| 449 | 2.5.5.1.1 | Manage eligibility criteria |  | 5d | 2007-04-26 | 2007-05-02 | 427 | 0d | Kruttik; Priyatam; Manav | 120h |
| 450 | 2.5.5.1.2 | Manage multi-site study |  | 5d | 2007-04-25 | 2007-05-01 | 435 | 1d | Kruttik; Priyatam; Manav | 120h |
| 451 | 2.5.5.2 | **Modify study personnel management interface** |  | 5d | 2007-04-25 | 2007-05-01 |  | 1d | Priyatam; Kula | 112h |
| 452 | 2.5.5.2.1 | Manage study personnel |  | 5d | 2007-04-25 | 2007-05-01 | 431 | 1d | Priyatam; Kula | 80h |
| 453 | 2.5.5.3 | **Modify registration interface** |  | 5d | 2007-04-26 | 2007-05-02 |  | 0d | Kruttik; Priyatam | 112h |
| 454 | 2.5.5.3.1 | Check eligibility |  | 5d | 2007-04-26 | 2007-05-02 | 427 | 0d | Kruttik; Priyatam | 80h |
| 455 | 2.5.5.4 | **Modify registration management interface** |  | 5d | 2007-04-12 | 2007-04-18 |  | 10d | Ramakrishna | 80h |
| 456 | 2.5.5.4.1 | Manage study subject registration |  | 5d | 2007-04-12 | 2007-04-18 |  | 10d | Ramakrishna | 40h |
| 457 | 2.5.6 | Deliver codebase to BAH (task 3.5.2) | milestone | 0d | 2007-05-02 | 2007-05-02 | 413, 447, 454 | 0d | Patrick |  |
| 458 | 2.5.7 | BAH review codebase (task 3.5.2) |  | 10d | 2007-05-03 | 2007-05-16 | 457 | 300d | BAH | 80h |
| 459 | 2.6 | **Testing** |  | 34d | 2007-04-02 | 2007-05-17 | 266 | 0d | Developers; Adopters; BAH | 5224h |
| 460 | 2.6.1 | **Developer testing** |  | 34d | 2007-04-02 | 2007-05-17 |  | 0d | BAH; Adopters; Developers | 2112h |
| 461 | 2.6.1.1 | **Update developer test plan (task 3.6.2, task 5.4.2)** |  | 30d | 2007-04-02 | 2007-05-11 |  | 0d | Developers; Adopters; BAH | 960h |
| 462 | 2.6.1.1.1 | Developer draft |  | 5d | 2007-04-02 | 2007-04-06 |  | 0d | Developers | 40h |
| 463 | 2.6.1.1.2 | Adopter review |  | 5d | 2007-04-09 | 2007-04-13 | 462 | 0d | Adopters | 40h |
| 464 | 2.6.1.1.3 | Developer update |  | 5d | 2007-04-16 | 2007-04-20 | 463 | 0d | Developers | 40h |
| 465 | 2.6.1.1.4 | Adopter review and sign |  | 5d | 2007-04-23 | 2007-04-27 | 464 | 0d | Adopters | 40h |
| 466 | 2.6.1.1.5 | Deliver signed test plan to BAH (task 3.6.2, task 5.4.2) | milestone | 0d | 2007-04-27 | 2007-04-27 | 465 | 0d | Patrick |  |
| 467 | 2.6.1.1.6 | BAH review signed test plan (task 3.6.2, task 5.4.2) |  | 10d | 2007-04-30 | 2007-05-11 | 466 | 303d | BAH | 80h |

| ID | WBS | Task | Type | Duration | Start | Finish | Predecessors | Total slack | Free slack | Resources | Work |
| --- | --- | --- | --- | --- | --- | --- | --- | --- | --- | --- | --- |
| 468 | 2.6.1.2 | **Integration and system testing (task 3.8.2)** |  | 16d | 2007-04-26 | 2007-05-17 | 457FS-5d | 0d |  | Developers; BAH | 336h |
| 469 | 2.6.1.2.1 | Generate test data |  | 1d | 2007-04-26 | 2007-04-26 |  | 0d |  | Developers | 8h |
| 470 | 2.6.1.2.2 | Write tests |  | 3d | 2007-04-27 | 2007-05-01 | 469 | 0d |  | Developers | 24h |
| 471 | 2.6.1.2.3 | Validate tests |  | 1d | 2007-05-02 | 2007-05-02 | 470 | 0d |  | Developers | 8h |
| 472 | 2.6.1.2.4 | Generate test report |  | 1d | 2007-05-03 | 2007-05-03 | 471 | 0d |  | Developers | 8h |
| 473 | 2.6.1.2.5 | Deliver test report to BAH (task 3.8.2) | milestone | 0d | 2007-05-03 | 2007-05-03 | 472 | 0d |  | Patrick |  |
| 474 | 2.6.1.2.6 | BAH review test report (task 3.8.2) |  | 10d | 2007-05-04 | 2007-05-17 | 473 | 299d |  | BAH | 80h |
| 475 | 2.6.2 | **Adopter testing** |  | 30d | 2007-04-02 | 2007-05-11 |  | 0d |  | Adopters; Developers; BAH | 2296h |
| 476 | 2.6.2.1 | **Adopter deployment** |  | 5d | 2007-04-02 | 2007-04-06 |  | 155d |  |  |  |
| 477 | 2.6.2.1.1 | Adopter deployment of previous iteration |  | 5d | 2007-04-02 | 2007-04-06 |  | 328d |  |  |  |
| 478 | 2.6.2.2 | **Update adopter test plan (task 5.5.1)** |  | 30d | 2007-04-02 | 2007-05-11 |  | 0d |  | Adopters; Developers; BAH | 1000h |
| 479 | 2.6.2.2.1 | Adopter update test script |  | 5d | 2007-04-02 | 2007-04-06 |  | 0d |  | Adopters | 40h |
| 480 | 2.6.2.2.2 | Adopter update test approach |  | 5d | 2007-04-09 | 2007-04-13 | 479 | 0d |  | Adopters | 40h |
| 481 | 2.6.2.2.3 | Developer review |  | 5d | 2007-04-16 | 2007-04-20 | 480 | 0d |  | Patrick; Ram | 80h |
| 482 | 2.6.2.2.4 | Adopter update |  | 5d | 2007-04-23 | 2007-04-27 | 481 | 0d |  | Adopters | 40h |
| 483 | 2.6.2.2.5 | Developer deliver adopter test plan to BAH (task 5.5.1) | milestone | 0d | 2007-04-27 | 2007-04-27 | 482 | 0d |  | Patrick |  |
| 484 | 2.6.2.2.6 | BAH review adopter test plan (task 5.5.1) |  | 10d | 2007-04-30 | 2007-05-11 | 483 | 303d |  | BAH | 80h |
| 485 | 2.6.2.3 | **QA testing (task 5.6.1)** |  | 24d | 2007-04-09 | 2007-05-10 | 479 | 131d |  | Adopters; BAH | 576h |
| 486 | 2.6.2.3.1 | Adopter create test data |  | 5d | 2007-04-09 | 2007-04-13 |  | 304d | 0d | Adopters | 40h |
| 487 | 2.6.2.3.2 | Adopter perform test script |  | 5d | 2007-04-16 | 2007-04-20 | 486 | 304d | 0d | Adopters | 40h |
| 488 | 2.6.2.3.3 | Adopter document results |  | 2d | 2007-04-23 | 2007-04-24 | 487 | 304d | 0d | Adopters | 16h |
| 489 | 2.6.2.3.4 | Adopter log bugs |  | 2d | 2007-04-25 | 2007-04-26 | 488 | 304d | 0d | Adopters | 16h |
| 490 | 2.6.2.3.5 | Developer deliver adopter test report to BAH (task 5.6.1) | milestone | 0d | 2007-04-26 | 2007-04-26 | 488, 489 | 304d | 0d | Patrick |  |
| 491 | 2.6.2.3.6 | BAH review adopter test report (task 5.6.1) |  | 10d | 2007-04-27 | 2007-05-10 | 490 | 304d |  | BAH | 80h |

| ID | WBS | Task | Type | Duration | Start | Finish | Predecessors | Total slack | Free slack | Constraint | Resources | Work |
| --- | --- | --- | --- | --- | --- | --- | --- | --- | --- | --- | --- | --- |
| 492 | 2.7 | **Documentation** |  | 15d | 2007-04-26 | 2007-05-16 | 266 | 127d |  |  | Developers; Adopters; BAH | 1656h |
| 493 | 2.7.1 | **Installation guide (task 3.10.2)** |  | 13d | 2007-04-30 | 2007-05-16 | 457FS-3d | 127d |  |  | Developers; BAH | 312h |
| 494 | 2.7.1.1 | Update installation guide |  | 3d | 2007-04-30 | 2007-05-02 |  | 162d | 0d |  | Developers | 24h |
| 495 | 2.7.1.2 | Deliver installation guide to BAH (task 3.10.2) | milestone | 0d | 2007-05-02 | 2007-05-02 | 494 | 300d | 0d |  | Patrick |  |
| 496 | 2.7.1.3 | BAH review of installation guide (task 3.10.2) |  | 10d | 2007-05-03 | 2007-05-16 | 495 | 300d |  |  | BAH | 80h |
| 497 | 2.7.2 | **Administration guide (task 3.13.2)** |  | 13d | 2007-04-30 | 2007-05-16 | 457FS-3d | 127d |  |  | Developers; BAH | 312h |
| 498 | 2.7.2.1 | Update administration guide |  | 3d | 2007-04-30 | 2007-05-02 |  | 162d | 0d |  | Developers | 24h |
| 499 | 2.7.2.2 | Deliver administration guide to BAH (task 3.13.2) | milestone | 0d | 2007-05-02 | 2007-05-02 | 498 | 300d | 0d |  | Patrick |  |
| 500 | 2.7.2.3 | BAH review of administration guide (task 3.13.2) |  | 10d | 2007-05-03 | 2007-05-16 | 499 | 300d |  |  | BAH | 80h |
| 501 | 2.7.3 | **Release notes (task 3.14.2)** |  | 13d | 2007-04-30 | 2007-05-16 | 457FS-3d | 127d |  |  | Developers; BAH | 312h |
| 502 | 2.7.3.1 | Update release notes |  | 3d | 2007-04-30 | 2007-05-02 |  | 162d | 0d |  | Developers | 24h |
| 503 | 2.7.3.2 | Deliver release notes to BAH (task 3.14.2) | milestone | 0d | 2007-05-02 | 2007-05-02 | 502 | 300d | 0d |  | Patrick |  |
| 504 | 2.7.3.3 | BAH review of release notes (task 3.14.2) |  | 10d | 2007-05-03 | 2007-05-16 | 503 | 300d |  |  | BAH | 80h |
| 505 | 2.7.4 | **Adopter summary of C3PR (task 5.1.2)** |  | 15d | 2007-04-26 | 2007-05-16 | 457FS-5d | 127d |  |  | Adopters; BAH | 360h |
| 506 | 2.7.4.1 | Adopter update summary |  | 3d | 2007-04-26 | 2007-04-30 |  | 300d | 0d |  | Adopters | 24h |
| 507 | 2.7.4.2 | Developer review summary |  | 1d | 2007-05-01 | 2007-05-01 | 506 | 300d | 0d |  | Adopters | 8h |
| 508 | 2.7.4.3 | Adopter update summary |  | 1d | 2007-05-02 | 2007-05-02 | 507 | 300d | 0d |  | Adopters | 8h |
| 509 | 2.7.4.4 | Developer deliver C3PR summary to BAH (task 5.1.2) | milestone | 0d | 2007-05-02 | 2007-05-02 | 508 | 300d | 0d |  | Patrick |  |
| 510 | 2.7.4.5 | BAH review of C3PR summary (task 5.1.2) |  | 10d | 2007-05-03 | 2007-05-16 | 509 | 300d |  |  | BAH | 80h |
| 511 | 2.8 | **Demonstration** |  | 0d | 2007-05-14 | 2007-05-14 | 266 | 130d |  |  | Patrick; Ram; BAH |  |
| 512 | 2.8.1 | Demonstrate latest features to BAH | milestone | 0d | 2007-05-14 | 2007-05-14 | 266 | 303d |  | start no earlier than 2007-05-14 | Patrick; Ram; BAH |  |
| 513 | 2.8.2 | Demonstrate to the larger community | milestone | 0d | 2007-05-14 | 2007-05-14 | 266 | 303d |  | start no earlier than 2007-05-14 | Patrick; Ram; BAH |  |
| 514 | 2.9 | **Touchpoints** |  | 22d | 2007-04-02 | 2007-05-01 | 266 | 138d |  |  |  |  |
| 515 | 2.9.1 | Adopter review of deliverables |  | 22d | 2007-04-02 | 2007-05-01 |  | 311d |  |  |  |  |
| 516 | 2.9.2 | Adopter deployment of previous iteration codebase |  | 22d | 2007-04-02 | 2007-05-01 |  | 311d |  |  |  |  |

| ID | WBS | Task | Type | Duration | Start | Finish | Predecessors | Total slack | Free slack | Constraint | Resources | Work |
| --- | --- | --- | --- | --- | --- | --- | --- | --- | --- | --- | --- | --- |
| 517 | 3 | **Iteration 3 (stratification, security, multi-site study, study ammendments)** |  | 40d | 2007-05-02 | 2007-06-26 |  | 28d |  |  |  | 19304h |
| 518 | 3.1 | Iteration start | milestone | 0d | 2007-05-02 | 2007-05-02 |  | 28d | 0d | start no earlier than 2007-05-02 |  |  |
| 519 | 3.2 | **Project Management** |  | 30d | 2007-05-02 | 2007-06-12 | 518 | 108d |  |  | Patrick; Adopters; BAH | 2640h |
| 520 | 3.2.1 | **Draft project plan (task 1.1)** |  | 30d | 2007-05-02 | 2007-06-12 |  | 108d |  |  | Patrick; Adopters; BAH | 960h |
| 521 | 3.2.1.1 | Developer draft |  | 5d | 2007-05-02 | 2007-05-08 |  | 143d | 0d |  | Patrick | 40h |
| 522 | 3.2.1.2 | BAH review |  | 5d | 2007-05-09 | 2007-05-15 | 521 | 143d | 0d |  | BAH | 40h |
| 523 | 3.2.1.3 | Developer update |  | 5d | 2007-05-16 | 2007-05-22 | 522 | 143d | 0d |  | Patrick | 40h |
| 524 | 3.2.1.4 | Adopter review |  | 3d | 2007-05-23 | 2007-05-25 | 523 | 143d | 0d |  | Adopters | 24h |
| 525 | 3.2.1.5 | Developer update |  | 2d | 2007-05-28 | 2007-05-29 | 524 | 143d | 0d |  | Patrick | 16h |
| 526 | 3.2.1.6 | Deliver project plan to BAH (task 1.1) | milestone | 0d | 2007-05-29 | 2007-05-29 | 525 | 143d | 0d |  | Patrick |  |
| 527 | 3.2.1.7 | BAH review project plan (task 1.1) |  | 10d | 2007-05-30 | 2007-06-12 | 526 | 143d |  |  | BAH | 80h |
| 528 | 3.2.2 | **Update risk matrix (task 1.4.2)** |  | 20d | 2007-05-02 | 2007-05-29 |  | 108d |  |  | Patrick; BAH | 480h |
| 529 | 3.2.2.1 | Update risk matrix for week 1 |  | 5d | 2007-05-02 | 2007-05-08 |  | 143d | 0d |  | Patrick | 40h |
| 530 | 3.2.2.2 | Update risk matrix for week 2 |  | 5d | 2007-05-09 | 2007-05-15 | 529 | 143d | 0d |  | Patrick | 40h |
| 531 | 3.2.2.3 | Deliver risk matrix to BAH (task 1.4.2) | milestone | 0d | 2007-05-15 | 2007-05-15 | 530 | 143d | 0d |  | Patrick |  |
| 532 | 3.2.2.4 | BAH review risk matrix (task 1.4.2) |  | 10d | 2007-05-16 | 2007-05-29 | 531 | 153d |  |  | BAH | 80h |
| 533 | 3.2.3 | **Monthly report (task 1.3.2)** |  | 20d | 2007-05-16 | 2007-06-12 | 531 | 108d |  |  | Patrick; BAH | 480h |
| 534 | 3.2.3.1 | Update risk matrix for week 3 |  | 5d | 2007-05-16 | 2007-05-22 |  | 143d | 0d |  | Patrick | 40h |
| 535 | 3.2.3.2 | Update risk matrix for week 4 |  | 5d | 2007-05-23 | 2007-05-29 | 534 | 143d | 0d |  | Patrick | 40h |
| 536 | 3.2.3.3 | Deliver monthly report and risk matrix to BAH (task 1.3.2) | milestone | 0d | 2007-05-29 | 2007-05-29 | 535 | 143d | 0d |  | Patrick |  |
| 537 | 3.2.3.4 | BAH review monthly report and risk matrix (task 1.3.2) |  | 10d | 2007-05-30 | 2007-06-12 | 536 | 143d |  |  | BAH | 80h |
| 538 | 3.3 | **Requirements and use cases** |  | 40d | 2007-05-02 | 2007-06-26 | 518 | 98d |  |  | Developers; Adopters; BAH | 4320h |
| 539 | 3.3.1 | **Create level 1 use cases and requirements** |  | 2d | 2007-05-02 | 2007-05-03 |  | 98d | 0d |  | Developers | 304h |
| 540 | 3.3.1.1 | **Level 1 use cases for eligibility** |  | 2d | 2007-05-02 | 2007-05-03 |  | 98d |  |  | Priyatam | 32h |
| 541 | 3.3.1.1.1 | Use case document (task 3.1.3) |  | 1d | 2007-05-02 | 2007-05-02 |  | 98d | 0d |  | Priyatam | 8h |
| 542 | 3.3.1.1.2 | Requirements document (task 3.2.3) |  | 1d | 2007-05-03 | 2007-05-03 | 541 | 98d |  |  | Priyatam | 8h |

| ID | WBS | Task | Duration | Start | Finish | Predecessors | Total slack | Free slack | Resources | Work |
| --- | --- | --- | --- | --- | --- | --- | --- | --- | --- | --- |
| 543 | 3.3.1.2 | **Level 1 use cases for study personnel** | 2d | 2007-05-02 | 2007-05-03 |  | 98d |  | Ramakrishna | 32h |
| 544 | 3.3.1.2.1 | Use case document (task 3.1.3) | 1d | 2007-05-02 | 2007-05-02 |  | 98d | 0d | Ramakrishna | 8h |
| 545 | 3.3.1.2.2 | Requirements document (task 3.2.3) | 1d | 2007-05-03 | 2007-05-03 | 544 | 98d |  | Ramakrishna | 8h |
| 546 | 3.3.1.3 | **Level 1 use cases for registration management** | 2d | 2007-05-02 | 2007-05-03 |  | 98d |  | Ramakrishna | 32h |
| 547 | 3.3.1.3.1 | Use case document (task 3.1.3) | 1d | 2007-05-02 | 2007-05-02 |  | 98d | 0d | Ramakrishna | 8h |
| 548 | 3.3.1.3.2 | Requirements document (task 3.2.3) | 1d | 2007-05-03 | 2007-05-03 | 547 | 98d |  | Ramakrishna | 8h |
| 549 | 3.3.1.4 | **Level 1 use cases for multi-site study** | 2d | 2007-05-02 | 2007-05-03 |  | 98d |  | Manav | 32h |
| 550 | 3.3.1.4.1 | Use case document (task 3.1.3) | 1d | 2007-05-02 | 2007-05-02 |  | 98d | 0d | Manav | 8h |
| 551 | 3.3.1.4.2 | Requirements document (task 3.2.3) | 1d | 2007-05-03 | 2007-05-03 | 550 | 98d |  | Manav | 8h |
| 552 | 3.3.1.5 | **Level 1 use cases for C3D integration** | 2d | 2007-05-02 | 2007-05-03 |  | 98d |  | Manav | 32h |
| 553 | 3.3.1.5.1 | Use case document (task 3.1.3) | 1d | 2007-05-02 | 2007-05-02 |  | 98d | 0d | Manav | 8h |
| 554 | 3.3.1.5.2 | Requirements document (task 3.2.3) | 1d | 2007-05-03 | 2007-05-03 | 553 | 98d |  | Manav | 8h |
| 555 | 3.3.1.6 | **Level 1 use cases for Security** | 2d | 2007-05-02 | 2007-05-03 |  | 98d |  | Manav | 32h |
| 556 | 3.3.1.6.1 | Use case document (task 3.1.3) | 1d | 2007-05-02 | 2007-05-02 |  | 98d | 0d | Manav | 8h |
| 557 | 3.3.1.6.2 | Requirements document (task 3.2.3) | 1d | 2007-05-03 | 2007-05-03 | 556 | 98d |  | Manav | 8h |
| 558 | 3.3.1.7 | **Level 1 use cases for Stratification** | 2d | 2007-05-02 | 2007-05-03 |  | 98d |  | Kruttik | 32h |
| 559 | 3.3.1.7.1 | Use case document (task 3.1.3) | 1d | 2007-05-02 | 2007-05-02 |  | 98d | 0d | Kruttik | 8h |
| 560 | 3.3.1.7.2 | Requirements document (task 3.2.3) | 1d | 2007-05-03 | 2007-05-03 | 559 | 98d |  | Kruttik | 8h |
| 561 | 3.3.1.8 | **Level 1 use cases for Randomization** | 2d | 2007-05-02 | 2007-05-03 |  | 98d |  | Kruttik | 32h |
| 562 | 3.3.1.8.1 | Use case document (task 3.1.3) | 1d | 2007-05-02 | 2007-05-02 |  | 98d | 0d | Kruttik | 8h |
| 563 | 3.3.1.8.2 | Requirements document (task 3.2.3) | 1d | 2007-05-03 | 2007-05-03 | 562 | 98d |  | Kruttik | 8h |
| 564 | 3.3.1.9 | **Level 1 use cases for disease site** | 2d | 2007-05-02 | 2007-05-03 |  | 98d |  | Ramakrishna | 32h |
| 565 | 3.3.1.9.1 | Use case document (task 3.1.3) | 1d | 2007-05-02 | 2007-05-02 |  | 98d | 0d | Ramakrishna | 8h |
| 566 | 3.3.1.9.2 | Requirements document (task 3.2.3) | 1d | 2007-05-03 | 2007-05-03 | 565 | 98d |  | Ramakrishna | 8h |

| ID | WBS | Task | Duration | Start | Finish | Predecessors | Total slack | Free slack | Resources | Work |
| --- | --- | --- | --- | --- | --- | --- | --- | --- | --- | --- |
| 567 | 3.3.2 | **Update use case document (task 3.1.3, task 5.2.3)** | 9d | 2007-05-04 | 2007-05-16 | 539 | 98d | 0d | Developers; Adopters | 1448h |
| 568 | 3.3.2.1 | **Update eligibility use cases** | 9d | 2007-05-04 | 2007-05-16 |  | 98d |  | Adopters; Priyatam | 152h |
| 569 | 3.3.2.1.1 | Developer update | 2d | 2007-05-04 | 2007-05-07 |  | 133d | 0d | Priyatam | 16h |
| 570 | 3.3.2.1.2 | Adopter review | 5d | 2007-05-08 | 2007-05-14 | 569 | 133d | 0d | Adopters | 40h |
| 571 | 3.3.2.1.3 | Developer update | 1d | 2007-05-15 | 2007-05-15 | 570 | 133d | 0d | Priyatam | 8h |
| 572 | 3.3.2.1.4 | Adopter sign-off | 1d | 2007-05-16 | 2007-05-16 | 571 | 133d |  | Adopters | 8h |
| 573 | 3.3.2.2 | **Update study personnel use cases** | 9d | 2007-05-04 | 2007-05-16 |  | 98d |  | Ramakrishna; Adopters | 152h |
| 574 | 3.3.2.2.1 | Developer update | 2d | 2007-05-04 | 2007-05-07 |  | 133d | 0d | Ramakrishna | 16h |
| 575 | 3.3.2.2.2 | Adopter review | 5d | 2007-05-08 | 2007-05-14 | 574 | 133d | 0d | Adopters | 40h |
| 576 | 3.3.2.2.3 | Developer update | 1d | 2007-05-15 | 2007-05-15 | 575 | 133d | 0d | Ramakrishna | 8h |
| 577 | 3.3.2.2.4 | Adopter sign-off | 1d | 2007-05-16 | 2007-05-16 | 576 | 133d |  | Adopters | 8h |
| 578 | 3.3.2.3 | **Update registration management use cases** | 9d | 2007-05-04 | 2007-05-16 |  | 98d |  | Ramakrishna; Adopters | 152h |
| 579 | 3.3.2.3.1 | Developer update | 2d | 2007-05-04 | 2007-05-07 |  | 133d | 0d | Ramakrishna | 16h |
| 580 | 3.3.2.3.2 | Adopter review | 5d | 2007-05-08 | 2007-05-14 | 579 | 133d | 0d | Adopters | 40h |
| 581 | 3.3.2.3.3 | Developer update | 1d | 2007-05-15 | 2007-05-15 | 580 | 133d | 0d | Ramakrishna | 8h |
| 582 | 3.3.2.3.4 | Adopter sign-off | 1d | 2007-05-16 | 2007-05-16 | 581 | 133d |  | Adopters | 8h |
| 583 | 3.3.2.4 | **Update multi-site trial use cases** | 9d | 2007-05-04 | 2007-05-16 |  | 98d |  | Manav; Adopters | 152h |
| 584 | 3.3.2.4.1 | Developer update | 2d | 2007-05-04 | 2007-05-07 |  | 133d | 0d | Manav | 16h |
| 585 | 3.3.2.4.2 | Adopter review | 5d | 2007-05-08 | 2007-05-14 | 584 | 133d | 0d | Adopters | 40h |
| 586 | 3.3.2.4.3 | Developer update | 1d | 2007-05-15 | 2007-05-15 | 585 | 133d | 0d | Manav | 8h |
| 587 | 3.3.2.4.4 | Adopter sign-off | 1d | 2007-05-16 | 2007-05-16 | 586 | 133d |  | Adopters | 8h |
| 588 | 3.3.2.5 | **Update C3D integration use cases** | 9d | 2007-05-04 | 2007-05-16 |  | 98d |  | Manav; Adopters | 152h |
| 589 | 3.3.2.5.1 | Developer update | 2d | 2007-05-04 | 2007-05-07 |  | 133d | 0d | Manav | 16h |
| 590 | 3.3.2.5.2 | Adopter review | 5d | 2007-05-08 | 2007-05-14 | 589 | 133d | 0d | Adopters | 40h |
| 591 | 3.3.2.5.3 | Developer update | 1d | 2007-05-15 | 2007-05-15 | 590 | 133d | 0d | Manav | 8h |
| 592 | 3.3.2.5.4 | Adopter sign-off | 1d | 2007-05-16 | 2007-05-16 | 591 | 133d |  | Adopters | 8h |

| ID | WBS | Task | Duration | Start | Finish | Predecessors | Total slack | Free slack | Resources | Work |
| --- | --- | --- | --- | --- | --- | --- | --- | --- | --- | --- |
| 593 | 3.3.2.6 | **Update security use cases** | 9d | 2007-05-04 | 2007-05-16 |  | 98d |  | Manav; Adopters | 152h |
| 594 | 3.3.2.6.1 | Developer update | 2d | 2007-05-04 | 2007-05-07 |  | 133d | 0d | Manav | 16h |
| 595 | 3.3.2.6.2 | Adopter review | 5d | 2007-05-08 | 2007-05-14 | 594 | 133d | 0d | Adopters | 40h |
| 596 | 3.3.2.6.3 | Developer update | 1d | 2007-05-15 | 2007-05-15 | 595 | 133d | 0d | Manav | 8h |
| 597 | 3.3.2.6.4 | Adopter sign-off | 1d | 2007-05-16 | 2007-05-16 | 596 | 133d |  | Adopters | 8h |
| 598 | 3.3.2.7 | **Update stratification use cases** | 9d | 2007-05-04 | 2007-05-16 |  | 98d |  | Kruttik; Adopters | 152h |
| 599 | 3.3.2.7.1 | Developer update | 2d | 2007-05-04 | 2007-05-07 |  | 133d | 0d | Kruttik | 16h |
| 600 | 3.3.2.7.2 | Adopter review | 5d | 2007-05-08 | 2007-05-14 | 599 | 133d | 0d | Adopters | 40h |
| 601 | 3.3.2.7.3 | Developer update | 1d | 2007-05-15 | 2007-05-15 | 600 | 133d | 0d | Kruttik | 8h |
| 602 | 3.3.2.7.4 | Adopter sign-off | 1d | 2007-05-16 | 2007-05-16 | 601 | 133d |  | Adopters | 8h |
| 603 | 3.3.2.8 | **Update Randomization use cases** | 9d | 2007-05-04 | 2007-05-16 |  | 98d |  | Kruttik; Adopters | 152h |
| 604 | 3.3.2.8.1 | Developer update | 2d | 2007-05-04 | 2007-05-07 |  | 133d | 0d | Kruttik | 16h |
| 605 | 3.3.2.8.2 | Adopter review | 5d | 2007-05-08 | 2007-05-14 | 604 | 133d | 0d | Adopters | 40h |
| 606 | 3.3.2.8.3 | Developer update | 1d | 2007-05-15 | 2007-05-15 | 605 | 133d | 0d | Kruttik | 8h |
| 607 | 3.3.2.8.4 | Adopter sign-off | 1d | 2007-05-16 | 2007-05-16 | 606 | 133d |  | Adopters | 8h |
| 608 | 3.3.2.9 | **Update disease site use cases** | 9d | 2007-05-04 | 2007-05-16 |  | 98d |  | Kruttik; Adopters | 152h |
| 609 | 3.3.2.9.1 | Developer update | 2d | 2007-05-04 | 2007-05-07 |  | 133d | 0d | Kruttik | 16h |
| 610 | 3.3.2.9.2 | Adopter review | 5d | 2007-05-08 | 2007-05-14 | 609 | 133d | 0d | Adopters | 40h |
| 611 | 3.3.2.9.3 | Developer update | 1d | 2007-05-15 | 2007-05-15 | 610 | 133d | 0d | Kruttik | 8h |
| 612 | 3.3.2.9.4 | Adopter sign-off | 1d | 2007-05-16 | 2007-05-16 | 611 | 133d |  | Adopters | 8h |
| 613 | 3.3.3 | **Update use case document (task 3.2.3, task 5.3.3)** | 9d | 2007-05-17 | 2007-05-29 | 567 | 98d | 0d | Developers; Adopters | 1448h |
| 614 | 3.3.3.1 | **Update eligibility requirements** | 9d | 2007-05-17 | 2007-05-29 |  | 98d |  | Adopters; Priyatam | 152h |
| 615 | 3.3.3.1.1 | Developer update | 2d | 2007-05-17 | 2007-05-18 |  | 133d | 0d | Priyatam | 16h |
| 616 | 3.3.3.1.2 | Adopter review | 5d | 2007-05-21 | 2007-05-25 | 615 | 133d | 0d | Adopters | 40h |
| 617 | 3.3.3.1.3 | Developer update | 1d | 2007-05-28 | 2007-05-28 | 616 | 133d | 0d | Priyatam | 8h |
| 618 | 3.3.3.1.4 | Adopter sign-off | 1d | 2007-05-29 | 2007-05-29 | 617 | 133d |  | Adopters | 8h |

| ID | WBS | Task | Duration | Start | Finish | Predecessors | Total slack | Free slack | Resources | Work |
| --- | --- | --- | --- | --- | --- | --- | --- | --- | --- | --- |
| 619 | 3.3.3.2 | **Update study personnel requirements** | 9d | 2007-05-17 | 2007-05-29 |  | 98d |  | Ramakrishna; Adopters | 152h |
| 620 | 3.3.3.2.1 | Developer update | 2d | 2007-05-17 | 2007-05-18 |  | 133d | 0d | Ramakrishna | 16h |
| 621 | 3.3.3.2.2 | Adopter review | 5d | 2007-05-21 | 2007-05-25 | 620 | 133d | 0d | Adopters | 40h |
| 622 | 3.3.3.2.3 | Developer update | 1d | 2007-05-28 | 2007-05-28 | 621 | 133d | 0d | Ramakrishna | 8h |
| 623 | 3.3.3.2.4 | Adopter sign-off | 1d | 2007-05-29 | 2007-05-29 | 622 | 133d |  | Adopters | 8h |
| 624 | 3.3.3.3 | **Update registration management requirements** | 9d | 2007-05-17 | 2007-05-29 |  | 98d |  | Ramakrishna; Adopters | 152h |
| 625 | 3.3.3.3.1 | Developer update | 2d | 2007-05-17 | 2007-05-18 |  | 133d | 0d | Ramakrishna | 16h |
| 626 | 3.3.3.3.2 | Adopter review | 5d | 2007-05-21 | 2007-05-25 | 625 | 133d | 0d | Adopters | 40h |
| 627 | 3.3.3.3.3 | Developer update | 1d | 2007-05-28 | 2007-05-28 | 626 | 133d | 0d | Ramakrishna | 8h |
| 628 | 3.3.3.3.4 | Adopter sign-off | 1d | 2007-05-29 | 2007-05-29 | 627 | 133d |  | Adopters | 8h |
| 629 | 3.3.3.4 | **Update multi-site trial requirements** | 9d | 2007-05-17 | 2007-05-29 |  | 98d |  | Manav; Adopters | 152h |
| 630 | 3.3.3.4.1 | Developer update | 2d | 2007-05-17 | 2007-05-18 |  | 133d | 0d | Manav | 16h |
| 631 | 3.3.3.4.2 | Adopter review | 5d | 2007-05-21 | 2007-05-25 | 630 | 133d | 0d | Adopters | 40h |
| 632 | 3.3.3.4.3 | Developer update | 1d | 2007-05-28 | 2007-05-28 | 631 | 133d | 0d | Manav | 8h |
| 633 | 3.3.3.4.4 | Adopter sign-off | 1d | 2007-05-29 | 2007-05-29 | 632 | 133d |  | Adopters | 8h |
| 634 | 3.3.3.5 | **Update C3D integration requirements** | 9d | 2007-05-17 | 2007-05-29 |  | 98d |  | Manav; Adopters | 152h |
| 635 | 3.3.3.5.1 | Developer update | 2d | 2007-05-17 | 2007-05-18 |  | 133d | 0d | Manav | 16h |
| 636 | 3.3.3.5.2 | Adopter review | 5d | 2007-05-21 | 2007-05-25 | 635 | 133d | 0d | Adopters | 40h |
| 637 | 3.3.3.5.3 | Developer update | 1d | 2007-05-28 | 2007-05-28 | 636 | 133d | 0d | Manav | 8h |
| 638 | 3.3.3.5.4 | Adopter sign-off | 1d | 2007-05-29 | 2007-05-29 | 637 | 133d |  | Adopters | 8h |
| 639 | 3.3.3.6 | **Update security requirements** | 9d | 2007-05-17 | 2007-05-29 |  | 98d |  | Manav; Adopters | 152h |
| 640 | 3.3.3.6.1 | Developer update | 2d | 2007-05-17 | 2007-05-18 |  | 133d | 0d | Manav | 16h |
| 641 | 3.3.3.6.2 | Adopter review | 5d | 2007-05-21 | 2007-05-25 | 640 | 133d | 0d | Adopters | 40h |
| 642 | 3.3.3.6.3 | Developer update | 1d | 2007-05-28 | 2007-05-28 | 641 | 133d | 0d | Manav | 8h |
| 643 | 3.3.3.6.4 | Adopter sign-off | 1d | 2007-05-29 | 2007-05-29 | 642 | 133d |  | Adopters | 8h |

| ID | WBS | Task | Type | Duration | Start | Finish | Predecessors | Total slack | Free slack | Resources | Work |
| --- | --- | --- | --- | --- | --- | --- | --- | --- | --- | --- | --- |
| 644 | 3.3.3.7 | **Update stratification requirements** |  | 9d | 2007-05-17 | 2007-05-29 |  | 98d |  | Kruttik; Adopters | 152h |
| 645 | 3.3.3.7.1 | Developer update |  | 2d | 2007-05-17 | 2007-05-18 |  | 133d | 0d | Kruttik | 16h |
| 646 | 3.3.3.7.2 | Adopter review |  | 5d | 2007-05-21 | 2007-05-25 | 645 | 133d | 0d | Adopters | 40h |
| 647 | 3.3.3.7.3 | Developer update |  | 1d | 2007-05-28 | 2007-05-28 | 646 | 133d | 0d | Kruttik | 8h |
| 648 | 3.3.3.7.4 | Adopter sign-off |  | 1d | 2007-05-29 | 2007-05-29 | 647 | 133d |  | Adopters | 8h |
| 649 | 3.3.3.8 | **Update Randomization requirements** |  | 9d | 2007-05-17 | 2007-05-29 |  | 98d |  | Kruttik; Adopters | 152h |
| 650 | 3.3.3.8.1 | Developer update |  | 2d | 2007-05-17 | 2007-05-18 |  | 133d | 0d | Kruttik | 16h |
| 651 | 3.3.3.8.2 | Adopter review |  | 5d | 2007-05-21 | 2007-05-25 | 650 | 133d | 0d | Adopters | 40h |
| 652 | 3.3.3.8.3 | Developer update |  | 1d | 2007-05-28 | 2007-05-28 | 651 | 133d | 0d | Kruttik | 8h |
| 653 | 3.3.3.8.4 | Adopter sign-off |  | 1d | 2007-05-29 | 2007-05-29 | 652 | 133d |  | Adopters | 8h |
| 654 | 3.3.3.9 | **Update disease site requirements** |  | 9d | 2007-05-17 | 2007-05-29 |  | 98d |  | Kruttik; Adopters | 152h |
| 655 | 3.3.3.9.1 | Developer update |  | 2d | 2007-05-17 | 2007-05-18 |  | 133d | 0d | Kruttik | 16h |
| 656 | 3.3.3.9.2 | Adopter review |  | 5d | 2007-05-21 | 2007-05-25 | 655 | 133d | 0d | Adopters | 40h |
| 657 | 3.3.3.9.3 | Developer update |  | 1d | 2007-05-28 | 2007-05-28 | 656 | 133d | 0d | Kruttik | 8h |
| 658 | 3.3.3.9.4 | Adopter sign-off |  | 1d | 2007-05-29 | 2007-05-29 | 657 | 133d |  | Adopters | 8h |
| 659 | 3.3.4 | Developer deliver use case document to BAH (task 3.1.2, task 5.2.2) | milestone | 0d | 2007-05-29 | 2007-05-29 | 613 | 133d | 0d | Patrick |  |
| 660 | 3.3.5 | BAH review use case document (task 3.1.2, task 5.2.2) |  | 10d | 2007-05-30 | 2007-06-12 | 659 | 133d | 0d | BAH | 80h |
| 661 | 3.3.6 | Developer deliver requirements document to BAH (task 3.2.2, task 5.3.2) | milestone | 0d | 2007-06-12 | 2007-06-12 | 660 | 133d | 0d | Patrick |  |
| 662 | 3.3.7 | BAH review requirements document (task 3.2.2, task 5.3.2) |  | 10d | 2007-06-13 | 2007-06-26 | 661 | 133d |  | BAH | 80h |
| 663 | 3.4 | **Analysis and Design** |  | 31d | 2007-05-04 | 2007-06-15 | 539 | 101d |  | Developers; Adopters; BAH | 2536h |
| 664 | 3.4.1 | **Perform level 1 design** |  | 4d | 2007-05-04 | 2007-05-09 |  | 101d | 0d | Developers | 64h |
| 665 | 3.4.1.1 | Cursory BRIDG harmonization |  | 1d | 2007-05-04 | 2007-05-04 |  | 101d | 0d | Developers | 8h |
| 666 | 3.4.1.2 | Update implementation model |  | 1d | 2007-05-07 | 2007-05-07 | 665 | 101d | 0d | Developers | 8h |
| 667 | 3.4.1.3 | Cursory system design |  | 2d | 2007-05-08 | 2007-05-09 | 666 | 101d |  | Developers | 16h |

| ID | WBS | Task | Type | Duration | Start | Finish | Predecessors | Total slack | Free slack | Resources | Work |
| --- | --- | --- | --- | --- | --- | --- | --- | --- | --- | --- | --- |
| 668 | 3.4.2 | **Modeling (task 3.3.3)** |  | 27d | 2007-05-10 | 2007-06-15 | 664 | 105d |  | Developers; Adopters | 888h |
| 669 | 3.4.2.1 | **Update model** |  | 6d | 2007-05-10 | 2007-05-17 |  | 105d | 0d | Developers | 144h |
| 670 | 3.4.2.1.1 | **BRIDG harmonization** |  | 3d | 2007-05-10 | 2007-05-14 |  | 105d | 0d | Developers | 48h |
| 671 | 3.4.2.1.1.1 | Harmonize models |  | 3d | 2007-05-10 | 2007-05-14 |  | 140d |  | Developers | 24h |
| 672 | 3.4.2.1.2 | **Model implementation** |  | 3d | 2007-05-15 | 2007-05-17 | 670 | 105d |  | Developers | 48h |
| 673 | 3.4.2.1.2.1 | Implement models |  | 3d | 2007-05-15 | 2007-05-17 |  | 140d |  | Developers | 24h |
| 674 | 3.4.2.2 | Adopter review |  | 5d | 2007-05-18 | 2007-05-24 | 669 | 140d | 0d | Adopters | 40h |
| 675 | 3.4.2.3 | **Update model** |  | 6d | 2007-05-25 | 2007-06-01 | 674 | 105d | 0d | Developers | 192h |
| 676 | 3.4.2.3.1 | **BRIDG harmonization** |  | 3d | 2007-05-25 | 2007-05-29 | 674 | 105d | 0d |  | 72h |
| 677 | 3.4.2.3.1.1 | Harmonize models |  | 3d | 2007-05-25 | 2007-05-29 |  | 140d |  | Kruttik; Priyatam; Manav | 72h |
| 678 | 3.4.2.3.2 | **Model implementation** |  | 3d | 2007-05-30 | 2007-06-01 | 676 | 105d |  |  | 72h |
| 679 | 3.4.2.3.2.1 | Implement models |  | 3d | 2007-05-30 | 2007-06-01 |  | 140d |  | Kruttik; Priyatam; Manav | 72h |
| 680 | 3.4.2.4 | Developer deliver UML to BAH (task 3.3.3) | milestone | 0d | 2007-06-01 | 2007-06-01 | 675 | 140d | 0d | Patrick |  |
| 681 | 3.4.2.5 | BAH review of UML (task 3.3.3) |  | 10d | 2007-06-04 | 2007-06-15 | 680 | 140d |  | BAH | 80h |
| 682 | 3.4.3 | **System design (task 3.4.3)** |  | 25d | 2007-05-10 | 2007-06-13 | 664 | 107d |  | Developers; BAH | 840h |
| 683 | 3.4.3.1 | **Design use cases** |  | 15d | 2007-05-10 | 2007-05-30 |  | 107d | 0d | Kruttik; Priyatam | 360h |
| 684 | 3.4.3.1.1 | Draft UML |  | 5d | 2007-05-10 | 2007-05-16 |  | 142d | 0d | Developers | 40h |
| 685 | 3.4.3.1.2 | Team review |  | 5d | 2007-05-17 | 2007-05-23 | 684 | 142d | 0d | Developers | 40h |
| 686 | 3.4.3.1.3 | Update design document |  | 5d | 2007-05-24 | 2007-05-30 | 685 | 142d |  | Developers | 40h |
| 687 | 3.4.3.2 | Deliver design doc to BAH (task 3.4.3) | milestone | 0d | 2007-05-30 | 2007-05-30 | 683 | 155d | 0d | Patrick |  |
| 688 | 3.4.3.3 | BAH review design doc (task 3.4.3) |  | 10d | 2007-05-31 | 2007-06-13 | 687 | 155d |  | BAH | 80h |
| 689 | 3.5 | **Implementation (task 3.5.3)** |  | 30d | 2007-05-10 | 2007-06-20 | 664 | 101d |  | Developers; BAH | 2056h |
| 690 | 3.5.1 | **Database** |  | 3d | 2007-05-10 | 2007-05-14 |  | 101d | 0d | Developers | 72h |
| 691 | 3.5.1.1 | **Implement models for use cases** |  | 3d | 2007-05-10 | 2007-05-14 |  | 101d | 0d | Developers | 48h |
| 692 | 3.5.1.1.1 | Update DDLs |  | 1d | 2007-05-10 | 2007-05-10 |  | 101d | 0d | Developers | 8h |
| 693 | 3.5.1.1.2 | Apply to database |  | 1d | 2007-05-11 | 2007-05-11 | 692 | 101d | 0d | Developers | 8h |
| 694 | 3.5.1.1.3 | Create test data |  | 1d | 2007-05-14 | 2007-05-14 | 693 | 101d |  | Developers | 8h |

| ID | WBS | Task | Duration | Start | Finish | Predecessors | Total slack | Free slack | Resources | Work |
| --- | --- | --- | --- | --- | --- | --- | --- | --- | --- | --- |
| 695 | 3.5.2 | **caDSR** | 10d | 2007-05-10 | 2007-05-23 |  | 122d |  |  | 80h |
| 696 | 3.5.2.1 | Investigate caDSR eligibility | 5d | 2007-05-10 | 2007-05-16 |  | 192d | 0d | Priyatam | 40h |
| 697 | 3.5.2.2 | Create XML format | 5d | 2007-05-17 | 2007-05-23 | 696 | 192d |  | Priyatam | 40h |
| 698 | 3.5.3 | **Business layer** | 10d | 2007-05-10 | 2007-05-23 |  | 104d |  | Developers | 256h |
| 699 | 3.5.3.1 | **Implement use caseAPIs** | 7d | 2007-05-15 | 2007-05-23 | 691 | 101d | 0d | Developers | 88h |
| 700 | 3.5.3.1.1 | Update APIs | 2d | 2007-05-15 | 2007-05-16 |  | 101d | 0d | Developers | 16h |
| 701 | 3.5.3.1.2 | Implement APIs | 3d | 2007-05-17 | 2007-05-21 | 700 | 101d | 0d | Developers | 24h |
| 702 | 3.5.3.1.3 | Deploy APIs | 2d | 2007-05-22 | 2007-05-23 | 701 | 101d |  | Developers | 16h |
| 703 | 3.5.3.2 | **Implement caDSR/XML import APIs** | 7d | 2007-05-10 | 2007-05-18 |  | 125d |  | Priyatam | 112h |
| 704 | 3.5.3.2.1 | Update APIs | 2d | 2007-05-10 | 2007-05-11 |  | 195d | 0d | Priyatam | 16h |
| 705 | 3.5.3.2.2 | Implement APIs | 3d | 2007-05-14 | 2007-05-16 | 704 | 195d | 0d | Priyatam | 24h |
| 706 | 3.5.3.2.3 | Deploy APIs | 2d | 2007-05-17 | 2007-05-18 | 705 | 195d |  | Priyatam | 16h |
| 707 | 3.5.4 | **ESB** | 10d | 2007-05-15 | 2007-05-28 | 690 | 119d |  | Manav | 136h |
| 708 | 3.5.4.1 | Implement binding components for C3D | 5d | 2007-05-15 | 2007-05-21 |  | 189d | 0d | Manav | 40h |
| 709 | 3.5.4.2 | Implement binding components for study msg | 5d | 2007-05-22 | 2007-05-28 | 708 | 189d |  | Manav | 40h |
| 710 | 3.5.5 | **Security** | 5d | 2007-05-22 | 2007-05-28 | 708 | 119d |  | Manav | 80h |
| 711 | 3.5.5.1 | Connect C3PR roles to GridGrouper groups | 5d | 2007-05-22 | 2007-05-28 |  | 189d |  | Manav | 40h |
| 712 | 3.5.6 | **Web interface** | 20d | 2007-05-10 | 2007-06-06 |  | 101d | 0d | Developers | 872h |
| 713 | 3.5.6.1 | **Modify study management interface** | 10d | 2007-05-24 | 2007-06-06 |  | 101d |  | Kruttik; Priyatam; Manav | 408h |
| 714 | 3.5.6.1.1 | Manage eligibility criteria | 5d | 2007-05-24 | 2007-05-30 | 699 | 101d | 0d | Kruttik; Priyatam; Manav | 120h |
| 715 | 3.5.6.1.2 | Manage multi-site study | 5d | 2007-05-31 | 2007-06-06 | 714 | 101d |  | Kruttik; Priyatam; Manav | 120h |
| 716 | 3.5.6.2 | **Modify study personnel management interface** | 5d | 2007-05-10 | 2007-05-16 |  | 116d |  | Priyatam; Kula | 112h |
| 717 | 3.5.6.2.1 | Manage study personnel | 5d | 2007-05-10 | 2007-05-16 |  | 116d |  | Priyatam; Kula | 80h |
| 718 | 3.5.6.3 | **Modify registration interface** | 5d | 2007-05-24 | 2007-05-30 |  | 106d |  | Kruttik; Priyatam | 112h |
| 719 | 3.5.6.3.1 | Check eligibility | 5d | 2007-05-24 | 2007-05-30 | 699 | 106d | 5d | Kruttik; Priyatam | 80h |

| ID | WBS | Task | Type | Duration | Start | Finish | Predecessors | Total slack | Free slack | Resources | Work |
| --- | --- | --- | --- | --- | --- | --- | --- | --- | --- | --- | --- |
| 720 | 3.5.6.4 | **Modify registration management interface** |  | 5d | 2007-05-10 | 2007-05-16 |  | 116d |  | Ramakrishna | 80h |
| 721 | 3.5.6.4.1 | Manage study subject registration |  | 5d | 2007-05-10 | 2007-05-16 |  | 116d | 15d | Ramakrishna | 40h |
| 722 | 3.5.7 | Deliver codebase to BAH (task 3.5.3) | milestone | 0d | 2007-06-06 | 2007-06-06 | 690, 712, 719, 721 | 101d | 0d | Patrick |  |
| 723 | 3.5.8 | BAH review codebase (task 3.5.3) |  | 10d | 2007-06-07 | 2007-06-20 | 722 | 102d |  | BAH | 80h |
| 724 | 3.6 | **Testing** |  | 37d | 2007-05-02 | 2007-06-21 | 518 | 101d |  | Developers; Adopters; BAH | 5568h |
| 725 | 3.6.1 | **Developer testing** |  | 37d | 2007-05-02 | 2007-06-21 |  | 101d |  | BAH; Adopters; Developers | 2184h |
| 726 | 3.6.1.1 | **Update developer test plan (task 3.6.2, task 5.4.2)** |  | 30d | 2007-05-02 | 2007-06-12 |  | 108d |  | Developers; Adopters; BAH | 960h |
| 727 | 3.6.1.1.1 | Developer draft |  | 5d | 2007-05-02 | 2007-05-08 |  | 108d | 0d | Developers | 40h |
| 728 | 3.6.1.1.2 | Adopter review |  | 5d | 2007-05-09 | 2007-05-15 | 727 | 108d | 0d | Adopters | 40h |
| 729 | 3.6.1.1.3 | Developer update |  | 5d | 2007-05-16 | 2007-05-22 | 728 | 108d | 0d | Developers | 40h |
| 730 | 3.6.1.1.4 | Adopter review and sign |  | 5d | 2007-05-23 | 2007-05-29 | 729 | 108d | 0d | Adopters | 40h |
| 731 | 3.6.1.1.5 | Deliver signed test plan to BAH (task 3.6.2, task 5.4.2) | milestone | 0d | 2007-05-29 | 2007-05-29 | 730 | 108d | 0d | Patrick |  |
| 732 | 3.6.1.1.6 | BAH review signed test plan (task 3.6.2, task 5.4.2) |  | 10d | 2007-05-30 | 2007-06-12 | 731 | 108d |  | BAH | 80h |
| 733 | 3.6.1.2 | **Integration and system testing (task 3.8.2)** |  | 16d | 2007-05-31 | 2007-06-21 | 722FS-5d | 101d |  | Developers; BAH | 336h |
| 734 | 3.6.1.2.1 | Generate test data |  | 1d | 2007-05-31 | 2007-05-31 |  | 101d | 0d | Developers | 8h |
| 735 | 3.6.1.2.2 | Write tests |  | 3d | 2007-06-01 | 2007-06-05 | 734 | 101d | 0d | Developers | 24h |
| 736 | 3.6.1.2.3 | Validate tests |  | 1d | 2007-06-06 | 2007-06-06 | 735 | 101d | 0d | Developers | 8h |
| 737 | 3.6.1.2.4 | Generate test report |  | 1d | 2007-06-07 | 2007-06-07 | 736 | 101d | 0d | Developers | 8h |
| 738 | 3.6.1.2.5 | Deliver test report to BAH (task 3.8.2) | milestone | 0d | 2007-06-07 | 2007-06-07 | 737 | 101d | 0d | Patrick |  |
| 739 | 3.6.1.2.6 | BAH review test report (task 3.8.2) |  | 10d | 2007-06-08 | 2007-06-21 | 738 | 101d |  | BAH | 80h |
| 740 | 3.6.2 | **Adopter testing** |  | 35d | 2007-05-02 | 2007-06-19 |  | 103d |  | Adopters; Developers; BAH | 2496h |
| 741 | 3.6.2.1 | **Adopter deployment** |  | 5d | 2007-05-02 | 2007-05-08 |  | 103d |  | Adopters | 80h |
| 742 | 3.6.2.1.1 | Adopter deployment of previous iteration |  | 5d | 2007-05-02 | 2007-05-08 |  | 103d | 0d | Adopters | 40h |
| 743 | 3.6.2.2 | **Update adopter test plan (task 5.5.1)** |  | 30d | 2007-05-09 | 2007-06-19 | 742 | 103d |  | Adopters; Developers; BAH | 1000h |
| 744 | 3.6.2.2.1 | Adopter update test script |  | 5d | 2007-05-09 | 2007-05-15 |  | 103d | 0d | Adopters | 40h |
| 745 | 3.6.2.2.2 | Adopter update test approach |  | 5d | 2007-05-16 | 2007-05-22 | 744 | 103d | 0d | Adopters | 40h |
| 746 | 3.6.2.2.3 | Developer review |  | 5d | 2007-05-23 | 2007-05-29 | 745 | 103d | 0d | Patrick; Ram | 80h |
| 747 | 3.6.2.2.4 | Adopter update |  | 5d | 2007-05-30 | 2007-06-05 | 746 | 103d | 0d | Adopters | 40h |
| 748 | 3.6.2.2.5 | Developer deliver adopter test plan to BAH (task 5.5.1) | milestone | 0d | 2007-06-05 | 2007-06-05 | 747 | 103d | 0d | Patrick |  |
| 749 | 3.6.2.2.6 | BAH review adopter test plan (task 5.5.1) |  | 10d | 2007-06-06 | 2007-06-19 | 748 | 103d |  | BAH | 80h |

| ID | WBS | Task | Type | Duration | Start | Finish | Predecessors | Total slack | Free slack | Resources | Work |
| --- | --- | --- | --- | --- | --- | --- | --- | --- | --- | --- | --- |
| 750 | 3.6.2.3 | **QA testing (task 5.6.1)** |  | 24d | 2007-05-16 | 2007-06-18 | 744 | 104d |  | Adopters; BAH | 576h |
| 751 | 3.6.2.3.1 | Adopter create test data |  | 5d | 2007-05-16 | 2007-05-22 |  | 104d | 0d | Adopters | 40h |
| 752 | 3.6.2.3.2 | Adopter perform test script |  | 5d | 2007-05-23 | 2007-05-29 | 751 | 104d | 0d | Adopters | 40h |
| 753 | 3.6.2.3.3 | Adopter document results |  | 2d | 2007-05-30 | 2007-05-31 | 752 | 104d | 0d | Adopters | 16h |
| 754 | 3.6.2.3.4 | Adopter log bugs |  | 2d | 2007-06-01 | 2007-06-04 | 753 | 104d | 0d | Adopters | 16h |
| 755 | 3.6.2.3.5 | Developer deliver adopter test report to BAH (task 5.6.1) | milestone | 0d | 2007-06-04 | 2007-06-04 | 753, 754 | 104d | 0d | Patrick |  |
| 756 | 3.6.2.3.6 | BAH review adopter test report (task 5.6.1) |  | 10d | 2007-06-05 | 2007-06-18 | 755 | 104d |  | BAH | 80h |
| 757 | 3.7 | **Documentation** |  | 15d | 2007-05-31 | 2007-06-20 | 518 | 102d |  | Developers; Adopters; BAH | 1656h |
| 758 | 3.7.1 | **Installation guide (task 3.10.2)** |  | 13d | 2007-06-04 | 2007-06-20 | 722FS-3d | 102d |  | Developers; BAH | 312h |
| 759 | 3.7.1.1 | Update installation guide |  | 3d | 2007-06-04 | 2007-06-06 |  | 102d | 0d | Developers | 24h |
| 760 | 3.7.1.2 | Deliver installation guide to BAH (task 3.10.2) | milestone | 0d | 2007-06-06 | 2007-06-06 | 759 | 102d | 0d | Patrick |  |
| 761 | 3.7.1.3 | BAH review of installation guide (task 3.10.2) |  | 10d | 2007-06-07 | 2007-06-20 | 760 | 102d |  | BAH | 80h |
| 762 | 3.7.2 | **Administration guide (task 3.13.2)** |  | 13d | 2007-06-04 | 2007-06-20 | 722FS-3d | 102d |  | Developers; BAH | 312h |
| 763 | 3.7.2.1 | Update administration guide |  | 3d | 2007-06-04 | 2007-06-06 |  | 102d | 0d | Developers | 24h |
| 764 | 3.7.2.2 | Deliver administration guide to BAH (task 3.13.2) | milestone | 0d | 2007-06-06 | 2007-06-06 | 763 | 102d | 0d | Patrick |  |
| 765 | 3.7.2.3 | BAH review of administration guide (task 3.13.2) |  | 10d | 2007-06-07 | 2007-06-20 | 764 | 102d |  | BAH | 80h |
| 766 | 3.7.3 | **Release notes (task 3.14.2)** |  | 13d | 2007-06-04 | 2007-06-20 | 722FS-3d | 102d |  | Developers; BAH | 312h |
| 767 | 3.7.3.1 | Update release notes |  | 3d | 2007-06-04 | 2007-06-06 |  | 102d | 0d | Developers | 24h |
| 768 | 3.7.3.2 | Deliver release notes to BAH (task 3.14.2) | milestone | 0d | 2007-06-06 | 2007-06-06 | 767 | 102d | 0d | Patrick |  |
| 769 | 3.7.3.3 | BAH review of release notes (task 3.14.2) |  | 10d | 2007-06-07 | 2007-06-20 | 768 | 102d |  | BAH | 80h |
| 770 | 3.7.4 | **Adopter summary of C3PR (task 5.1.2)** |  | 15d | 2007-05-31 | 2007-06-20 | 722FS-5d | 102d |  | Adopters; BAH | 360h |
| 771 | 3.7.4.1 | Adopter update summary |  | 3d | 2007-05-31 | 2007-06-04 |  | 102d | 0d | Adopters | 24h |
| 772 | 3.7.4.2 | Developer review summary |  | 1d | 2007-06-05 | 2007-06-05 | 771 | 102d | 0d | Adopters | 8h |
| 773 | 3.7.4.3 | Adopter update summary |  | 1d | 2007-06-06 | 2007-06-06 | 772 | 102d | 0d | Adopters | 8h |
| 774 | 3.7.4.4 | Developer deliver C3PR summary to BAH (task 5.1.2) | milestone | 0d | 2007-06-06 | 2007-06-06 | 773 | 102d | 0d | Patrick |  |
| 775 | 3.7.4.5 | BAH review of C3PR summary (task 5.1.2) |  | 10d | 2007-06-07 | 2007-06-20 | 774 | 102d |  | BAH | 80h |

| ID | WBS | Task | Type | Duration | Start | Finish | Predecessors | Total slack | Free slack | Constraint | Resources | Work |
| --- | --- | --- | --- | --- | --- | --- | --- | --- | --- | --- | --- | --- |
| 776 | 3.8 | **Demonstration** |  | 0d | 2007-06-11 | 2007-06-11 | 518 | 0d |  |  | Patrick; Ram; BAH |  |
| 777 | 3.8.1 | Demonstrate latest features to BAH | milestone | 0d | 2007-06-11 | 2007-06-11 |  | 0d |  | must start on 2007-06-11 | Patrick; Ram; BAH |  |
| 778 | 3.9 | **Touchpoints** |  | 22d | 2007-05-02 | 2007-05-31 | 518 | 116d |  |  | Adopters | 528h |
| 779 | 3.9.1 | Adopter review of deliverables |  | 22d | 2007-05-02 | 2007-05-31 |  | 116d |  |  | Adopters | 176h |
| 780 | 3.9.2 | Adopter deployment of previous iteration codebase |  | 22d | 2007-05-02 | 2007-05-31 |  | 116d |  |  | Adopters | 176h |
| 781 | 4 | **Iteration 4 (stratification, enrollment, randomization, reporting, legacy systems)** |  | 26d | 2007-06-01 | 2007-07-09 |  | 90d |  |  |  |  |
| 782 | 4.1 | Iteration start | milestone | 0d | 2007-06-01 | 2007-06-01 |  | 95d | 0d | start no earlier than 2007-06-01 |  |  |
| 783 | 4.2 | **Project management** |  | 21d | 2007-06-01 | 2007-06-29 | 782 | 95d |  |  |  |  |
| 784 | 4.2.1 | Update project plan |  | 21d | 2007-06-01 | 2007-06-29 |  | 95d |  |  |  |  |
| 785 | 4.2.2 | Update risk matrix |  | 21d | 2007-06-01 | 2007-06-29 |  | 95d |  |  |  |  |
| 786 | 4.2.3 | Monthly report |  | 21d | 2007-06-01 | 2007-06-29 |  | 95d |  |  |  |  |
| 787 | 4.3 | **Requirements and use cases** |  | 21d | 2007-06-01 | 2007-06-29 | 782 | 95d |  |  |  |  |
| 788 | 4.3.1 | Create level 1 use cases and requirements |  | 21d | 2007-06-01 | 2007-06-29 |  | 95d |  |  |  |  |
| 789 | 4.3.2 | Update use case document |  | 21d | 2007-06-01 | 2007-06-29 |  | 95d |  |  |  |  |
| 790 | 4.3.3 | Update requirements document |  | 21d | 2007-06-01 | 2007-06-29 |  | 95d |  |  |  |  |
| 791 | 4.4 | **Analysis and Design** |  | 21d | 2007-06-01 | 2007-06-29 | 782 | 95d |  |  |  |  |
| 792 | 4.4.1 | Perform level 1 design |  | 21d | 2007-06-01 | 2007-06-29 |  | 95d |  |  |  |  |
| 793 | 4.4.2 | Modeling |  | 21d | 2007-06-01 | 2007-06-29 |  | 95d |  |  |  |  |
| 794 | 4.4.3 | Systems design |  | 21d | 2007-06-01 | 2007-06-29 |  | 95d |  |  |  |  |
| 795 | 4.5 | **Implementation** |  | 21d | 2007-06-01 | 2007-06-29 | 782 | 95d |  |  |  |  |
| 796 | 4.5.1 | **Stratification** |  | 21d | 2007-06-01 | 2007-06-29 |  | 95d |  |  |  |  |
| 797 | 4.5.1.1 | Finalize stratification implementation |  | 21d | 2007-06-01 | 2007-06-29 |  | 95d |  |  |  |  |
| 798 | 4.5.2 | **Enrollment** |  | 21d | 2007-06-01 | 2007-06-29 |  | 95d |  |  |  |  |
| 799 | 4.5.2.1 | **Enrollment details** |  | 21d | 2007-06-01 | 2007-06-29 |  | 95d |  |  |  |  |
| 800 | 4.5.2.1.1 | Finalize enrollment details |  | 21d | 2007-06-01 | 2007-06-29 |  | 95d |  |  |  |  |

| ID | WBS | Task | Duration | Start | Finish | Predecessors | Total slack |
| --- | --- | --- | --- | --- | --- | --- | --- |
| 801 | 4.5.2.2 | **Enrollment business rules** | 21d | 2007-06-01 | 2007-06-29 |  | 95d |
| 802 | 4.5.2.2.1 | Finalize enrollment business rules | 21d | 2007-06-01 | 2007-06-29 |  | 95d |
| 803 | 4.5.3 | **Randomization** | 21d | 2007-06-01 | 2007-06-29 |  | 95d |
| 804 | 4.5.3.1 | Begin interfacing with Randomization Hub | 21d | 2007-06-01 | 2007-06-29 |  | 95d |
| 805 | 4.5.3.2 | Randomization book | 21d | 2007-06-01 | 2007-06-29 |  | 95d |
| 806 | 4.5.4 | **Reporting** | 21d | 2007-06-01 | 2007-06-29 |  | 95d |
| 807 | 4.5.4.1 | Reporting interface | 21d | 2007-06-01 | 2007-06-29 |  | 95d |
| 808 | 4.5.5 | **Legacy systems** | 21d | 2007-06-01 | 2007-06-29 |  | 95d |
| 809 | 4.5.5.1 | Investigate legacy systems at Adopter sites | 21d | 2007-06-01 | 2007-06-29 |  | 95d |
| 810 | 4.5.5.2 | Investigate support of legacy systems (APIs, files, etc.) | 21d | 2007-06-01 | 2007-06-29 |  | 95d |
| 811 | 4.6 | **Testing** | 21d | 2007-06-01 | 2007-06-29 | 782 | 95d |
| 812 | 4.6.1 | Developer testing | 21d | 2007-06-01 | 2007-06-29 |  | 95d |
| 813 | 4.6.2 | Adopter testing | 21d | 2007-06-01 | 2007-06-29 |  | 95d |
| 814 | 4.7 | **Documentation** | 21d | 2007-06-01 | 2007-06-29 | 782 | 95d |
| 815 | 4.7.1 | Installation guide | 21d | 2007-06-01 | 2007-06-29 |  | 95d |
| 816 | 4.7.2 | Administration guide | 21d | 2007-06-01 | 2007-06-29 |  | 95d |
| 817 | 4.7.3 | Release notes | 21d | 2007-06-01 | 2007-06-29 |  | 95d |
| 818 | 4.7.4 | Adopter summary of C3PR | 21d | 2007-06-01 | 2007-06-29 |  | 95d |
| 819 | 4.8 | **Support** | 21d | 2007-06-01 | 2007-06-29 | 782 | 95d |
| 820 | 4.8.1 | Adopter support | 21d | 2007-06-01 | 2007-06-29 |  | 95d |
| 821 | 4.8.2 | Bug fixing | 21d | 2007-06-01 | 2007-06-29 |  | 95d |
| 822 | 4.9 | **Touchpoints** | 21d | 2007-06-01 | 2007-06-29 | 782 | 95d |
| 823 | 4.9.1 | Adopter review of deliverables | 21d | 2007-06-01 | 2007-06-29 |  | 95d |
| 824 | 4.9.2 | Adopter deployment of previous iteration codebase | 21d | 2007-06-01 | 2007-06-29 |  | 95d |
| 825 | 4.9.3 | Complete mentor review of deliverables | 21d | 2007-06-01 | 2007-06-29 |  | 95d |

| ID | WBS | Task | Type | Duration | Start | Finish | Predecessors | Total slack | Free slack | Constraint | Resources |
| --- | --- | --- | --- | --- | --- | --- | --- | --- | --- | --- | --- |
| 826 | 4.10 | **Deliverables** |  | 21d | 2007-06-01 | 2007-06-29 | 782 | 95d |  |  |  |
| 827 | 4.10.1 | Risk matrix 1.4.x |  | 21d | 2007-06-01 | 2007-06-29 |  | 95d |  |  |  |
| 828 | 4.10.2 | Monthly report and risk matrix 1.3.x |  | 21d | 2007-06-01 | 2007-06-29 |  | 95d |  |  |  |
| 829 | 4.10.3 | Use case document (3.1.x) |  | 21d | 2007-06-01 | 2007-06-29 |  | 95d |  |  |  |
| 830 | 4.10.4 | Requirements document (3.2.x) |  | 21d | 2007-06-01 | 2007-06-29 |  | 95d |  |  |  |
| 831 | 4.10.5 | UML (3.3.x) |  | 21d | 2007-06-01 | 2007-06-29 |  | 95d |  |  |  |
| 832 | 4.10.6 | Design document (3.4.x) |  | 21d | 2007-06-01 | 2007-06-29 |  | 95d |  |  |  |
| 833 | 4.10.7 | Codebase (3.5.x) |  | 21d | 2007-06-01 | 2007-06-29 |  | 95d |  |  |  |
| 834 | 4.10.8 | Test plan (3.6.x, 5.4.x) |  | 21d | 2007-06-01 | 2007-06-29 |  | 95d |  |  |  |
| 835 | 4.10.9 | Test report (3.8.x) |  | 21d | 2007-06-01 | 2007-06-29 |  | 95d |  |  |  |
| 836 | 4.10.10 | Adopter test plan (5.5.x) |  | 21d | 2007-06-01 | 2007-06-29 |  | 95d |  |  |  |
| 837 | 4.10.11 | Adopter test report (5.6.x) |  | 21d | 2007-06-01 | 2007-06-29 |  | 95d |  |  |  |
| 838 | 4.10.12 | Installation guide (3.10.x) |  | 21d | 2007-06-01 | 2007-06-29 |  | 95d |  |  |  |
| 839 | 4.10.13 | Administration guide (3.13.x) |  | 21d | 2007-06-01 | 2007-06-29 |  | 95d |  |  |  |
| 840 | 4.10.14 | Release notes (3.14.x) |  | 21d | 2007-06-01 | 2007-06-29 |  | 95d |  |  |  |
| 841 | 4.10.15 | Adopter summary of C3PR (5.1.x) |  | 21d | 2007-06-01 | 2007-06-29 |  | 95d |  |  |  |
| 842 | 4.11 | **Demonstration** |  | 0d | 2007-07-09 | 2007-07-09 | 782 | 90d |  |  | Patrick; Ram; BAH |
| 843 | 4.11.1 | Demonstrate latest features to BAH | milestone | 0d | 2007-07-09 | 2007-07-09 | 782 | 90d |  | start no earlier than 2007-07-09 | Patrick; Ram; BAH |
| 844 | 4.11.2 | Demonstrate to the larger community | milestone | 0d | 2007-07-09 | 2007-07-09 | 782 | 90d |  | start no earlier than 2007-07-09 | Patrick; Ram; BAH |
| 845 | 5 | **Iteration 5 (randomization, reporting, legacy systems, semantic integration, BRIDG)** |  | 30d | 2007-07-02 | 2007-08-13 |  | 65d |  |  |  |
| 846 | 5.1 | Iteration start | milestone | 0d | 2007-07-02 | 2007-07-02 |  | 73d | 0d | start no earlier than 2007-07-02 |  |
| 847 | 5.2 | **Project management** |  | 22d | 2007-07-02 | 2007-07-31 | 846 | 73d |  |  |  |
| 848 | 5.2.1 | Update project plan |  | 22d | 2007-07-02 | 2007-07-31 |  | 73d |  |  |  |
| 849 | 5.2.2 | Update risk matrix |  | 22d | 2007-07-02 | 2007-07-31 |  | 73d |  |  |  |
| 850 | 5.2.3 | Monthly report |  | 22d | 2007-07-02 | 2007-07-31 |  | 73d |  |  |  |

| ID | WBS | Task | Duration | Start | Finish | Predecessors | Total slack |
| --- | --- | --- | --- | --- | --- | --- | --- |
| 851 | 5.3 | **Requirements and use cases** | 22d | 2007-07-02 | 2007-07-31 | 846 | 73d |
| 852 | 5.3.1 | Create level 1 use cases and requirements | 22d | 2007-07-02 | 2007-07-31 |  | 73d |
| 853 | 5.3.2 | Update use case document | 22d | 2007-07-02 | 2007-07-31 |  | 73d |
| 854 | 5.3.3 | Update requirements document | 22d | 2007-07-02 | 2007-07-31 |  | 73d |
| 855 | 5.4 | **Analysis and Design** | 22d | 2007-07-02 | 2007-07-31 | 846 | 73d |
| 856 | 5.4.1 | Perform level 1 design | 22d | 2007-07-02 | 2007-07-31 |  | 73d |
| 857 | 5.4.2 | Modeling | 22d | 2007-07-02 | 2007-07-31 |  | 73d |
| 858 | 5.4.3 | Systems design | 22d | 2007-07-02 | 2007-07-31 |  | 73d |
| 859 | 5.5 | **Implementation** | 22d | 2007-07-02 | 2007-07-31 |  | 73d |
| 860 | 5.5.1 | **Randomization** | 22d | 2007-07-02 | 2007-07-31 | 846 | 73d |
| 861 | 5.5.1.1 | Randomization email | 22d | 2007-07-02 | 2007-07-31 |  | 73d |
| 862 | 5.5.2 | **Reporting** | 22d | 2007-07-02 | 2007-07-31 | 846 | 73d |
| 863 | 5.5.2.1 | Storing reports | 22d | 2007-07-02 | 2007-07-31 |  | 73d |
| 864 | 5.5.3 | **Legacy systems** | 22d | 2007-07-02 | 2007-07-31 | 846 | 73d |
| 865 | 5.5.3.1 | Implement legacy support for adopters | 22d | 2007-07-02 | 2007-07-31 |  | 73d |
| 866 | 5.5.3.2 | Implement generic support for legacy systems | 22d | 2007-07-02 | 2007-07-31 |  | 73d |
| 867 | 5.6 | **Testing** | 22d | 2007-07-02 | 2007-07-31 | 846 | 73d |
| 868 | 5.6.1 | Developer testing | 22d | 2007-07-02 | 2007-07-31 |  | 73d |
| 869 | 5.6.2 | Adopter testing | 22d | 2007-07-02 | 2007-07-31 |  | 73d |
| 870 | 5.7 | **Documentation** | 22d | 2007-07-02 | 2007-07-31 | 846 | 73d |
| 871 | 5.7.1 | Installation guide | 22d | 2007-07-02 | 2007-07-31 |  | 73d |
| 872 | 5.7.2 | Administration guide | 22d | 2007-07-02 | 2007-07-31 |  | 73d |
| 873 | 5.7.3 | Release notes | 22d | 2007-07-02 | 2007-07-31 |  | 73d |
| 874 | 5.7.4 | Adopter summary of C3PR | 22d | 2007-07-02 | 2007-07-31 |  | 73d |

| ID | WBS | Task | Duration | Start | Finish | Predecessors | Total slack |
| --- | --- | --- | --- | --- | --- | --- | --- |
| 875 | 5.8 | **Support** | 22d | 2007-07-02 | 2007-07-31 | 846 | 73d |
| 876 | 5.8.1 | Adopter support | 22d | 2007-07-02 | 2007-07-31 |  | 73d |
| 877 | 5.8.2 | Bug fixing | 22d | 2007-07-02 | 2007-07-31 |  | 73d |
| 878 | 5.9 | **Touchpoints** | 22d | 2007-07-02 | 2007-07-31 | 846 | 73d |
| 879 | 5.9.1 | Adopter review of deliverables | 22d | 2007-07-02 | 2007-07-31 |  | 73d |
| 880 | 5.9.2 | Adopter deployment of previous iteration codebase | 22d | 2007-07-02 | 2007-07-31 |  | 73d |
| 881 | 5.9.3 | Begin semantic integration with the caDSR and EVS | 22d | 2007-07-02 | 2007-07-31 |  | 73d |
| 882 | 5.9.4 | Begin BRIDG review | 22d | 2007-07-02 | 2007-07-31 | 846 | 73d |
| 883 | 5.10 | **Deliverables** | 22d | 2007-07-02 | 2007-07-31 | 846 | 73d |
| 884 | 5.10.1 | Risk matrix 1.4.x | 22d | 2007-07-02 | 2007-07-31 |  | 73d |
| 885 | 5.10.2 | Monthly report and risk matrix 1.3.x | 22d | 2007-07-02 | 2007-07-31 |  | 73d |
| 886 | 5.10.3 | Use case document (3.1.x) | 22d | 2007-07-02 | 2007-07-31 |  | 73d |
| 887 | 5.10.4 | Requirements document (3.2.x) | 22d | 2007-07-02 | 2007-07-31 |  | 73d |
| 888 | 5.10.5 | UML (3.3.x) | 22d | 2007-07-02 | 2007-07-31 |  | 73d |
| 889 | 5.10.6 | Design document (3.4.x) | 22d | 2007-07-02 | 2007-07-31 |  | 73d |
| 890 | 5.10.7 | Codebase (3.5.x) | 22d | 2007-07-02 | 2007-07-31 |  | 73d |
| 891 | 5.10.8 | Test plan (3.6.x, 5.4.x) | 22d | 2007-07-02 | 2007-07-31 |  | 73d |
| 892 | 5.10.9 | Test report (3.8.x) | 22d | 2007-07-02 | 2007-07-31 |  | 73d |
| 893 | 5.10.10 | Adopter test plan (5.5.x) | 22d | 2007-07-02 | 2007-07-31 |  | 73d |
| 894 | 5.10.11 | Adopter test report (5.6.x) | 22d | 2007-07-02 | 2007-07-31 |  | 73d |
| 895 | 5.10.12 | Installation guide (3.10.x) | 22d | 2007-07-02 | 2007-07-31 |  | 73d |
| 896 | 5.10.13 | Administration guide (3.13.x) | 22d | 2007-07-02 | 2007-07-31 |  | 73d |
| 897 | 5.10.14 | Release notes (3.14.x) | 22d | 2007-07-02 | 2007-07-31 |  | 73d |
| 898 | 5.10.15 | Adopter summary of C3PR (5.1.x) | 22d | 2007-07-02 | 2007-07-31 |  | 73d |

| ID | WBS | Task | Type | Duration | Start | Finish | Predecessors | Total slack | Free slack | Constraint | Resources |
| --- | --- | --- | --- | --- | --- | --- | --- | --- | --- | --- | --- |
| 899 | 5.11 | **Demonstration** |  | 0d | 2007-08-13 | 2007-08-13 | 846 | 65d |  |  | Patrick; Ram; BAH |
| 900 | 5.11.1 | Demonstrate latest features to BAH | milestone | 0d | 2007-08-13 | 2007-08-13 | 846 | 65d |  | start no earlier than 2007-08-13 | Patrick; Ram; BAH |
| 901 | 6 | **Iteration 6 (randomization, reporting, legacy systems, semantic integration, BRIDG)** |  | 28d | 2007-08-01 | 2007-09-10 |  | 45d |  |  |  |
| 902 | 6.1 | Iteration start | milestone | 0d | 2007-08-01 | 2007-08-01 |  | 50d | 0d | start no earlier than 2007-08-01 |  |
| 903 | 6.2 | **Project management** |  | 23d | 2007-08-01 | 2007-08-31 | 902 | 50d |  |  |  |
| 904 | 6.2.1 | Update project plan |  | 23d | 2007-08-01 | 2007-08-31 |  | 50d |  |  |  |
| 905 | 6.2.2 | Update risk matrix |  | 23d | 2007-08-01 | 2007-08-31 |  | 50d |  |  |  |
| 906 | 6.2.3 | Monthly report |  | 23d | 2007-08-01 | 2007-08-31 |  | 50d |  |  |  |
| 907 | 6.3 | **Requirements and use cases** |  | 23d | 2007-08-01 | 2007-08-31 | 902 | 50d |  |  |  |
| 908 | 6.3.1 | Create level 1 use cases and requirements |  | 23d | 2007-08-01 | 2007-08-31 |  | 50d |  |  |  |
| 909 | 6.3.2 | Update use case document |  | 23d | 2007-08-01 | 2007-08-31 |  | 50d |  |  |  |
| 910 | 6.3.3 | Update requirements document |  | 23d | 2007-08-01 | 2007-08-31 |  | 50d |  |  |  |
| 911 | 6.4 | **Analysis and Design** |  | 23d | 2007-08-01 | 2007-08-31 | 902 | 50d |  |  |  |
| 912 | 6.4.1 | Perform level 1 design |  | 23d | 2007-08-01 | 2007-08-31 |  | 50d |  |  |  |
| 913 | 6.4.2 | Modeling |  | 23d | 2007-08-01 | 2007-08-31 |  | 50d |  |  |  |
| 914 | 6.4.3 | Systems design |  | 23d | 2007-08-01 | 2007-08-31 |  | 50d |  |  |  |
| 915 | 6.5 | **Implementation** |  | 23d | 2007-08-01 | 2007-08-31 | 902 | 50d |  |  |  |
| 916 | 6.5.1 | **Randomization** |  | 23d | 2007-08-01 | 2007-08-31 |  | 50d |  |  |  |
| 917 | 6.5.1.1 | Randomization call-out |  | 23d | 2007-08-01 | 2007-08-31 |  | 50d |  |  |  |
| 918 | 6.5.2 | **Reporting** |  | 23d | 2007-08-01 | 2007-08-31 |  | 50d |  |  |  |
| 919 | 6.5.2.1 | Finalize reporting |  | 23d | 2007-08-01 | 2007-08-31 |  | 50d |  |  |  |
| 920 | 6.5.3 | **Legacy systems** |  | 23d | 2007-08-01 | 2007-08-31 |  | 50d |  |  |  |
| 921 | 6.5.3.1 | Finalize legacy systems |  | 23d | 2007-08-01 | 2007-08-31 |  | 50d |  |  |  |
| 922 | 6.6 | **Testing** |  | 23d | 2007-08-01 | 2007-08-31 | 902 | 50d |  |  |  |
| 923 | 6.6.1 | Developer testing |  | 23d | 2007-08-01 | 2007-08-31 |  | 50d |  |  |  |
| 924 | 6.6.2 | Adopter testing |  | 23d | 2007-08-01 | 2007-08-31 |  | 50d |  |  |  |

| ID | WBS | Task | Duration | Start | Finish | Predecessors | Total slack |
| --- | --- | --- | --- | --- | --- | --- | --- |
| 925 | 6.7 | **Documentation** | 23d | 2007-08-01 | 2007-08-31 | 902 | 50d |
| 926 | 6.7.1 | Installation guide | 23d | 2007-08-01 | 2007-08-31 |  | 50d |
| 927 | 6.7.2 | Administration guide | 23d | 2007-08-01 | 2007-08-31 |  | 50d |
| 928 | 6.7.3 | Release notes | 23d | 2007-08-01 | 2007-08-31 |  | 50d |
| 929 | 6.7.4 | Adopter summary of C3PR | 23d | 2007-08-01 | 2007-08-31 |  | 50d |
| 930 | 6.8 | **Support** | 23d | 2007-08-01 | 2007-08-31 | 902 | 50d |
| 931 | 6.8.1 | Adopter support | 23d | 2007-08-01 | 2007-08-31 |  | 50d |
| 932 | 6.8.2 | Bug fixing | 23d | 2007-08-01 | 2007-08-31 |  | 50d |
| 933 | 6.9 | **Touchpoints** | 23d | 2007-08-01 | 2007-08-31 | 902 | 50d |
| 934 | 6.9.1 | Adopter review of deliverables | 23d | 2007-08-01 | 2007-08-31 |  | 50d |
| 935 | 6.9.2 | Adopter deployment of previous iteration codebase | 23d | 2007-08-01 | 2007-08-31 |  | 50d |
| 936 | 6.9.3 | Complete semantic integration with the caDSR and EVS | 23d | 2007-08-01 | 2007-08-31 |  | 50d |
| 937 | 6.9.4 | Complete BRIDG review | 23d | 2007-08-01 | 2007-08-31 |  | 50d |
| 938 | 6.10 | **Deliverables** | 23d | 2007-08-01 | 2007-08-31 | 902 | 50d |
| 939 | 6.10.1 | Risk matrix 1.4.x | 23d | 2007-08-01 | 2007-08-31 |  | 50d |
| 940 | 6.10.2 | Monthly report and risk matrix 1.3.x | 23d | 2007-08-01 | 2007-08-31 |  | 50d |
| 941 | 6.10.3 | Use case document (3.1.x) | 23d | 2007-08-01 | 2007-08-31 |  | 50d |
| 942 | 6.10.4 | Requirements document (3.2.x) | 23d | 2007-08-01 | 2007-08-31 |  | 50d |
| 943 | 6.10.5 | UML (3.3.x) | 23d | 2007-08-01 | 2007-08-31 |  | 50d |
| 944 | 6.10.6 | Design document (3.4.x) | 23d | 2007-08-01 | 2007-08-31 |  | 50d |
| 945 | 6.10.7 | Codebase (3.5.x) | 23d | 2007-08-01 | 2007-08-31 |  | 50d |
| 946 | 6.10.8 | Test plan (3.6.x, 5.4.x) | 23d | 2007-08-01 | 2007-08-31 |  | 50d |
| 947 | 6.10.9 | Test report (3.8.x) | 23d | 2007-08-01 | 2007-08-31 |  | 50d |
| 948 | 6.10.10 | Adopter test plan (5.5.x) | 23d | 2007-08-01 | 2007-08-31 |  | 50d |
| 949 | 6.10.11 | Adopter test report (5.6.x) | 23d | 2007-08-01 | 2007-08-31 |  | 50d |
| 950 | 6.10.12 | Installation guide (3.10.x) | 23d | 2007-08-01 | 2007-08-31 |  | 50d |
| 951 | 6.10.13 | Administration guide (3.13.x) | 23d | 2007-08-01 | 2007-08-31 |  | 50d |
| 952 | 6.10.14 | Release notes (3.14.x) | 23d | 2007-08-01 | 2007-08-31 |  | 50d |
| 953 | 6.10.15 | Adopter summary of C3PR (5.1.x) | 23d | 2007-08-01 | 2007-08-31 |  | 50d |

| ID | WBS | Task | Type | Duration | Start | Finish | Predecessors | Total slack | Free slack | Constraint | Resources |
| --- | --- | --- | --- | --- | --- | --- | --- | --- | --- | --- | --- |
| 954 | 6.11 | **Demonstration** |  | 0d | 2007-09-10 | 2007-09-10 | 902 | 45d |  |  | Patrick; Ram; BAH |
| 955 | 6.11.1 | Demonstrate latest features to BAH | milestone | 0d | 2007-09-10 | 2007-09-10 | 902 | 45d | 0d | start no earlier than 2007-09-10 | Patrick; Ram; BAH |
| 956 | 6.11.2 | Demonstrate to the larger community | milestone | 0d | 2007-09-10 | 2007-09-10 | 955 | 45d |  |  | Patrick; Ram; BAH |
| 957 | 7 | **Iteration 7 (installer, silver review)** |  | 25d | 2007-09-03 | 2007-10-08 |  | 25d |  |  |  |
| 958 | 7.1 | Iteration start | milestone | 0d | 2007-09-03 | 2007-09-03 |  | 30d | 0d | start no earlier than 2007-09-03 |  |
| 959 | 7.2 | **Project management** |  | 20d | 2007-09-03 | 2007-09-28 | 958 | 30d |  |  |  |
| 960 | 7.2.1 | Update project plan |  | 20d | 2007-09-03 | 2007-09-28 |  | 30d |  |  |  |
| 961 | 7.2.2 | Update risk matrix |  | 20d | 2007-09-03 | 2007-09-28 |  | 30d |  |  |  |
| 962 | 7.2.3 | Monthly report |  | 20d | 2007-09-03 | 2007-09-28 |  | 30d |  |  |  |
| 963 | 7.3 | **Requirements and use cases** |  | 10d | 2007-09-03 | 2007-09-14 | 958 | 40d |  |  |  |
| 964 | 7.3.1 | Create level 1 use cases and requirements |  | 10d | 2007-09-03 | 2007-09-14 |  | 40d |  |  |  |
| 965 | 7.3.2 | Update use case document |  | 10d | 2007-09-03 | 2007-09-14 |  | 40d |  |  |  |
| 966 | 7.3.3 | Update requirements document |  | 10d | 2007-09-03 | 2007-09-14 |  | 40d |  |  |  |
| 967 | 7.4 | **Analysis and Design** |  | 10d | 2007-09-03 | 2007-09-14 | 958 | 40d |  |  |  |
| 968 | 7.4.1 | Perform level 1 design |  | 10d | 2007-09-03 | 2007-09-14 |  | 40d |  |  |  |
| 969 | 7.4.2 | Modeling |  | 10d | 2007-09-03 | 2007-09-14 |  | 40d |  |  |  |
| 970 | 7.4.3 | Systems design |  | 10d | 2007-09-03 | 2007-09-14 |  | 40d |  |  |  |
| 971 | 7.5 | Implementation |  | 10d | 2007-09-03 | 2007-09-14 | 958 | 40d |  |  |  |
| 972 | 7.6 | **Testing** |  | 20d | 2007-09-03 | 2007-09-28 | 958 | 30d |  |  |  |
| 973 | 7.6.1 | Developer testing |  | 20d | 2007-09-03 | 2007-09-28 |  | 30d |  |  |  |
| 974 | 7.6.2 | Adopter testing |  | 20d | 2007-09-03 | 2007-09-28 |  | 30d |  |  |  |
| 975 | 7.7 | **Documentation** |  | 20d | 2007-09-03 | 2007-09-28 | 958 | 30d |  |  |  |
| 976 | 7.7.1 | Installation guide |  | 20d | 2007-09-03 | 2007-09-28 |  | 30d |  |  |  |
| 977 | 7.7.2 | Administration guide |  | 20d | 2007-09-03 | 2007-09-28 |  | 30d |  |  |  |
| 978 | 7.7.3 | Release notes |  | 20d | 2007-09-03 | 2007-09-28 |  | 30d |  |  |  |
| 979 | 7.7.4 | Adopter summary of C3PR |  | 20d | 2007-09-03 | 2007-09-28 |  | 30d |  |  |  |

| ID | WBS | Task | Type | Duration | Start | Finish | Predecessors | Total slack | Constraint | Resources |
| --- | --- | --- | --- | --- | --- | --- | --- | --- | --- | --- |
| 980 | 7.8 | **Support** |  | 20d | 2007-09-03 | 2007-09-28 | 958 | 30d |  |  |
| 981 | 7.8.1 | Adopter support |  | 20d | 2007-09-03 | 2007-09-28 |  | 30d |  |  |
| 982 | 7.8.2 | Bug fixing |  | 20d | 2007-09-03 | 2007-09-28 |  | 30d |  |  |
| 983 | 7.9 | **Touchpoints** |  | 20d | 2007-09-03 | 2007-09-28 | 958 | 30d |  |  |
| 984 | 7.9.1 | Adopter review of deliverables |  | 20d | 2007-09-03 | 2007-09-28 |  | 30d |  |  |
| 985 | 7.9.2 | Adopter deployment of previous iteration codebase |  | 20d | 2007-09-03 | 2007-09-28 |  | 30d |  |  |
| 986 | 7.9.3 | Begin silver review |  | 20d | 2007-09-03 | 2007-09-28 |  | 30d |  |  |
| 987 | 7.10 | **Deliverables** |  | 20d | 2007-09-03 | 2007-09-28 | 958 | 30d |  |  |
| 988 | 7.10.1 | Risk matrix 1.4.x |  | 20d | 2007-09-03 | 2007-09-28 |  | 30d |  |  |
| 989 | 7.10.2 | Monthly report and risk matrix 1.3.x |  | 20d | 2007-09-03 | 2007-09-28 |  | 30d |  |  |
| 990 | 7.10.3 | Use case document (3.1.x) |  | 20d | 2007-09-03 | 2007-09-28 |  | 30d |  |  |
| 991 | 7.10.4 | Requirements document (3.2.x) |  | 20d | 2007-09-03 | 2007-09-28 |  | 30d |  |  |
| 992 | 7.10.5 | UML (3.3.x) |  | 20d | 2007-09-03 | 2007-09-28 |  | 30d |  |  |
| 993 | 7.10.6 | Design document (3.4.x) |  | 20d | 2007-09-03 | 2007-09-28 |  | 30d |  |  |
| 994 | 7.10.7 | Codebase (3.5.x) |  | 20d | 2007-09-03 | 2007-09-28 |  | 30d |  |  |
| 995 | 7.10.8 | Test plan (3.6.x, 5.4.x) |  | 20d | 2007-09-03 | 2007-09-28 |  | 30d |  |  |
| 996 | 7.10.9 | Test report (3.8.x) |  | 20d | 2007-09-03 | 2007-09-28 |  | 30d |  |  |
| 997 | 7.10.10 | Adopter test plan (5.5.x) |  | 20d | 2007-09-03 | 2007-09-28 |  | 30d |  |  |
| 998 | 7.10.11 | Adopter test report (5.6.x) |  | 20d | 2007-09-03 | 2007-09-28 |  | 30d |  |  |
| 999 | 7.10.12 | Installation guide (3.10.x) |  | 20d | 2007-09-03 | 2007-09-28 |  | 30d |  |  |
| 1000 | 7.10.13 | Administration guide (3.13.x) |  | 20d | 2007-09-03 | 2007-09-28 |  | 30d |  |  |
| 1001 | 7.10.14 | Release notes (3.14.x) |  | 20d | 2007-09-03 | 2007-09-28 |  | 30d |  |  |
| 1002 | 7.10.15 | Adopter summary of C3PR (5.1.x) |  | 20d | 2007-09-03 | 2007-09-28 |  | 30d |  |  |
| 1003 | 7.11 | **Demonstration** |  | 0d | 2007-10-08 | 2007-10-08 | 958 | 25d |  | Patrick; Ram; BAH |
| 1004 | 7.11.1 | Demonstrate latest features to BAH | milestone | 0d | 2007-10-08 | 2007-10-08 | 958 | 25d | start no earlier than 2007-10-08 | Patrick; Ram; BAH |

| ID | WBS | Task | Type | Duration | Start | Finish | Predecessors | Total slack | Free slack | Constraint |
| --- | --- | --- | --- | --- | --- | --- | --- | --- | --- | --- |
| 1005 | 8 | **Iteration 8 (silver review)** |  | 30d? | 2007-10-01 | 2007-11-12 |  | 0d |  |  |
| 1006 | 8.1 | Iteration start | milestone | 0d | 2007-10-01 | 2007-10-01 |  | 7d | 0d | start no earlier than 2007-10-01 |
| 1007 | 8.2 | **Project management** |  | 23d | 2007-10-01 | 2007-10-31 | 1006 | 7d |  |  |
| 1008 | 8.2.1 | Update project plan |  | 23d | 2007-10-01 | 2007-10-31 |  | 7d |  |  |
| 1009 | 8.2.2 | Update risk matrix |  | 23d | 2007-10-01 | 2007-10-31 |  | 7d |  |  |
| 1010 | 8.2.3 | Monthly report |  | 23d | 2007-10-01 | 2007-10-31 |  | 7d |  |  |
| 1011 | 8.3 | **Requirements and use cases** |  | 10d | 2007-10-01 | 2007-10-12 | 1006 | 20d |  |  |
| 1012 | 8.3.1 | Create level 1 use cases and requirements |  | 10d | 2007-10-01 | 2007-10-12 |  | 20d |  |  |
| 1013 | 8.3.2 | Update use case document |  | 10d | 2007-10-01 | 2007-10-12 |  | 20d |  |  |
| 1014 | 8.3.3 | Update requirements document |  | 10d | 2007-10-01 | 2007-10-12 |  | 20d |  |  |
| 1015 | 8.4 | **Analysis and Design** |  | 10d | 2007-10-01 | 2007-10-12 | 1006 | 20d |  |  |
| 1016 | 8.4.1 | Perform level 1 design |  | 10d | 2007-10-01 | 2007-10-12 |  | 20d |  |  |
| 1017 | 8.4.2 | Modeling |  | 10d | 2007-10-01 | 2007-10-12 |  | 20d |  |  |
| 1018 | 8.4.3 | Systems design |  | 10d | 2007-10-01 | 2007-10-12 |  | 20d |  |  |
| 1019 | 8.5 | Implementation |  | 10d | 2007-10-01 | 2007-10-12 | 1006 | 20d |  |  |
| 1020 | 8.6 | **Testing** |  | 23d | 2007-10-01 | 2007-10-31 | 1006 | 7d |  |  |
| 1021 | 8.6.1 | Developer testing |  | 23d | 2007-10-01 | 2007-10-31 |  | 7d |  |  |
| 1022 | 8.6.2 | Adopter testing |  | 23d | 2007-10-01 | 2007-10-31 |  | 7d |  |  |
| 1023 | 8.7 | **Documentation** |  | 23d | 2007-10-01 | 2007-10-31 | 1006 | 7d |  |  |
| 1024 | 8.7.1 | Installation guide |  | 23d | 2007-10-01 | 2007-10-31 |  | 7d |  |  |
| 1025 | 8.7.2 | Administration guide |  | 23d | 2007-10-01 | 2007-10-31 |  | 7d |  |  |
| 1026 | 8.7.3 | Release notes |  | 23d | 2007-10-01 | 2007-10-31 |  | 7d |  |  |
| 1027 | 8.7.4 | Adopter summary of C3PR |  | 23d | 2007-10-01 | 2007-10-31 |  | 7d |  |  |
| 1028 | 8.7.5 | Final Technical/Architecture Guide |  | 23d | 2007-10-01 | 2007-10-31 |  | 7d |  |  |

| ID | WBS | Task | Duration | Start | Finish | Predecessors | Total slack |
| --- | --- | --- | --- | --- | --- | --- | --- |
| 1029 | 8.8 | **Support** | 23d | 2007-10-01 | 2007-10-31 | 1006 | 7d |
| 1030 | 8.8.1 | Adopter support | 23d | 2007-10-01 | 2007-10-31 |  | 7d |
| 1031 | 8.8.2 | Bug fixing | 23d | 2007-10-01 | 2007-10-31 |  | 7d |
| 1032 | 8.9 | **Touchpoints** | 23d | 2007-10-01 | 2007-10-31 | 1006 | 7d |
| 1033 | 8.9.1 | Adopter review of deliverables | 23d | 2007-10-01 | 2007-10-31 |  | 7d |
| 1034 | 8.9.2 | Adopter deployment of previous iteration codebase | 23d | 2007-10-01 | 2007-10-31 |  | 7d |
| 1035 | 8.9.3 | Complete silver review | 23d | 2007-10-01 | 2007-10-31 |  | 7d |
| 1036 | 8.10 | **Deliverables** | 23d? | 2007-10-01 | 2007-10-31 | 1006 | 7d |
| 1037 | 8.10.1 | Risk matrix 1.4.x | 23d | 2007-10-01 | 2007-10-31 |  | 7d |
| 1038 | 8.10.2 | Monthly report and risk matrix 1.3.x | 23d | 2007-10-01 | 2007-10-31 |  | 7d |
| 1039 | 8.10.3 | Use case document (3.1.x) | 23d | 2007-10-01 | 2007-10-31 |  | 7d |
| 1040 | 8.10.4 | Requirements document (3.2.x) | 23d | 2007-10-01 | 2007-10-31 |  | 7d |
| 1041 | 8.10.5 | UML (3.3.x) | 23d | 2007-10-01 | 2007-10-31 |  | 7d |
| 1042 | 8.10.6 | Design document (3.4.x) | 23d | 2007-10-01 | 2007-10-31 |  | 7d |
| 1043 | 8.10.7 | Codebase (3.5.x) | 23d | 2007-10-01 | 2007-10-31 |  | 7d |
| 1044 | 8.10.8 | Test plan (3.6.x, 5.4.x) | 23d | 2007-10-01 | 2007-10-31 |  | 7d |
| 1045 | 8.10.9 | Test report (3.8.x) | 23d | 2007-10-01 | 2007-10-31 |  | 7d |
| 1046 | 8.10.10 | Adopter test plan (5.5.x) | 23d | 2007-10-01 | 2007-10-31 |  | 7d |
| 1047 | 8.10.11 | Adopter test report (5.6.x) | 23d | 2007-10-01 | 2007-10-31 |  | 7d |
| 1048 | 8.10.12 | Installation guide (3.10.x) | 23d | 2007-10-01 | 2007-10-31 |  | 7d |
| 1049 | 8.10.13 | Administration guide (3.13.x) | 23d | 2007-10-01 | 2007-10-31 |  | 7d |
| 1050 | 8.10.14 | Release notes (3.14.x) | 23d | 2007-10-01 | 2007-10-31 |  | 7d |
| 1051 | 8.10.15 | Adopter summary of C3PR (5.1.x) | 23d | 2007-10-01 | 2007-10-31 |  | 7d |
| 1052 | 8.10.16 | Transition Phase Plan | 23d | 2007-10-01 | 2007-10-31 |  | 7d |
| 1053 | 8.10.17 | Compatitbility Review Package (3.12) | 1d? | 2007-10-01 | 2007-10-01 |  | 29d |

| ID | WBS | Task | Type | Duration | Start | Finish | Predecessors | Total slack | Constraint | Resources |
| --- | --- | --- | --- | --- | --- | --- | --- | --- | --- | --- |
| 1054 | 8.11 | **Demonstration** |  | 0d | 2007-11-12 | 2007-11-12 | 1006 | 0d |  | Patrick; Ram; BAH |
| 1055 | 8.11.1 | Demonstrate latest features to BAH | milestone | 0d | 2007-11-12 | 2007-11-12 | 1006 | 0d | start no earlier than 2007-11-12 | Patrick; Ram; BAH |
| 1056 | 8.11.2 | Demonstrate to the larger community | milestone | 0d | 2007-11-12 | 2007-11-12 | 1006 | 0d | start no earlier than 2007-11-12 | Patrick; Ram; BAH |
