# caAERS-TransitionPhasePlan

Schedule from MS Project, 2008-01-01 to 2008-02-29.

## Calendars

- Standard: Mon-Fri 08:00-12:00, 13:00-17:00; Sat-Sun off.

## Resources

| Resource |
| --- |
| caAERS Developers |
| Mayo |
| WFU |
| Edmond |
| CTEP |
| DCP |
| NCI |
| NCICB |
| C3PR Developers |
| Duke |
| Duke Developers |

## Schedule

| ID | WBS | Task | Type | Duration | Start | Finish | Predecessors | Total slack | Free slack | Constraint | Resources | Work |
| --- | --- | --- | --- | --- | --- | --- | --- | --- | --- | --- | --- | --- |
| 1 | 1 | **C3PR - Transition Phase** |  | 41d | 2008-01-01 | 2008-02-26 |  | 0d |  |  |  | 1152h |
| 2 | 1.1 | Start Transition Phase | milestone | 0d | 2008-01-01 | 2008-01-01 |  | 0d |  | start no earlier than 2008-01-01 |  |  |
| 3 | 1.2 | **Planning** |  | 11d | 2008-01-01 | 2008-01-15 |  | 23d |  |  |  | 232h |
| 4 | 1.2.1 | **Deployment Plan** |  | 5d | 2008-01-01 | 2008-01-07 |  | 23d |  |  |  | 56h |
| 5 | 1.2.1.1 | **Prepare Deployment Plan** |  | 1d | 2008-01-01 | 2008-01-01 | 2 | 23d |  |  | C3PR Developers | 8h |
| 6 | 1.2.1.1.1 | Determine set of Testers and Groups for UAT |  | 1d | 2008-01-01 | 2008-01-01 |  | 23d | 0d |  |  |  |
| 7 | 1.2.1.1.2 | Determine when to open UAT to Users outside of C3PR-Adopters |  | 1d | 2008-01-01 | 2008-01-01 |  | 43d |  |  |  |  |
| 8 | 1.2.1.2 | Review Plan |  | 2d | 2008-01-02 | 2008-01-03 | 6, 5 | 23d | 0d |  | WFU; Duke | 32h |
| 9 | 1.2.1.3 | Update Plan |  | 2d | 2008-01-04 | 2008-01-07 | 8 | 23d | 0d |  | C3PR Developers | 16h |
| 10 | 1.2.1.4 | Finalize and Submit Plan (Task 4.1) | milestone | 0d | 2008-01-07 | 2008-01-07 | 9 | 23d |  |  | C3PR Developers |  |
| 11 | 1.2.2 | **Pilot/Parallel Testing Phase Plan** |  | 11d | 2008-01-01 | 2008-01-15 |  | 33d |  |  |  | 176h |
| 12 | 1.2.2.1 | Select studies for parallel test |  | 5d | 2008-01-01 | 2008-01-07 | 2 | 33d | 0d |  | WFU; Duke | 80h |
| 13 | 1.2.2.2 | Set timeframe and logistics for parallel test |  | 5d | 2008-01-08 | 2008-01-14 | 12 | 33d | 0d |  | WFU; Duke | 80h |
| 14 | 1.2.2.3 | Set start date for pilot/parallel testing |  | 1d | 2008-01-15 | 2008-01-15 | 13 | 33d | 0d |  | WFU; Duke | 16h |
| 15 | 1.2.2.4 | Finalize Plans for Pilot/Parallel Testing Phase | milestone | 0d | 2008-01-15 | 2008-01-15 | 12, 13, 14 | 33d |  |  |  |  |
| 16 | 1.3 | **Training** |  | 2d | 2008-01-01 | 2008-01-02 |  | 37d |  |  |  | 32h |
| 17 | 1.3.1 | Prepare for Training Session |  | 1d | 2008-01-01 | 2008-01-01 | 2 | 37d | 0d |  |  |  |
| 18 | 1.3.2 | Training Session on C3PR for UAT |  | 1d | 2008-01-02 | 2008-01-02 | 17 | 37d | 0d |  | WFU; NCI; C3PR Developers; Duke | 32h |
| 19 | 1.4 | **User Acceptance Testing (UAT)** |  | 28d | 2008-01-01 | 2008-02-07 |  | 0d |  |  |  | 576h |
| 20 | 1.4.1 | Deploy Iteration 7 Build (Release Candidate 1) |  | 1d | 2008-01-01 | 2008-01-01 | 2 | 0d |  |  | WFU; C3PR Developers; Duke | 24h |
| 21 | 1.4.2 | **UAT - Round 1** |  | 5d | 2008-01-03 | 2008-01-09 |  | 0d |  |  |  | 120h |
| 22 | 1.4.2.1 | Adopter Testing |  | 5d | 2008-01-03 | 2008-01-09 | 20, 18 | 37d |  |  | WFU; Duke | 80h |
| 23 | 1.4.2.2 | Developer Fixes |  | 5d | 2008-01-03 | 2008-01-09 | 20FS+1d | 0d |  |  | C3PR Developers | 40h |
| 24 | 1.4.3 | **UAT - Round 2** |  | 7d | 2008-01-10 | 2008-01-18 | 23 | 0d |  |  |  | 144h |
| 25 | 1.4.3.1 | Deploy Build with Updates (RC2) |  | 1d | 2008-01-10 | 2008-01-10 | 23 | 0d |  |  | WFU; C3PR Developers; Duke | 24h |
| 26 | 1.4.3.2 | Adopter Testing |  | 5d | 2008-01-11 | 2008-01-17 | 25 | 31d |  |  | WFU; Duke | 80h |
| 27 | 1.4.3.3 | Developer Fixes and Guide Updates |  | 5d | 2008-01-14 | 2008-01-18 | 25FS+1d | 0d |  |  | C3PR Developers | 40h |

| ID | WBS | Task | Type | Duration | Start | Finish | Predecessors | Total slack | Resources | Work |
| --- | --- | --- | --- | --- | --- | --- | --- | --- | --- | --- |
| 28 | 1.4.4 | **UAT - Round 3 (prob first time we'd open to some add'l users)** |  | 7d | 2008-01-21 | 2008-01-29 |  | 0d |  | 144h |
| 29 | 1.4.4.1 | Deploy Build with Updates (RC3) |  | 1d | 2008-01-21 | 2008-01-21 | 27 | 0d | WFU; C3PR Developers; Duke | 24h |
| 30 | 1.4.4.2 | Adopter Testing |  | 5d | 2008-01-22 | 2008-01-28 | 29 | 24d | WFU; Duke | 80h |
| 31 | 1.4.4.3 | Developer Fixes and Guide Updates |  | 5d | 2008-01-23 | 2008-01-29 | 29FS+1d | 0d | caAERS Developers | 40h |
| 32 | 1.4.5 | **UAT - Round 4** |  | 7d | 2008-01-30 | 2008-02-07 |  | 0d |  | 144h |
| 33 | 1.4.5.1 | Deploy Build with Updates (RC4) |  | 1d | 2008-01-30 | 2008-01-30 | 31 | 0d | WFU; C3PR Developers; Duke | 24h |
| 34 | 1.4.5.2 | Adopter Testing |  | 5d | 2008-01-31 | 2008-02-06 | 33 | 17d | WFU; Duke | 80h |
| 35 | 1.4.5.3 | Developer Fixes |  | 5d | 2008-02-01 | 2008-02-07 | 33FS+1d | 0d | C3PR Developers | 40h |
| 36 | 1.4.5.4 | User Acceptance | milestone | 0d | 2008-02-07 | 2008-02-07 | 35 | 0d | WFU; NCICB; Duke |  |
| 37 | 1.4.5.5 | Submit Code Release Updates (Task 4.3) | milestone | 0d | 2008-02-07 | 2008-02-07 | 35 | 16d | C3PR Developers |  |
| 38 | 1.4.5.6 | Submit Guide Updates (Task 4.4) | milestone | 0d | 2008-02-07 | 2008-02-07 | 35 | 16d | C3PR Developers |  |
| 39 | 1.5 | **Deployment** |  | 13d | 2008-02-08 | 2008-02-26 |  | 0d |  | 312h |
| 40 | 1.5.1 | Final Deployment at Adopters |  | 1d | 2008-02-08 | 2008-02-08 | 36, 10 | 0d | WFU; C3PR Developers; Duke | 24h |
| 41 | 1.5.2 | Configuration |  | 10d | 2008-02-11 | 2008-02-22 | 40 | 0d | WFU; C3PR Developers; Duke | 240h |
| 42 | 1.5.3 | Sign Off | milestone | 0d | 2008-02-22 | 2008-02-22 | 41 | 0d | WFU; Duke |  |
| 43 | 1.5.4 | Deployment Report (Task 4.2) |  | 2d | 2008-02-25 | 2008-02-26 | 42 | 0d | WFU; C3PR Developers; Duke | 48h |
| 44 | 2 | **Project Closing Activities** |  | 3d | 2008-02-27 | 2008-02-29 | 43 | 0d |  |  |
| 45 | 2.1 | Lessons Learned (Task 1.6) |  | 1d | 2008-02-27 | 2008-02-27 |  | 2d |  |  |
| 46 | 2.2 | Archiving |  | 2d | 2008-02-27 | 2008-02-28 |  | 1d |  |  |
| 47 | 2.3 | Contract Closeout |  | 3d | 2008-02-27 | 2008-02-29 |  | 0d |  |  |
