# elaboration_project_plan

Schedule from MS Project, 2006-11-01 to 2007-03-19, A marks actual dates.
Duke University

## Calendars

- Standard: Mon-Fri 08:00-12:00, 13:00-17:00; Sat-Sun off.

## Resources

| Resource |
| --- |
| Patrick |
| Ram |
| Elaborators |
| PriyatamElaborators |
| Development team |
| Pri |
| Priyatam |
| Ramakrishna |
| Kruttik |
| Manav |
| Developers |
| Development teatm |
| BAH |
| Adopters |
| Pryatam |

## Schedule

| ID | WBS | Task | Type | Duration | Start | Finish | Predecessors | Complete | Remaining | Total slack | Constraint |
| --- | --- | --- | --- | --- | --- | --- | --- | --- | --- | --- | --- |
| 1 | 1 | **Iteration 1** |  | 32d | 2006-11-01 A | 2006-12-14 |  | 95% | 1.48d | 67d |  |
| 2 | 1.1 | Iteration start | milestone | 0d | 2006-11-01 A | 2006-11-01 A |  | 100% |  |  | start no earlier than 2006-11-01 |
| 3 | 1.2 | **Project Management** |  | 32d | 2006-11-01 A | 2006-12-14 | 2 | 87% | 4.05d | 67d |  |
| 4 | 1.2.1 | **Draft project plan (task 1.1)** |  | 20d | 2006-11-01 A | 2006-11-28 |  | 50% | 10d | 79d |  |
| 5 | 1.2.1.1 | Developer draft |  | 5d | 2006-11-01 A | 2006-11-07 A |  | 100% |  |  |  |
| 6 | 1.2.1.2 | Adopter review |  | 3d | 2006-11-08 A | 2006-11-10 A | 5 | 100% |  |  |  |
| 7 | 1.2.1.3 | Developer update |  | 2d | 2006-11-13 A | 2006-11-14 A | 6 | 100% |  |  |  |
| 8 | 1.2.1.4 | Deliver to BAH | milestone | 0d | 2006-11-14 A | 2006-11-14 A | 7 | 100% |  |  |  |
| 9 | 1.2.1.5 | BAH review |  | 10d | 2006-11-15 | 2006-11-28 | 8 |  |  | 66d |  |
| 10 | 1.2.2 | **Draft communication plan (task 1.2)** |  | 32d | 2006-11-01 A | 2006-12-14 A |  | 100% |  |  |  |
| 11 | 1.2.2.1 | Developer draft |  | 12d | 2006-11-01 A | 2006-11-16 A |  | 100% |  |  |  |
| 12 | 1.2.2.2 | Adopter review |  | 5d | 2006-11-17 A | 2006-11-23 A | 11 | 100% |  |  |  |
| 13 | 1.2.2.3 | Developer update |  | 5d | 2006-11-24 A | 2006-11-30 A | 12 | 100% |  |  |  |
| 14 | 1.2.2.4 | Deliver to BAH | milestone | 0d | 2006-11-30 A | 2006-11-30 A | 13 | 100% |  |  |  |
| 15 | 1.2.2.5 | BAH review |  | 10d | 2006-12-01 A | 2006-12-14 A | 14 | 100% |  |  |  |
| 16 | 1.2.3 | **Draft risk matrix (task 1.4.1)** |  | 22d | 2006-11-01 A | 2006-11-30 A |  | 100% |  |  |  |
| 17 | 1.2.3.1 | Developer draft |  | 12d | 2006-11-01 A | 2006-11-16 A |  | 100% |  |  |  |
| 18 | 1.2.3.2 | Deliver to BAH | milestone | 0d | 2006-11-16 A | 2006-11-16 A | 17 | 100% |  |  |  |
| 19 | 1.2.3.3 | BAH review |  | 10d | 2006-11-17 A | 2006-11-30 A | 18 | 100% |  |  |  |
| 20 | 1.2.4 | **Update risk matrix (task 1.3.1)** |  | 20d | 2006-11-17 A | 2006-12-14 A |  | 100% |  |  |  |
| 21 | 1.2.4.1 | Developer draft |  | 10d | 2006-11-17 A | 2006-11-30 A | 16 | 100% |  |  |  |
| 22 | 1.2.4.2 | Deliver to BAH | milestone | 0d | 2006-11-30 A | 2006-11-30 A | 21 | 100% |  |  |  |
| 23 | 1.2.4.3 | BAH review |  | 10d | 2006-12-01 A | 2006-12-14 A | 22 | 100% |  |  |  |
| 24 | 1.2.5 | **Monthly report (task 1.3.1)** |  | 32d | 2006-11-01 A | 2006-12-14 A |  | 100% |  |  |  |
| 25 | 1.2.5.1 | Developer draft |  | 22d | 2006-11-01 A | 2006-11-30 A |  | 100% |  |  |  |
| 26 | 1.2.5.2 | Deliver to BAH | milestone | 0d | 2006-11-30 A | 2006-11-30 A | 25 | 100% |  |  |  |
| 27 | 1.2.5.3 | BAH review |  | 10d | 2006-12-01 A | 2006-12-14 A | 26 | 100% |  |  |  |

| ID | WBS | Task | Type | Duration | Start | Finish | Predecessors | Complete | Remaining | Total slack |
| --- | --- | --- | --- | --- | --- | --- | --- | --- | --- | --- |
| 28 | 1.2.6 | **Test plan document (task 2.6.1)** |  | 22d | 2006-11-01 A | 2006-11-30 |  | 69% | 6.88d | 77d |
| 29 | 1.2.6.1 | Developer draft |  | 12d | 2006-11-01 A | 2006-11-16 A |  | 100% |  |  |
| 30 | 1.2.6.2 | Adopter review |  | 5d | 2006-11-17 A | 2006-11-23 A | 29 | 100% |  |  |
| 31 | 1.2.6.3 | Developer update |  | 5d | 2006-11-24 A | 2006-11-30 A | 30 | 100% |  |  |
| 32 | 1.2.6.4 | Deliver to BAH | milestone | 0d | 2006-11-14 A | 2006-11-14 A | 31 | 100% |  |  |
| 33 | 1.2.6.5 | BAH review |  | 10d | 2006-11-15 | 2006-11-28 | 32 |  |  | 66d |
| 34 | 1.3 | **Requirements** |  | 32d | 2006-11-01 A | 2006-12-14 | 2 | 92% | 2.44d | 67d |
| 35 | 1.3.1 | **Draft meeting notes from face-to-face (task 1.5)** |  | 22d | 2006-11-01 A | 2006-11-30 A |  | 100% |  |  |
| 36 | 1.3.1.1 | Developer draft |  | 12d | 2006-11-01 A | 2006-11-16 A |  | 100% |  |  |
| 37 | 1.3.1.2 | Adopter review |  | 5d | 2006-11-17 A | 2006-11-23 A | 36 | 100% |  |  |
| 38 | 1.3.1.3 | Developer update |  | 5d | 2006-11-24 A | 2006-11-30 A | 37 | 100% |  |  |
| 39 | 1.3.1.4 | Deliver to BAH | milestone | 0d | 2006-11-14 A | 2006-11-14 A | 38 | 100% |  |  |
| 40 | 1.3.1.5 | BAH review |  | 10d | 2006-11-15 A | 2006-11-28 A | 39 | 100% |  |  |
| 41 | 1.3.2 | **Refine vision and scope document (task 1.8)** |  | 22d | 2006-11-01 A | 2006-11-30 A |  | 100% |  |  |
| 42 | 1.3.2.1 | Developer draft | milestone | 12d | 2006-11-01 A | 2006-11-16 A |  | 100% |  |  |
| 43 | 1.3.2.2 | Adopter review | milestone | 5d | 2006-11-24 A | 2006-11-30 A | 42 | 100% |  |  |
| 44 | 1.3.2.3 | Developer update |  | 5d | 2006-11-01 A | 2006-11-07 A | 43 | 100% |  |  |
| 45 | 1.3.2.4 | Deliver to BAH | milestone | 0d | 2006-11-01 A | 2006-11-01 A | 44 | 100% |  |  |
| 46 | 1.3.2.5 | BAH review |  | 10d | 2006-11-01 A | 2006-11-14 A | 45 | 100% |  |  |
| 47 | 1.3.3 | **Draft level 1 use cases and requirements** |  | 2d | 2006-11-01 A | 2006-11-02 A |  | 100% |  |  |
| 48 | 1.3.3.1 | Developer draft | milestone | 2d | 2006-11-01 A | 2006-11-02 A |  | 100% |  |  |
| 49 | 1.3.4 | **Draft use case document (task 2.1.1)** |  | 32d | 2006-11-01 A | 2006-12-14 A |  | 100% |  |  |
| 50 | 1.3.4.1 | Integrate level 1 use cases |  | 2d | 2006-11-01 A | 2006-11-02 A | 47 | 100% |  |  |
| 51 | 1.3.4.2 | Draft protocol management use cases |  | 11d | 2006-11-02 A | 2006-11-16 A |  | 100% |  |  |
| 52 | 1.3.4.3 | Adopter review |  | 5d | 2006-11-17 A | 2006-11-23 A | 51 | 100% |  |  |
| 53 | 1.3.4.4 | Developer update |  | 5d | 2006-11-24 A | 2006-11-30 A | 52 | 100% |  |  |
| 54 | 1.3.4.5 | Deliver to BAH | milestone | 0d | 2006-11-30 A | 2006-11-30 A | 53 | 100% |  |  |
| 55 | 1.3.4.6 | BAH review |  | 10d | 2006-12-01 A | 2006-12-14 A | 54 | 100% |  |  |

| ID | WBS | Task | Type | Duration | Start | Finish | Predecessors | Complete | Remaining | Total slack |
| --- | --- | --- | --- | --- | --- | --- | --- | --- | --- | --- |
| 56 | 1.3.5 | **SRS document (task 2.2.1)** |  | 32d | 2006-11-01 A | 2006-12-14 |  | 69% | 10d | 67d |
| 57 | 1.3.5.1 | Developer draft | milestone | 12d | 2006-11-01 A | 2006-11-16 A |  | 100% |  |  |
| 58 | 1.3.5.2 | Adopter review | milestone | 5d | 2006-11-17 A | 2006-11-23 A | 57 | 100% |  |  |
| 59 | 1.3.5.3 | Developer update |  | 5d | 2006-11-24 A | 2006-11-30 A | 58 | 100% |  |  |
| 60 | 1.3.5.4 | Deliver to BAH | milestone | 0d | 2006-11-30 A | 2006-11-30 A | 59 | 100% |  |  |
| 61 | 1.3.5.5 | BAH review |  | 10d | 2006-12-01 | 2006-12-14 | 60 |  |  | 54d |
| 62 | 1.4 | **Analysis and Design** |  | 32d | 2006-11-01 A | 2006-12-14 A | 2 | 100% |  |  |
| 63 | 1.4.1 | **Design document (task 2.4.1)** |  | 32d | 2006-11-01 A | 2006-12-14 A |  | 100% |  |  |
| 64 | 1.4.1.1 | Developer draft | milestone | 12d | 2006-11-01 A | 2006-11-16 A |  | 100% |  |  |
| 65 | 1.4.1.2 | Adopter review | milestone | 5d | 2006-11-17 A | 2006-11-23 A | 64 | 100% |  |  |
| 66 | 1.4.1.3 | Developer update |  | 5d | 2006-11-24 A | 2006-11-30 A | 65 | 100% |  |  |
| 67 | 1.4.1.4 | Deliver to BAH | milestone | 0d | 2006-11-30 A | 2006-11-30 A | 66 | 100% |  |  |
| 68 | 1.4.1.5 | BAH review |  | 10d | 2006-12-01 A | 2006-12-14 A | 67 | 100% |  |  |
| 69 | 1.4.2 | **UML diagrams (task 2.3.1)** |  | 32d | 2006-11-01 A | 2006-12-14 A |  | 100% |  |  |
| 70 | 1.4.2.1 | Developer draft | milestone | 12d | 2006-11-01 A | 2006-11-16 A |  | 100% |  |  |
| 71 | 1.4.2.2 | Adopter review | milestone | 5d | 2006-11-17 A | 2006-11-23 A | 70 | 100% |  |  |
| 72 | 1.4.2.3 | Developer update |  | 5d | 2006-11-24 A | 2006-11-30 A | 71 | 100% |  |  |
| 73 | 1.4.2.4 | Deliver to BAH | milestone | 0d | 2006-11-30 A | 2006-11-30 A | 72 | 100% |  |  |
| 74 | 1.4.2.5 | BAH review |  | 10d | 2006-12-01 A | 2006-12-14 A | 73 | 100% |  |  |
| 75 | 1.4.3 | **ESB** |  | 5d | 2006-11-01 A | 2006-11-07 A |  | 100% |  |  |
| 76 | 1.4.3.1 | Evalutate technologies by prototyping |  | 5d | 2006-11-01 A | 2006-11-07 A |  | 100% |  |  |
| 77 | 1.4.4 | **Grid service** |  | 7d | 2006-11-01 A | 2006-11-09 A |  | 100% |  |  |
| 78 | 1.4.4.1 | Evaluate caGrid 1.0 service infrastructure |  | 7d | 2006-11-01 A | 2006-11-09 A |  | 100% |  |  |
| 79 | 1.4.5 | **Database** |  | 7d | 2006-11-01 A | 2006-11-09 A |  | 100% |  |  |
| 80 | 1.4.5.1 | First draft of protocol database structure |  | 7d | 2006-11-01 A | 2006-11-09 A |  | 100% |  |  |

| ID | WBS | Task | Type | Duration | Start | Finish | Predecessors | Complete |
| --- | --- | --- | --- | --- | --- | --- | --- | --- |
| 81 | 1.4.6 | **Domain model** |  | 22d | 2006-11-01 A | 2006-11-30 A |  | 100% |
| 82 | 1.4.6.1 | Create protocol model harmonized with BRIDG |  | 10d | 2006-11-01 A | 2006-11-14 A | 47 | 100% |
| 83 | 1.4.6.2 | Create first draft of protocol model |  | 11d | 2006-11-16 A | 2006-11-30 A | 82 | 100% |
| 84 | 1.4.7 | **Security** |  | 22d | 2006-11-01 A | 2006-11-30 A |  | 100% |
| 85 | 1.4.7.1 | Evaluate caGrid 1.0 security infrastructure |  | 22d | 2006-11-01 A | 2006-11-30 A |  | 100% |
| 86 | 1.5 | **Implementation** |  | 32d | 2006-11-01 A | 2006-12-14 A | 2 | 100% |
| 87 | 1.5.1 | **Web interface** |  | 22d | 2006-11-01 A | 2006-11-30 A |  | 100% |
| 88 | 1.5.1.1 | Migrate v1 code into codebase |  | 22d | 2006-11-01 A | 2006-11-30 A |  | 100% |
| 89 | 1.5.2 | **Enterprise Service Bus** |  | 22d | 2006-11-01 A | 2006-11-30 A |  | 100% |
| 90 | 1.5.2.1 | Setup initial project |  | 22d | 2006-11-01 A | 2006-11-30 A |  | 100% |
| 91 | 1.5.3 | **Grid service** |  | 15d | 2006-11-10 A | 2006-11-30 A |  | 100% |
| 92 | 1.5.3.1 | Create grid service skeleton |  | 15d | 2006-11-10 A | 2006-11-30 A | 78, 47 | 100% |
| 93 | 1.5.4 | **Database** |  | 22d | 2006-11-01 A | 2006-11-30 A |  | 100% |
| 94 | 1.5.4.1 | Migrate v1 code into codebase |  | 22d | 2006-11-01 A | 2006-11-30 A |  | 100% |
| 95 | 1.5.4.2 | Implement protocol database structure |  | 22d | 2006-11-01 A | 2006-11-30 A | 47 | 100% |
| 96 | 1.5.5 | **Domain model** |  | 22d | 2006-11-01 A | 2006-11-30 A |  | 100% |
| 97 | 1.5.5.1 | Migrate v1 code into codebase |  | 22d | 2006-11-01 A | 2006-11-30 A |  | 100% |
| 98 | 1.5.5.2 | Implement protocol model |  | 15d | 2006-11-01 A | 2006-11-21 A | 47 | 100% |
| 99 | 1.5.5.3 | Create OR mapping for protocol model |  | 7d | 2006-11-22 A | 2006-11-30 A | 98 | 100% |
| 100 | 1.5.6 | **Business layer** |  | 22d | 2006-11-01 A | 2006-11-30 A |  | 100% |
| 101 | 1.5.6.1 | Migrate v1 code |  | 22d | 2006-11-01 A | 2006-11-30 A |  | 100% |
| 102 | 1.5.7 | **Prototype code (task 2.5.1)** |  | 32d | 2006-11-01 A | 2006-12-14 A |  | 100% |
| 103 | 1.5.7.1 | Developer Draft |  | 22d | 2006-11-01 A | 2006-11-30 A |  | 100% |
| 104 | 1.5.7.2 | Deliver to BAH | milestone | 0d | 2006-11-30 A | 2006-11-30 A | 103 | 100% |
| 105 | 1.5.7.3 | BAH review |  | 10d | 2006-12-01 A | 2006-12-14 A | 104 | 100% |

| ID | WBS | Task | Type | Duration | Start | Finish | Predecessors | Complete | Remaining | Total slack | Free slack | Constraint | Resources | Work | Actual work |
| --- | --- | --- | --- | --- | --- | --- | --- | --- | --- | --- | --- | --- | --- | --- | --- |
| 106 | 1.6 | **Testing** |  | 32d | 2006-11-01 A | 2006-12-14 A | 2 | 100% |  |  |  |  |  |  |  |
| 107 | 1.6.1 | Implement unit tests |  | 20d | 2006-11-01 A | 2006-11-28 A |  | 100% |  |  |  |  |  |  |  |
| 108 | 1.6.2 | **Test report (task 2.7.1)** |  | 12d | 2006-11-29 A | 2006-12-14 A |  | 100% |  |  |  |  |  |  |  |
| 109 | 1.6.2.1 | Developer draft |  | 2d | 2006-11-29 A | 2006-11-30 A | 107 | 100% |  |  |  |  |  |  |  |
| 110 | 1.6.2.2 | Deliver to BAH | milestone | 0d | 2006-11-30 A | 2006-11-30 A | 109 | 100% |  |  |  |  |  |  |  |
| 111 | 1.6.2.3 | BAH review |  | 10d | 2006-12-01 A | 2006-12-14 A | 110 | 100% |  |  |  |  |  |  |  |
| 112 | 2 | **Iteration 2** |  | 31d | 2006-12-01 A | 2007-01-12 |  | 94% | 1.87d | 46d |  |  |  | 20152h | 19420.1h |
| 113 | 2.1 | Iteration start | milestone | 0d | 2006-12-01 A | 2006-12-01 A |  | 100% |  |  |  | start no earlier than 2006-12-01 |  |  |  |
| 114 | 2.2 | **Project Management** |  | 31d | 2006-12-01 A | 2007-01-12 | 113 | 69% | 9.48d | 46d |  |  | Patrick | 2392h | 1660.12h |
| 115 | 2.2.1 | **Update risk matrix (task 1.4.2)** |  | 21d | 2006-12-01 A | 2006-12-29 A |  | 100% |  |  |  |  | Patrick | 336h | 336h |
| 116 | 2.2.1.1 | Developer draft |  | 11d | 2006-12-01 A | 2006-12-15 A |  | 100% |  |  |  |  | Patrick | 88h | 88h |
| 117 | 2.2.1.2 | Deliver to BAH | milestone | 0d | 2006-12-15 A | 2006-12-15 A | 116 | 100% |  |  |  |  | Patrick |  |  |
| 118 | 2.2.1.3 | BAH review |  | 10d | 2006-12-18 A | 2006-12-29 A | 117 | 100% |  |  |  |  | BAH | 80h | 80h |
| 119 | 2.2.2 | **Update risk matrix (task 1.3.2)** |  | 20d | 2006-12-18 A | 2007-01-12 A |  | 100% |  |  |  |  | Patrick | 320h | 320h |
| 120 | 2.2.2.1 | Developer draft |  | 10d | 2006-12-18 A | 2006-12-29 A |  | 100% |  |  |  | start no earlier than 2006-12-18 | Patrick | 80h | 80h |
| 121 | 2.2.2.2 | Deliver to BAH | milestone | 0d | 2006-12-29 A | 2006-12-29 A | 120 | 100% |  |  |  |  | Patrick |  |  |
| 122 | 2.2.2.3 | BAH review |  | 10d | 2007-01-01 A | 2007-01-12 A | 121 | 100% |  |  |  |  | BAH | 80h | 80h |
| 123 | 2.2.3 | **Monthly report (task 1.3.2)** |  | 31d | 2006-12-01 A | 2007-01-12 |  | 68% | 10d | 46d |  |  | Patrick | 496h | 336h |
| 124 | 2.2.3.1 | Developer draft |  | 21d | 2006-12-01 A | 2006-12-29 A |  | 100% |  |  |  |  | Patrick | 168h | 168h |
| 125 | 2.2.3.2 | Deliver to BAH | milestone | 0d | 2006-12-29 A | 2006-12-29 A | 124 | 100% |  |  |  |  | Patrick |  |  |
| 126 | 2.2.3.3 | BAH review |  | 10d | 2007-01-01 | 2007-01-12 | 125 |  |  | 43d |  |  | BAH | 80h |  |
| 127 | 2.2.4 | **Adoption Collaboration Report (task 1.7)** |  | 31d | 2006-12-01 | 2007-01-12 |  |  |  | 46d |  |  | Patrick | 496h |  |
| 128 | 2.2.4.1 | Developer Draft |  | 11d | 2006-12-01 | 2006-12-15 |  |  |  | 43d | 0d |  | Patrick | 88h |  |
| 129 | 2.2.4.2 | Adopter review |  | 5d | 2006-12-18 | 2006-12-22 | 128 |  |  | 43d | 0d |  | Elaborators | 40h |  |
| 130 | 2.2.4.3 | Developer update |  | 5d | 2006-12-25 | 2006-12-29 | 129 |  |  | 43d | 0d |  | Patrick | 40h |  |
| 131 | 2.2.4.4 | Deliver to BAH | milestone | 0d | 2006-12-29 | 2006-12-29 | 130 |  |  | 43d | 0d |  | Patrick |  |  |
| 132 | 2.2.4.5 | BAH review |  | 10d | 2007-01-01 | 2007-01-12 | 131 |  |  | 43d |  |  | BAH | 80h |  |

| ID | WBS | Task | Type | Duration | Start | Finish | Predecessors | Complete | Resources | Work | Actual work |
| --- | --- | --- | --- | --- | --- | --- | --- | --- | --- | --- | --- |
| 133 | 2.2.5 | **Test plan document (task 2.6.2)** |  | 31d | 2006-12-01 A | 2007-01-12 A |  | 100% | Patrick | 496h | 496h |
| 134 | 2.2.5.1 | Developer Draft |  | 11d | 2006-12-01 A | 2006-12-15 A |  | 100% | Patrick | 88h | 88h |
| 135 | 2.2.5.2 | Adopter review |  | 5d | 2006-12-18 A | 2006-12-22 A | 134 | 100% | Elaborators | 40h | 40h |
| 136 | 2.2.5.3 | Developer update |  | 5d | 2006-12-25 A | 2006-12-29 A | 135 | 100% | Patrick | 40h | 40h |
| 137 | 2.2.5.4 | Deliver to BAH | milestone | 0d | 2006-12-29 A | 2006-12-29 A | 136 | 100% | Patrick |  |  |
| 138 | 2.2.5.5 | BAH review |  | 10d | 2007-01-01 A | 2007-01-12 A | 137 | 100% | BAH | 80h | 80h |
| 139 | 2.3 | **Requirements** |  | 31d | 2006-12-01 A | 2007-01-12 A | 113 | 100% | Development team; Elaborators | 4984h | 4984h |
| 140 | 2.3.1 | Create level 1 use cases and requirements |  | 2d | 2006-12-01 A | 2006-12-04 A |  | 100% | Ram | 16h | 16h |
| 141 | 2.3.2 | **Use case document** |  | 31d | 2006-12-01 A | 2007-01-12 A |  | 100% | Ram; Elaborators | 3976h | 3976h |
| 142 | 2.3.2.1 | **Develop C3PR integration use cases (implementation) (task 2.1.2)** |  | 31d | 2006-12-01 A | 2007-01-12 A |  | 100% | Ram; Elaborators | 744h | 744h |
| 143 | 2.3.2.1.1 | Developer Draft |  | 11d | 2006-12-01 A | 2006-12-15 A |  | 100% | Ram | 88h | 88h |
| 144 | 2.3.2.1.2 | Adopter review |  | 5d | 2006-12-18 A | 2006-12-22 A | 143 | 100% | Elaborators | 40h | 40h |
| 145 | 2.3.2.1.3 | Developer update |  | 5d | 2006-12-25 A | 2006-12-29 A | 144 | 100% | Ram | 40h | 40h |
| 146 | 2.3.2.1.4 | Deliver to BAH | milestone | 0d | 2006-12-29 A | 2006-12-29 A | 145 | 100% | Patrick |  |  |
| 147 | 2.3.2.1.5 | BAH review |  | 10d | 2007-01-01 A | 2007-01-12 A | 146 | 100% | BAH | 80h | 80h |
| 148 | 2.3.2.2 | **Develop Study Calendar integration use cases (implementation) (task 2.1.2)** |  | 31d | 2006-12-01 A | 2007-01-12 A |  | 100% | Ram; Elaborators | 744h | 744h |
| 149 | 2.3.2.2.1 | Developer Draft |  | 11d | 2006-12-01 A | 2006-12-15 A |  | 100% | Ram | 88h | 88h |
| 150 | 2.3.2.2.2 | Adopter review |  | 5d | 2006-12-18 A | 2006-12-22 A | 149 | 100% | Elaborators | 40h | 40h |
| 151 | 2.3.2.2.3 | Developer update |  | 5d | 2006-12-25 A | 2006-12-29 A | 150 | 100% | Ram | 40h | 40h |
| 152 | 2.3.2.2.4 | Deliver to BAH | milestone | 0d | 2006-12-29 A | 2006-12-29 A | 151 | 100% | Patrick |  |  |
| 153 | 2.3.2.2.5 | BAH review |  | 10d | 2007-01-01 A | 2007-01-12 A | 152 | 100% | BAH | 80h | 80h |
| 154 | 2.3.2.3 | **Develop participant management use cases (implementation) (task 2.1.2)** |  | 31d | 2006-12-01 A | 2007-01-12 A |  | 100% | Ram; Elaborators | 744h | 744h |
| 155 | 2.3.2.3.1 | Developer Draft |  | 11d | 2006-12-01 A | 2006-12-15 A |  | 100% | Ram | 88h | 88h |
| 156 | 2.3.2.3.2 | Adopter review |  | 5d | 2006-12-18 A | 2006-12-22 A | 155 | 100% | Elaborators | 40h | 40h |
| 157 | 2.3.2.3.3 | Developer update |  | 5d | 2006-12-25 A | 2006-12-29 A | 156 | 100% | Ram | 40h | 40h |
| 158 | 2.3.2.3.4 | Deliver to BAH | milestone | 0d | 2006-12-29 A | 2006-12-29 A | 157 | 100% | Patrick |  |  |
| 159 | 2.3.2.3.5 | BAH review |  | 10d | 2007-01-01 A | 2007-01-12 A | 158 | 100% | BAH | 80h | 80h |

| ID | WBS | Task | Type | Duration | Start | Finish | Predecessors | Complete | Resources | Work | Actual work |
| --- | --- | --- | --- | --- | --- | --- | --- | --- | --- | --- | --- |
| 160 | 2.3.2.4 | **Refine protocol management use cases (task 2.1.2)** |  | 31d | 2006-12-01 A | 2007-01-12 A |  | 100% | Ram; Priyatam; Elaborators | 1248h | 1248h |
| 161 | 2.3.2.4.1 | Developer Draft |  | 11d | 2006-12-01 A | 2006-12-15 A |  | 100% | Ram; Priyatam; Elaborators | 264h | 264h |
| 162 | 2.3.2.4.2 | Adopter review |  | 5d | 2006-12-18 A | 2006-12-22 A | 161 | 100% | Elaborators | 40h | 40h |
| 163 | 2.3.2.4.3 | Developer update |  | 5d | 2006-12-25 A | 2006-12-29 A | 162 | 100% | Ram; Priyatam; Elaborators | 120h | 120h |
| 164 | 2.3.2.4.4 | Deliver to BAH | milestone | 0d | 2006-12-29 A | 2006-12-29 A | 163 | 100% | Patrick |  |  |
| 165 | 2.3.2.4.5 | BAH review |  | 10d | 2007-01-01 A | 2007-01-12 A | 164 | 100% | BAH | 80h | 80h |
| 166 | 2.3.3 | **SRS document (task 2.2.2)** |  | 31d | 2006-12-01 A | 2007-01-12 A |  | 100% | Ram | 496h | 496h |
| 167 | 2.3.3.1 | Developer Draft |  | 11d | 2006-12-01 A | 2006-12-15 A |  | 100% | Ram | 88h | 88h |
| 168 | 2.3.3.2 | Adopter review |  | 5d | 2006-12-18 A | 2006-12-22 A | 167 | 100% | Elaborators | 40h | 40h |
| 169 | 2.3.3.3 | Developer update |  | 5d | 2006-12-25 A | 2006-12-29 A | 168 | 100% | Ram | 40h | 40h |
| 170 | 2.3.3.4 | Deliver to BAH | milestone | 0d | 2006-12-29 A | 2006-12-29 A | 169 | 100% | Ram |  |  |
| 171 | 2.3.3.5 | BAH review |  | 10d | 2007-01-01 A | 2007-01-12 A | 170 | 100% | BAH | 80h | 80h |
| 172 | 2.4 | **Analysis and Design** |  | 31d | 2006-12-01 A | 2007-01-12 A | 113 | 100% | Development team; Elaborators | 3000h | 3000h |
| 173 | 2.4.1 | **UML diagrams (task 2.3.2)** |  | 31d | 2006-12-01 A | 2007-01-12 A |  | 100% | Development team | 496h | 496h |
| 174 | 2.4.1.1 | Developer Draft |  | 11d | 2006-12-01 A | 2006-12-15 A |  | 100% | Development team | 88h | 88h |
| 175 | 2.4.1.2 | Adopter review |  | 5d | 2006-12-18 A | 2006-12-22 A | 174 | 100% | Elaborators | 40h | 40h |
| 176 | 2.4.1.3 | Developer update |  | 5d | 2006-12-25 A | 2006-12-29 A | 175 | 100% | Development team | 40h | 40h |
| 177 | 2.4.1.4 | Deliver to BAH | milestone | 0d | 2006-12-29 A | 2006-12-29 A | 176 | 100% | Patrick |  |  |
| 178 | 2.4.1.5 | BAH review |  | 10d | 2007-01-01 A | 2007-01-12 A | 177 | 100% | BAH | 80h | 80h |
| 179 | 2.4.2 | **Design document (task 2.4.2)** |  | 31d | 2006-12-01 A | 2007-01-12 A |  | 100% | Development team | 496h | 496h |
| 180 | 2.4.2.1 | Developer Draft |  | 11d | 2006-12-01 A | 2006-12-15 A |  | 100% | Development team | 88h | 88h |
| 181 | 2.4.2.2 | Adopter review |  | 5d | 2006-12-18 A | 2006-12-22 A | 180 | 100% | Elaborators | 40h | 40h |
| 182 | 2.4.2.3 | Developer update |  | 5d | 2006-12-25 A | 2006-12-29 A | 181 | 100% | Development team | 40h | 40h |
| 183 | 2.4.2.4 | Deliver to BAH | milestone | 0d | 2006-12-29 A | 2006-12-29 A | 182 | 100% | Patrick |  |  |
| 184 | 2.4.2.5 | BAH review |  | 10d | 2007-01-01 A | 2007-01-12 A | 183 | 100% | BAH | 80h | 80h |

| ID | WBS | Task | Duration | Start | Finish | Predecessors | Complete | Resources | Work | Actual work |
| --- | --- | --- | --- | --- | --- | --- | --- | --- | --- | --- |
| 185 | 2.4.3 | **Doman model** | 21d | 2006-12-01 A | 2006-12-29 A |  | 100% | Ram; Priyatam; Ramakrishna | 1512h | 1512h |
| 186 | 2.4.3.1 | Harmonize participant model with BRIDG | 11d | 2006-12-01 A | 2006-12-15 A |  | 100% | Ram; Priyatam; Ramakrishna | 264h | 264h |
| 187 | 2.4.3.2 | Create participant model | 10d | 2006-12-18 A | 2006-12-29 A | 186 | 100% | Ram; Priyatam; Ramakrishna | 240h | 240h |
| 188 | 2.4.3.3 | Revise protocol model (including BRIDG harmonization) | 21d | 2006-12-01 A | 2006-12-29 A |  | 100% | Ram; Priyatam; Ramakrishna | 504h | 504h |
| 189 | 2.5 | **Implementation** | 29d | 2006-12-05 A | 2007-01-12 A | 140 | 100% | Development team | 8848h | 8848h |
| 190 | 2.5.1 | **Web interface** | 19d | 2006-12-05 A | 2006-12-29 A |  | 100% | Priyatam; Kruttik | 992h | 992h |
| 191 | 2.5.1.1 | First pass at dynamic interface | 5d | 2006-12-05 A | 2006-12-11 A |  | 100% | Priyatam; Kruttik | 80h | 80h |
| 192 | 2.5.1.2 | Create mockups | 5d | 2006-12-12 A | 2006-12-18 A | 191 | 100% | Priyatam; Kruttik | 80h | 80h |
| 193 | 2.5.1.3 | **Implement protocol management interface** | 14d | 2006-12-12 A | 2006-12-29 A | 191 | 100% | Priyatam; Kruttik | 448h | 448h |
| 194 | 2.5.1.3.1 | Implement base interface | 5d | 2006-12-12 A | 2006-12-18 A |  | 100% | Priyatam; Kruttik | 80h | 80h |
| 195 | 2.5.1.3.2 | Hook interface into backend logic | 5d | 2006-12-19 A | 2006-12-25 A | 194 | 100% | Priyatam; Kruttik | 80h | 80h |
| 196 | 2.5.1.3.3 | Refine interface | 4d | 2006-12-26 A | 2006-12-29 A | 195 | 100% | Priyatam; Kruttik | 64h | 64h |
| 197 | 2.5.1.4 | Point login module to Dorian (IdP service) | 5d | 2006-12-05 A | 2006-12-11 A | 193 | 100% | Priyatam; Kruttik | 80h | 80h |
| 198 | 2.5.2 | **Enterprise Service Bus** | 19d | 2006-12-05 A | 2006-12-29 A |  | 100% | Manav; Kruttik | 1840h | 1840h |
| 199 | 2.5.2.1 | **Implement protocol creation message router** | 9d | 2006-12-05 A | 2006-12-15 A |  | 100% | Manav; Kruttik | 288h | 288h |
| 200 | 2.5.2.1.1 | Create router rules | 4d | 2006-12-05 A | 2006-12-08 A |  | 100% | Manav; Kruttik | 64h | 64h |
| 201 | 2.5.2.1.2 | Deploy and test router | 5d | 2006-12-11 A | 2006-12-15 A | 200 | 100% | Manav; Kruttik | 80h | 80h |
| 202 | 2.5.2.2 | **Implement protocol creation message handler for C3PR** | 10d | 2006-12-18 A | 2006-12-29 A | 201 | 100% | Manav; Kruttik | 320h | 320h |
| 203 | 2.5.2.2.1 | Create inbound binding component | 5d | 2006-12-18 A | 2006-12-22 A |  | 100% | Manav; Kruttik | 80h | 80h |
| 204 | 2.5.2.2.2 | Create outbound binding component | 5d | 2006-12-25 A | 2006-12-29 A | 203 | 100% | Manav; Kruttik | 80h | 80h |
| 205 | 2.5.2.3 | **Implement protocol creation message handler for Study Calendar** | 10d | 2006-12-18 A | 2006-12-29 A | 199 | 100% | Manav; Kruttik | 320h | 320h |
| 206 | 2.5.2.3.1 | Create inbound binding component | 5d | 2006-12-18 A | 2006-12-22 A |  | 100% | Manav; Kruttik | 80h | 80h |
| 207 | 2.5.2.3.2 | Create outbound binding component | 5d | 2006-12-25 A | 2006-12-29 A | 206 | 100% | Manav; Kruttik | 80h | 80h |
| 208 | 2.5.2.4 | **Integrate caGrid security delegation** | 19d | 2006-12-05 A | 2006-12-29 A |  | 100% | Manav; Kruttik | 608h | 608h |
| 209 | 2.5.2.4.1 | Investigate credential handling | 5d | 2006-12-05 A | 2006-12-11 A |  | 100% | Manav; Kruttik | 80h | 80h |
| 210 | 2.5.2.4.2 | Implement inbound binding component | 5d | 2006-12-12 A | 2006-12-18 A | 209 | 100% | Manav; Kruttik | 80h | 80h |
| 211 | 2.5.2.4.3 | Implement outbound binding component | 5d | 2006-12-19 A | 2006-12-25 A | 210 | 100% | Manav; Kruttik | 80h | 80h |
| 212 | 2.5.2.4.4 | Deploy and test | 4d | 2006-12-26 A | 2006-12-29 A | 211 | 100% | Manav; Kruttik | 64h | 64h |

| ID | WBS | Task | Duration | Start | Finish | Predecessors | Complete | Resources | Work | Actual work |
| --- | --- | --- | --- | --- | --- | --- | --- | --- | --- | --- |
| 213 | 2.5.3 | **Grid service** | 19d | 2006-12-05 A | 2006-12-29 A |  | 100% | Manav | 456h | 456h |
| 214 | 2.5.3.1 | **Implement protocol creation service** | 19d | 2006-12-05 A | 2006-12-29 A |  | 100% | Manav | 304h | 304h |
| 215 | 2.5.3.1.1 | Create service skeleton | 5d | 2006-12-05 A | 2006-12-11 A |  | 100% | Manav | 40h | 40h |
| 216 | 2.5.3.1.2 | Implement skeleton | 5d | 2006-12-12 A | 2006-12-18 A | 215 | 100% | Manav | 40h | 40h |
| 217 | 2.5.3.1.3 | Hook in backend database | 5d | 2006-12-19 A | 2006-12-25 A | 216 | 100% | Manav | 40h | 40h |
| 218 | 2.5.3.1.4 | Deploy and test | 4d | 2006-12-26 A | 2006-12-29 A | 217 | 100% | Manav | 32h | 32h |
| 219 | 2.5.4 | **Database/Domain Model** | 19d | 2006-12-05 A | 2006-12-29 A |  | 100% | Ram; Priyatam; Ramakrishna | 3192h | 3192h |
| 220 | 2.5.4.1 | **Investigate identifiers framework** | 19d | 2006-12-05 A | 2006-12-29 A |  | 100% | Ram; Priyatam; Ramakrishna | 912h | 912h |
| 221 | 2.5.4.1.1 | Review identifiers whitepaper | 5d | 2006-12-05 A | 2006-12-11 A |  | 100% | Ram; Priyatam; Ramakrishna | 120h | 120h |
| 222 | 2.5.4.1.2 | Download and review identifiers code | 5d | 2006-12-12 A | 2006-12-18 A | 221 | 100% | Ram; Priyatam; Ramakrishna | 120h | 120h |
| 223 | 2.5.4.1.3 | First implementation | 5d | 2006-12-19 A | 2006-12-25 A | 222 | 100% | Ram; Priyatam; Ramakrishna | 120h | 120h |
| 224 | 2.5.4.1.4 | Review with team | 4d | 2006-12-26 A | 2006-12-29 A | 223 | 100% | Ram; Priyatam; Ramakrishna | 96h | 96h |
| 225 | 2.5.4.2 | **Update database with protocol changes** | 19d | 2006-12-05 A | 2006-12-29 A |  | 100% | Ram; Priyatam; Ramakrishna | 912h | 912h |
| 226 | 2.5.4.2.1 | Create database model | 5d | 2006-12-05 A | 2006-12-11 A |  | 100% | Ram; Priyatam; Ramakrishna | 120h | 120h |
| 227 | 2.5.4.2.2 | Create DDLs | 5d | 2006-12-12 A | 2006-12-18 A | 226 | 100% | Ram; Priyatam; Ramakrishna | 120h | 120h |
| 228 | 2.5.4.2.3 | Apply DDLs and create test data | 5d | 2006-12-19 A | 2006-12-25 A | 227 | 100% | Ram; Priyatam; Ramakrishna | 120h | 120h |
| 229 | 2.5.4.2.4 | Deploy and test | 4d | 2006-12-26 A | 2006-12-29 A | 228 | 100% | Ram; Priyatam; Ramakrishna | 96h | 96h |
| 230 | 2.5.4.3 | **Implement participant model** | 19d | 2006-12-05 A | 2006-12-29 A |  | 100% | Ram; Priyatam; Ramakrishna | 912h | 912h |
| 231 | 2.5.4.3.1 | Create database model | 5d | 2006-12-05 A | 2006-12-11 A |  | 100% | Ram; Priyatam; Ramakrishna | 120h | 120h |
| 232 | 2.5.4.3.2 | Create DDLs | 5d | 2006-12-12 A | 2006-12-18 A | 231 | 100% | Ram; Priyatam; Ramakrishna | 120h | 120h |
| 233 | 2.5.4.3.3 | Apply DDLs and create test data | 5d | 2006-12-19 A | 2006-12-25 A | 232 | 100% | Ram; Priyatam; Ramakrishna | 120h | 120h |
| 234 | 2.5.4.3.4 | Deploy and test | 4d | 2006-12-26 A | 2006-12-29 A | 233 | 100% | Ram; Priyatam; Ramakrishna | 96h | 96h |
| 235 | 2.5.5 | **Security** | 19d | 2006-12-05 A | 2006-12-29 A |  | 100% | Manav | 760h | 760h |
| 236 | 2.5.5.1 | **Setup dorian/authentication** | 19d | 2006-12-05 A | 2006-12-29 A |  | 100% | Manav | 304h | 304h |
| 237 | 2.5.5.1.1 | Deploy Dorian | 5d | 2006-12-05 A | 2006-12-11 A |  | 100% | Manav | 40h | 40h |
| 238 | 2.5.5.1.2 | Deploy GTS | 5d | 2006-12-12 A | 2006-12-18 A | 237 | 100% | Manav | 40h | 40h |
| 239 | 2.5.5.1.3 | Setup Dorian users | 5d | 2006-12-25 A | 2006-12-29 A | 238 | 100% | Manav | 40h | 40h |
| 240 | 2.5.5.1.4 | Setup IdP service | 4d | 2006-12-25 A | 2006-12-28 A | 237 | 100% | Manav | 32h | 32h |

| ID | WBS | Task | Type | Duration | Start | Finish | Predecessors | Complete | Remaining | Total slack | Free slack | Constraint | Resources | Work | Actual work |
| --- | --- | --- | --- | --- | --- | --- | --- | --- | --- | --- | --- | --- | --- | --- | --- |
| 241 | 2.5.5.2 | **Investigate secure message/conversation** |  | 19d | 2006-12-05 A | 2006-12-29 A |  | 100% |  |  |  |  | Manav | 304h | 304h |
| 242 | 2.5.5.2.1 | Review whitepapers |  | 4d | 2006-12-05 A | 2006-12-08 A |  | 100% |  |  |  |  | Manav | 32h | 32h |
| 243 | 2.5.5.2.2 | Review documentation |  | 5d | 2006-12-11 A | 2006-12-15 A | 242 | 100% |  |  |  |  | Manav | 40h | 40h |
| 244 | 2.5.5.2.3 | Review code |  | 5d | 2006-12-18 A | 2006-12-22 A | 243 | 100% |  |  |  |  | Manav | 40h | 40h |
| 245 | 2.5.5.2.4 | Create test service |  | 5d | 2006-12-25 A | 2006-12-29 A | 244 | 100% |  |  |  |  | Manav | 40h | 40h |
| 246 | 2.5.6 | **Business layer** |  | 19d | 2006-12-05 A | 2006-12-29 A |  | 100% |  |  |  |  | Priyatam; Kruttik | 912h | 912h |
| 247 | 2.5.6.1 | **Implement protocol creation logic** |  | 19d | 2006-12-05 A | 2006-12-29 A |  | 100% |  |  |  |  | Priyatam; Kruttik | 608h | 608h |
| 248 | 2.5.6.1.1 | Design APIs |  | 5d | 2006-12-05 A | 2006-12-11 A |  | 100% |  |  |  |  | Priyatam; Kruttik | 80h | 80h |
| 249 | 2.5.6.1.2 | Implement APIs |  | 5d | 2006-12-12 A | 2006-12-18 A | 248 | 100% |  |  |  |  | Priyatam; Kruttik | 80h | 80h |
| 250 | 2.5.6.1.3 | Hook in database |  | 5d | 2006-12-19 A | 2006-12-25 A | 249 | 100% |  |  |  |  | Priyatam; Kruttik | 80h | 80h |
| 251 | 2.5.6.1.4 | Deploy and test |  | 4d | 2006-12-26 A | 2006-12-29 A | 250 | 100% |  |  |  |  | Priyatam; Kruttik | 64h | 64h |
| 252 | 2.5.7 | **Prototype code (task 2.5.2)** |  | 29d | 2006-12-05 A | 2007-01-12 A |  | 100% |  |  |  |  | Patrick | 464h | 464h |
| 253 | 2.5.7.1 | Developer draft |  | 19d | 2006-12-05 A | 2006-12-29 A |  | 100% |  |  |  |  | Development team | 152h | 152h |
| 254 | 2.5.7.2 | Submit to BAH | milestone | 0d | 2006-12-29 A | 2006-12-29 A | 253 | 100% |  |  |  |  | Patrick |  |  |
| 255 | 2.5.7.3 | BAH review |  | 10d | 2007-01-01 A | 2007-01-12 A | 254 | 100% |  |  |  |  | BAH | 80h | 80h |
| 256 | 2.6 | **Testing** |  | 29d | 2006-12-05 A | 2007-01-12 A | 140 | 100% |  |  |  |  | Developers; Patrick | 928h | 928h |
| 257 | 2.6.1 | Create unit tests |  | 17d | 2006-12-05 A | 2006-12-27 A |  | 100% |  |  |  |  | Development team | 136h | 136h |
| 258 | 2.6.2 | Create integration tests |  | 17d | 2006-12-05 A | 2006-12-27 A |  | 100% |  |  |  |  | Development team | 136h | 136h |
| 259 | 2.6.3 | **Test report (task 2.7.2)** |  | 12d | 2006-12-28 A | 2007-01-12 A | 258, 257 | 100% |  |  |  |  | Patrick | 192h | 192h |
| 260 | 2.6.3.1 | Developer draft |  | 2d | 2006-12-28 A | 2006-12-29 A |  | 100% |  |  |  |  | Development team | 16h | 16h |
| 261 | 2.6.3.2 | Submit to BAH | milestone | 0d | 2006-12-29 A | 2006-12-29 A | 260 | 100% |  |  |  |  | Patrick |  |  |
| 262 | 2.6.3.3 | BAH review |  | 10d | 2007-01-01 A | 2007-01-12 A | 261 | 100% |  |  |  |  | BAH | 80h | 80h |
| 263 | 3 | **Iteration 3** |  | 33d | 2007-01-01 A | 2007-02-14 |  | 11% | 29.31d | 23d |  |  |  | 24224h | 1643.04h |
| 264 | 3.1 | Iteration start | milestone | 0d | 2007-01-01 | 2007-01-01 |  |  |  | 23d | 0d | start no earlier than 2007-01-01 |  |  |  |

| ID | WBS | Task | Type | Duration | Start | Finish | Predecessors | Complete | Remaining | Total slack | Resources | Work | Actual work |
| --- | --- | --- | --- | --- | --- | --- | --- | --- | --- | --- | --- | --- | --- |
| 265 | 3.2 | **Project Management** |  | 33d | 2007-01-01 A | 2007-02-14 | 264 | 65% | 11.62d | 23d | Patrick | 2536h | 1643.04h |
| 266 | 3.2.1 | **Update risk matrix (task 1.4.3)** |  | 23d | 2007-01-01 A | 2007-01-31 |  | 57% | 10d | 33d | Patrick | 368h | 208h |
| 267 | 3.2.1.1 | Developer draft |  | 13d | 2007-01-01 A | 2007-01-17 A |  | 100% |  |  | Patrick | 104h | 104h |
| 268 | 3.2.1.2 | Deliver to BAH | milestone | 0d | 2007-01-17 A | 2007-01-17 A | 267 | 100% |  |  | Patrick |  |  |
| 269 | 3.2.1.3 | BAH review |  | 10d | 2007-01-18 | 2007-01-31 | 268 |  |  | 23d | BAH | 80h |  |
| 270 | 3.2.2 | **Update risk matrix (task 1.3.3)** |  | 20d | 2007-01-18 A | 2007-02-14 | 268 | 50% | 10d | 23d | Patrick | 320h | 160h |
| 271 | 3.2.2.1 | Developer draft |  | 10d | 2007-01-18 A | 2007-01-31 A |  | 100% |  |  | Patrick | 80h | 80h |
| 272 | 3.2.2.2 | Deliver to BAH | milestone | 0d | 2007-01-31 A | 2007-01-31 A | 271 | 100% |  |  | Patrick |  |  |
| 273 | 3.2.2.3 | BAH review |  | 10d | 2007-02-01 | 2007-02-14 | 272 |  |  | 13d | BAH | 80h |  |
| 274 | 3.2.3 | **Monthly report (task 1.3.3)** |  | 33d | 2007-01-01 A | 2007-02-14 |  | 70% | 10d | 23d | Patrick | 528h | 368h |
| 275 | 3.2.3.1 | Developer draft |  | 23d | 2007-01-01 A | 2007-01-31 A |  | 100% |  |  | Patrick | 184h | 184h |
| 276 | 3.2.3.2 | Deliver to BAH | milestone | 0d | 2007-01-31 A | 2007-01-31 A | 275 | 100% |  |  | Patrick |  |  |
| 277 | 3.2.3.3 | BAH review |  | 10d | 2007-02-01 | 2007-02-14 | 276 |  |  | 13d | BAH | 80h |  |
| 278 | 3.2.4 | **Adoption Collaboration Report (task 1.7)** |  | 33d | 2007-01-01 A | 2007-02-14 |  | 70% | 10d | 23d | Patrick | 528h | 368h |
| 279 | 3.2.4.1 | Developer draft |  | 13d | 2007-01-01 A | 2007-01-17 A |  | 100% |  |  | Patrick | 104h | 104h |
| 280 | 3.2.4.2 | Adopter review |  | 5d | 2007-01-18 A | 2007-01-24 A | 279 | 100% |  |  | Elaborators | 40h | 40h |
| 281 | 3.2.4.3 | Developer update |  | 5d | 2007-01-25 A | 2007-01-31 A | 280 | 100% |  |  | Patrick | 40h | 40h |
| 282 | 3.2.4.4 | Deliver to BAH | milestone | 0d | 2007-01-31 A | 2007-01-31 A | 281 | 100% |  |  | Patrick |  |  |
| 283 | 3.2.4.5 | BAH review |  | 10d | 2007-02-01 | 2007-02-14 | 282 |  |  | 13d | BAH | 80h |  |
| 284 | 3.2.5 | **Test plan document (task 2.6.3)** |  | 33d | 2007-01-01 A | 2007-02-14 |  | 70% | 10d | 23d | Patrick | 528h | 368h |
| 285 | 3.2.5.1 | Developer draft |  | 13d | 2007-01-01 A | 2007-01-17 A |  | 100% |  |  | Patrick | 104h | 104h |
| 286 | 3.2.5.2 | Adopter review |  | 5d | 2007-01-18 A | 2007-01-24 A | 285 | 100% |  |  | Elaborators | 40h | 40h |
| 287 | 3.2.5.3 | Developer update |  | 5d | 2007-01-25 A | 2007-01-31 A | 286 | 100% |  |  | Patrick | 40h | 40h |
| 288 | 3.2.5.4 | Deliver to BAH | milestone | 0d | 2007-01-31 A | 2007-01-31 A | 287 | 100% |  |  | Patrick |  |  |
| 289 | 3.2.5.5 | BAH review |  | 10d | 2007-02-01 | 2007-02-14 | 288 |  |  | 13d | BAH | 80h |  |

| ID | WBS | Task | Type | Duration | Start | Finish | Predecessors | Total slack | Free slack | Resources | Work |
| --- | --- | --- | --- | --- | --- | --- | --- | --- | --- | --- | --- |
| 290 | 3.3 | **Requirements** |  | 33d | 2007-01-01 | 2007-02-14 | 264 | 23d |  | Development team; Elaborators | 5824h |
| 291 | 3.3.1 | Create level 1 use cases and requirements |  | 2d | 2007-01-01 | 2007-01-02 |  | 23d | 0d | Ram | 16h |
| 292 | 3.3.2 | **Use case document** |  | 33d | 2007-01-01 | 2007-02-14 |  | 23d |  | Ram; Elaborators; Priyatam | 4752h |
| 293 | 3.3.2.1 | **Develop registration use cases** |  | 33d | 2007-01-01 | 2007-02-14 |  | 23d |  | Ram; Elaborators | 792h |
| 294 | 3.3.2.1.1 | Developer draft |  | 13d | 2007-01-01 | 2007-01-17 |  | 23d | 0d | Ram | 104h |
| 295 | 3.3.2.1.2 | Adopter review |  | 5d | 2007-01-18 | 2007-01-24 | 294 | 23d | 0d | Elaborators | 40h |
| 296 | 3.3.2.1.3 | Developer update |  | 5d | 2007-01-25 | 2007-01-31 | 295 | 23d | 0d | Ram | 40h |
| 297 | 3.3.2.1.4 | Deliver to BAH | milestone | 0d | 2007-01-31 | 2007-01-31 | 296 | 23d | 0d | Patrick |  |
| 298 | 3.3.2.1.5 | BAH review |  | 10d | 2007-02-01 | 2007-02-14 | 297 | 23d |  | BAH | 80h |
| 299 | 3.3.2.2 | **Refine participant management use cases** |  | 33d | 2007-01-01 | 2007-02-14 |  | 23d |  | Ram; Elaborators; Priyatam | 1056h |
| 300 | 3.3.2.2.1 | Developer draft |  | 13d | 2007-01-01 | 2007-01-17 |  | 23d | 0d | Ram | 104h |
| 301 | 3.3.2.2.2 | Adopter review |  | 5d | 2007-01-18 | 2007-01-24 | 300 | 23d | 0d | Elaborators | 40h |
| 302 | 3.3.2.2.3 | Developer update |  | 5d | 2007-01-25 | 2007-01-31 | 301 | 23d | 0d | Ram | 40h |
| 303 | 3.3.2.2.4 | Deliver to BAH | milestone | 0d | 2007-01-31 | 2007-01-31 | 302 | 23d | 0d | Patrick |  |
| 304 | 3.3.2.2.5 | BAH review |  | 10d | 2007-02-01 | 2007-02-14 | 303 | 23d |  | BAH | 80h |
| 305 | 3.3.2.3 | **Refine C3PR integration use cases** |  | 33d | 2007-01-01 | 2007-02-14 |  | 23d |  | Ram; Elaborators; Priyatam | 1056h |
| 306 | 3.3.2.3.1 | Developer draft |  | 13d | 2007-01-01 | 2007-01-17 |  | 23d | 0d | Ram | 104h |
| 307 | 3.3.2.3.2 | Adopter review |  | 5d | 2007-01-18 | 2007-01-24 | 306 | 23d | 0d | Elaborators | 40h |
| 308 | 3.3.2.3.3 | Developer update |  | 5d | 2007-01-25 | 2007-01-31 | 307 | 23d | 0d | Ram | 40h |
| 309 | 3.3.2.3.4 | Deliver to BAH | milestone | 0d | 2007-01-31 | 2007-01-31 | 308 | 23d | 0d | Patrick |  |
| 310 | 3.3.2.3.5 | BAH review |  | 10d | 2007-02-01 | 2007-02-14 | 309 | 23d |  | BAH | 80h |
| 311 | 3.3.2.4 | **Refine PSC use cases** |  | 33d | 2007-01-01 | 2007-02-14 |  | 23d |  | Ram; Elaborators; Priyatam | 1056h |
| 312 | 3.3.2.4.1 | Developer draft |  | 13d | 2007-01-01 | 2007-01-17 |  | 23d | 0d | Ram | 104h |
| 313 | 3.3.2.4.2 | Adopter review |  | 5d | 2007-01-18 | 2007-01-24 | 312 | 23d | 0d | Elaborators | 40h |
| 314 | 3.3.2.4.3 | Developer update |  | 5d | 2007-01-25 | 2007-01-31 | 313 | 23d | 0d | Ram | 40h |
| 315 | 3.3.2.4.4 | Deliver to BAH | milestone | 0d | 2007-01-31 | 2007-01-31 | 314 | 23d | 0d | Patrick |  |
| 316 | 3.3.2.4.5 | BAH review |  | 10d | 2007-02-01 | 2007-02-14 | 315 | 23d |  | BAH | 80h |

| ID | WBS | Task | Type | Duration | Start | Finish | Predecessors | Total slack | Free slack | Resources | Work |
| --- | --- | --- | --- | --- | --- | --- | --- | --- | --- | --- | --- |
| 317 | 3.3.3 | **SRS document** |  | 33d | 2007-01-01 | 2007-02-14 |  | 23d |  | Ram | 528h |
| 318 | 3.3.3.1 | Developer draft |  | 13d | 2007-01-01 | 2007-01-17 |  | 23d | 0d | Ram | 104h |
| 319 | 3.3.3.2 | Adopter review |  | 5d | 2007-01-18 | 2007-01-24 | 318 | 23d | 0d | Elaborators | 40h |
| 320 | 3.3.3.3 | Developer update |  | 5d | 2007-01-25 | 2007-01-31 | 319 | 23d | 0d | Ram | 40h |
| 321 | 3.3.3.4 | Deliver to BAH | milestone | 0d | 2007-01-31 | 2007-01-31 | 320 | 23d | 0d | Patrick |  |
| 322 | 3.3.3.5 | BAH review |  | 10d | 2007-02-01 | 2007-02-14 | 321 | 23d |  | BAH | 80h |
| 323 | 3.4 | **Analysis and Design** |  | 33d | 2007-01-01 | 2007-02-14 | 264 | 23d |  | Development team | 4056h |
| 324 | 3.4.1 | **UML diagrams (task 2.3.2)** |  | 33d | 2007-01-01 | 2007-02-14 |  | 23d |  | Development team | 528h |
| 325 | 3.4.1.1 | Developer draft |  | 13d | 2007-01-01 | 2007-01-17 |  | 23d | 0d | Development team | 104h |
| 326 | 3.4.1.2 | Adopter review |  | 5d | 2007-01-18 | 2007-01-24 | 325 | 23d | 0d | Elaborators | 40h |
| 327 | 3.4.1.3 | Developer update |  | 5d | 2007-01-25 | 2007-01-31 | 326 | 23d | 0d | Development team | 40h |
| 328 | 3.4.1.4 | Deliver to BAH | milestone | 0d | 2007-01-31 | 2007-01-31 | 327 | 23d | 0d | Patrick |  |
| 329 | 3.4.1.5 | BAH review |  | 10d | 2007-02-01 | 2007-02-14 | 328 | 23d |  | BAH | 80h |
| 330 | 3.4.2 | **Design document (task 2.4.2)** |  | 33d | 2007-01-01 | 2007-02-14 |  | 23d |  | Development team | 528h |
| 331 | 3.4.2.1 | Developer draft |  | 13d | 2007-01-01 | 2007-01-17 |  | 23d | 0d | Development team | 104h |
| 332 | 3.4.2.2 | Adopter review |  | 5d | 2007-01-18 | 2007-01-24 | 331 | 23d | 0d | Elaborators | 40h |
| 333 | 3.4.2.3 | Developer update |  | 5d | 2007-01-25 | 2007-01-31 | 332 | 23d | 0d | Development team | 40h |
| 334 | 3.4.2.4 | Deliver to BAH | milestone | 0d | 2007-01-31 | 2007-01-31 | 333 | 23d | 0d | Patrick |  |
| 335 | 3.4.2.5 | BAH review |  | 10d | 2007-02-01 | 2007-02-14 | 334 | 23d |  | BAH | 80h |
| 336 | 3.4.3 | **Draft architecture guide (task 2.8.1)** |  | 33d | 2007-01-01 | 2007-02-14 |  | 23d |  | Development team | 528h |
| 337 | 3.4.3.1 | Developer draft |  | 13d | 2007-01-01 | 2007-01-17 |  | 23d | 0d | Development team | 104h |
| 338 | 3.4.3.2 | Adopter review |  | 5d | 2007-01-18 | 2007-01-24 | 337 | 23d | 0d | Elaborators | 40h |
| 339 | 3.4.3.3 | Developer update |  | 5d | 2007-01-25 | 2007-01-31 | 338 | 23d | 0d | Development team | 40h |
| 340 | 3.4.3.4 | Deliver to BAH | milestone | 0d | 2007-01-31 | 2007-01-31 | 339 | 23d | 0d | Patrick |  |
| 341 | 3.4.3.5 | BAH review |  | 10d | 2007-02-01 | 2007-02-14 | 340 | 23d |  | BAH | 80h |

| ID | WBS | Task | Duration | Start | Finish | Predecessors | Total slack | Free slack | Resources | Work |
| --- | --- | --- | --- | --- | --- | --- | --- | --- | --- | --- |
| 342 | 3.4.4 | **Doman model** | 23d | 2007-01-01 | 2007-01-31 |  | 33d |  | Ram; Priyatam; Ramakrishna | 2208h |
| 343 | 3.4.4.1 | Harmonize C3PR model with BRIDG | 10d | 2007-01-01 | 2007-01-12 |  | 33d | 0d | Ram; Priyatam; Ramakrishna | 240h |
| 344 | 3.4.4.2 | Create registration model | 13d | 2007-01-15 | 2007-01-31 | 343 | 33d |  | Ram; Priyatam; Ramakrishna | 312h |
| 345 | 3.4.4.3 | Revise protocol model (including BRIDG harmonization) | 23d | 2007-01-01 | 2007-01-31 |  | 33d |  | Ram; Priyatam; Ramakrishna | 552h |
| 346 | 3.4.4.4 | Revise participant model (including BRIDG harmonization) | 23d | 2007-01-01 | 2007-01-31 |  | 33d |  | Ram; Priyatam; Ramakrishna | 552h |
| 347 | 3.5 | **Implementation** | 31d | 2007-01-03 | 2007-02-14 | 291 | 23d |  | Development team | 11064h |
| 348 | 3.5.1 | **Web interface** | 21d | 2007-01-03 | 2007-01-31 |  | 33d |  | Priyatam; Kruttik | 1680h |
| 349 | 3.5.1.1 | **Finalize protocol management interface** | 21d | 2007-01-03 | 2007-01-31 |  | 33d |  | Priyatam; Kruttik | 672h |
| 350 | 3.5.1.1.1 | Analyze use cases | 2d | 2007-01-03 | 2007-01-04 |  | 33d | 0d | Priyatam; Kruttik | 32h |
| 351 | 3.5.1.1.2 | Update interface | 5d | 2007-01-05 | 2007-01-11 | 350 | 33d | 0d | Priyatam; Kruttik | 80h |
| 352 | 3.5.1.1.3 | Hook into backend logic | 5d | 2007-01-12 | 2007-01-18 | 351 | 33d | 0d | Priyatam; Kruttik | 80h |
| 353 | 3.5.1.1.4 | Refine interface | 5d | 2007-01-19 | 2007-01-25 | 352 | 33d | 0d | Priyatam; Kruttik | 80h |
| 354 | 3.5.1.1.5 | Deploy and test | 4d | 2007-01-26 | 2007-01-31 | 353 | 33d |  | Priyatam; Kruttik | 64h |
| 355 | 3.5.1.2 | **Implement participant management interface** | 21d | 2007-01-03 | 2007-01-31 |  | 33d |  | Priyatam; Kruttik | 672h |
| 356 | 3.5.1.2.1 | Mockup interface | 2d | 2007-01-03 | 2007-01-04 |  | 33d | 0d | Priyatam; Kruttik | 32h |
| 357 | 3.5.1.2.2 | Implement base interface | 5d | 2007-01-05 | 2007-01-11 | 356 | 33d | 0d | Priyatam; Kruttik | 80h |
| 358 | 3.5.1.2.3 | Hook interface into backend logic | 5d | 2007-01-12 | 2007-01-18 | 357 | 33d | 0d | Priyatam; Kruttik | 80h |
| 359 | 3.5.1.2.4 | Refine interface | 5d | 2007-01-19 | 2007-01-25 | 358 | 33d | 0d | Priyatam; Kruttik | 80h |
| 360 | 3.5.1.2.5 | Deploy and test | 4d | 2007-01-26 | 2007-01-31 | 359 | 33d |  | Priyatam; Kruttik | 64h |
| 361 | 3.5.2 | **Enterprise Service Bus** | 20d | 2007-01-03 | 2007-01-30 |  | 34d |  | Manav; Kruttik | 2208h |
| 362 | 3.5.2.1 | **Implement participant creation message router** | 9d | 2007-01-03 | 2007-01-15 |  | 35d |  | Manav; Kruttik | 288h |
| 363 | 3.5.2.1.1 | Create router rules | 4d | 2007-01-03 | 2007-01-08 |  | 35d | 0d | Manav; Kruttik | 64h |
| 364 | 3.5.2.1.2 | Deploy and test router | 5d | 2007-01-09 | 2007-01-15 | 363 | 35d | 0d | Manav; Kruttik | 80h |
| 365 | 3.5.2.2 | **Implement participant creation message handler for C3PR** | 10d | 2007-01-16 | 2007-01-29 | 364 | 35d |  | Manav; Kruttik | 320h |
| 366 | 3.5.2.2.1 | Create inbound binding component | 5d | 2007-01-16 | 2007-01-22 |  | 35d | 0d | Manav; Kruttik | 80h |
| 367 | 3.5.2.2.2 | Create outbound binding component | 5d | 2007-01-23 | 2007-01-29 | 366 | 35d |  | Manav; Kruttik | 80h |

| ID | WBS | Task | Duration | Start | Finish | Predecessors | Total slack | Free slack | Resources | Work |
| --- | --- | --- | --- | --- | --- | --- | --- | --- | --- | --- |
| 368 | 3.5.2.3 | **Implement participant creation message handler for Study Calendar** | 10d | 2007-01-16 | 2007-01-29 | 364 | 35d |  | Manav; Kruttik | 320h |
| 369 | 3.5.2.3.1 | Create inbound binding component | 5d | 2007-01-16 | 2007-01-22 |  | 35d | 0d | Manav; Kruttik | 80h |
| 370 | 3.5.2.3.2 | Create outbound binding component | 5d | 2007-01-23 | 2007-01-29 | 369 | 35d |  | Manav; Kruttik | 80h |
| 371 | 3.5.2.4 | **Implement registration change message router** | 10d | 2007-01-03 | 2007-01-16 |  | 34d |  | Manav; Kruttik | 320h |
| 372 | 3.5.2.4.1 | Create router rules | 5d | 2007-01-03 | 2007-01-09 |  | 34d | 0d | Manav; Kruttik | 80h |
| 373 | 3.5.2.4.2 | Deploy and test router | 5d | 2007-01-10 | 2007-01-16 | 372 | 34d | 0d | Manav; Kruttik | 80h |
| 374 | 3.5.2.5 | **Implement registration change message handler for C3PR** | 10d | 2007-01-17 | 2007-01-30 | 373 | 34d |  | Manav; Kruttik | 320h |
| 375 | 3.5.2.5.1 | Create inbound binding component | 5d | 2007-01-17 | 2007-01-23 |  | 34d | 0d | Manav; Kruttik | 80h |
| 376 | 3.5.2.5.2 | Create outbound binding component | 5d | 2007-01-24 | 2007-01-30 | 375 | 34d |  | Manav; Kruttik | 80h |
| 377 | 3.5.2.6 | **Implement registration change message handler for Study Calendar** | 10d | 2007-01-17 | 2007-01-30 | 373 | 34d |  | Manav; Kruttik | 320h |
| 378 | 3.5.2.6.1 | Create inbound binding component | 5d | 2007-01-17 | 2007-01-23 |  | 34d | 0d | Manav; Kruttik | 80h |
| 379 | 3.5.2.6.2 | Create outbound binding component | 5d | 2007-01-24 | 2007-01-30 | 378 | 34d |  | Manav; Kruttik | 80h |
| 380 | 3.5.3 | **Grid service** | 19d | 2007-01-03 | 2007-01-29 |  | 35d |  | Manav | 760h |
| 381 | 3.5.3.1 | **Implement participant creation service** | 19d | 2007-01-03 | 2007-01-29 |  | 35d |  | Manav | 304h |
| 382 | 3.5.3.1.1 | Create service skeleton | 5d | 2007-01-03 | 2007-01-09 |  | 35d | 0d | Manav | 40h |
| 383 | 3.5.3.1.2 | Implement skeleton | 5d | 2007-01-10 | 2007-01-16 | 382 | 35d | 0d | Manav | 40h |
| 384 | 3.5.3.1.3 | Hook in backend database | 5d | 2007-01-17 | 2007-01-23 | 383 | 35d | 0d | Manav | 40h |
| 385 | 3.5.3.1.4 | Deploy and test | 4d | 2007-01-24 | 2007-01-29 | 384 | 35d |  | Manav | 32h |
| 386 | 3.5.3.2 | **Implement registration change service** | 19d | 2007-01-03 | 2007-01-29 |  | 35d |  | Manav | 304h |
| 387 | 3.5.3.2.1 | Create service skeleton | 5d | 2007-01-03 | 2007-01-09 |  | 35d | 0d | Manav | 40h |
| 388 | 3.5.3.2.2 | Implement skeleton | 5d | 2007-01-10 | 2007-01-16 | 387 | 35d | 0d | Manav | 40h |
| 389 | 3.5.3.2.3 | Hook in backend database | 5d | 2007-01-17 | 2007-01-23 | 388 | 35d | 0d | Manav | 40h |
| 390 | 3.5.3.2.4 | Deploy and test | 4d | 2007-01-24 | 2007-01-29 | 389 | 35d |  | Manav | 32h |
| 391 | 3.5.4 | **Database/Domain Model** | 21d | 2007-01-03 | 2007-01-31 |  | 33d |  | Ram; Priyatam; Ramakrishna | 3528h |
| 392 | 3.5.4.1 | **Update database with protocol model changes** | 21d | 2007-01-03 | 2007-01-31 |  | 33d |  | Ram; Priyatam; Ramakrishna | 1008h |
| 393 | 3.5.4.1.1 | Create database model | 6d | 2007-01-03 | 2007-01-10 |  | 33d | 0d | Ram; Priyatam; Ramakrishna | 144h |
| 394 | 3.5.4.1.2 | Create DDLs | 6d | 2007-01-11 | 2007-01-18 | 393 | 33d | 0d | Ram; Priyatam; Ramakrishna | 144h |
| 395 | 3.5.4.1.3 | Apply DDLs and create test data | 5d | 2007-01-19 | 2007-01-25 | 394 | 33d | 0d | Ram; Priyatam; Ramakrishna | 120h |
| 396 | 3.5.4.1.4 | Deploy and test | 4d | 2007-01-26 | 2007-01-31 | 395 | 33d |  | Ram; Priyatam; Ramakrishna | 96h |

| ID | WBS | Task | Duration | Start | Finish | Predecessors | Total slack | Free slack | Resources | Work |
| --- | --- | --- | --- | --- | --- | --- | --- | --- | --- | --- |
| 397 | 3.5.4.2 | **Update database with participant model changes** | 21d | 2007-01-03 | 2007-01-31 |  | 33d |  | Ram; Priyatam; Ramakrishna | 1008h |
| 398 | 3.5.4.2.1 | Create database model | 6d | 2007-01-03 | 2007-01-10 |  | 33d | 0d | Ram; Priyatam; Ramakrishna | 144h |
| 399 | 3.5.4.2.2 | Create DDLs | 6d | 2007-01-11 | 2007-01-18 | 398 | 33d | 0d | Ram; Priyatam; Ramakrishna | 144h |
| 400 | 3.5.4.2.3 | Apply DDLs and create test data | 5d | 2007-01-19 | 2007-01-25 | 399 | 33d | 0d | Ram; Priyatam; Ramakrishna | 120h |
| 401 | 3.5.4.2.4 | Deploy and test | 4d | 2007-01-26 | 2007-01-31 | 400 | 33d |  | Ram; Priyatam; Ramakrishna | 96h |
| 402 | 3.5.4.3 | **Implement database with registration model** | 21d | 2007-01-03 | 2007-01-31 |  | 33d |  | Ram; Priyatam; Ramakrishna | 1008h |
| 403 | 3.5.4.3.1 | Create database model | 6d | 2007-01-03 | 2007-01-10 |  | 33d | 0d | Ram; Priyatam; Ramakrishna | 144h |
| 404 | 3.5.4.3.2 | Create DDLs | 6d | 2007-01-11 | 2007-01-18 | 403 | 33d | 0d | Ram; Priyatam; Ramakrishna | 144h |
| 405 | 3.5.4.3.3 | Apply DDLs and create test data | 5d | 2007-01-19 | 2007-01-25 | 404 | 33d | 0d | Ram; Priyatam; Ramakrishna | 120h |
| 406 | 3.5.4.3.4 | Deploy and test | 4d | 2007-01-26 | 2007-01-31 | 405 | 33d |  | Ram; Priyatam; Ramakrishna | 96h |
| 407 | 3.5.5 | **Security** | 16d | 2007-01-03 | 2007-01-24 |  | 38d |  | Manav | 464h |
| 408 | 3.5.5.1 | **Implement grid grouper** | 11d | 2007-01-03 | 2007-01-17 |  | 38d |  | Manav | 176h |
| 409 | 3.5.5.1.1 | Deploy grid grouper | 6d | 2007-01-03 | 2007-01-10 |  | 38d | 0d | Manav | 48h |
| 410 | 3.5.5.1.2 | Create users and groups | 5d | 2007-01-11 | 2007-01-17 | 409 | 43d |  | Manav | 40h |
| 411 | 3.5.5.2 | **Implement CSM authorization in grid service** | 10d | 2007-01-11 | 2007-01-24 | 409 | 38d |  | Manav | 160h |
| 412 | 3.5.5.2.1 | Hook CSM into grid service | 5d | 2007-01-11 | 2007-01-17 |  | 38d | 0d | Manav | 40h |
| 413 | 3.5.5.2.2 | Hook CSM into grid grouper | 5d | 2007-01-18 | 2007-01-24 | 412 | 38d |  | Manav | 40h |
| 414 | 3.5.6 | **Business layer** | 21d | 2007-01-03 | 2007-01-31 |  | 33d |  | Priyatam; Kruttik | 1680h |
| 415 | 3.5.6.1 | **Implement participant creation service** | 21d | 2007-01-03 | 2007-01-31 |  | 33d |  | Priyatam; Kruttik | 672h |
| 416 | 3.5.6.1.1 | Design APIs | 5d | 2007-01-03 | 2007-01-09 |  | 33d | 0d | Priyatam; Kruttik | 80h |
| 417 | 3.5.6.1.2 | Implement APIs | 6d | 2007-01-10 | 2007-01-17 | 416 | 33d | 0d | Priyatam; Kruttik | 96h |
| 418 | 3.5.6.1.3 | Hook in database | 5d | 2007-01-18 | 2007-01-24 | 417 | 33d | 0d | Priyatam; Kruttik | 80h |
| 419 | 3.5.6.1.4 | Deploy and test | 5d | 2007-01-25 | 2007-01-31 | 418 | 33d |  | Priyatam; Kruttik | 80h |
| 420 | 3.5.6.2 | **Implement registration change service** | 21d | 2007-01-03 | 2007-01-31 |  | 33d |  | Priyatam; Kruttik | 672h |
| 421 | 3.5.6.2.1 | Design APIs | 5d | 2007-01-03 | 2007-01-09 |  | 33d | 0d | Priyatam; Kruttik | 80h |
| 422 | 3.5.6.2.2 | Implement APIs | 6d | 2007-01-10 | 2007-01-17 | 421 | 33d | 0d | Priyatam; Kruttik | 96h |
| 423 | 3.5.6.2.3 | Hook in database | 5d | 2007-01-18 | 2007-01-24 | 422 | 33d | 0d | Priyatam; Kruttik | 80h |
| 424 | 3.5.6.2.4 | Deploy and test | 5d | 2007-01-25 | 2007-01-31 | 423 | 33d |  | Priyatam; Kruttik | 80h |

| ID | WBS | Task | Type | Duration | Start | Finish | Predecessors | Total slack | Free slack | Constraint | Resources | Work |
| --- | --- | --- | --- | --- | --- | --- | --- | --- | --- | --- | --- | --- |
| 425 | 3.5.7 | **Prototype code (task 2.5.3)** |  | 31d | 2007-01-03 | 2007-02-14 |  | 23d |  |  | Patrick | 496h |
| 426 | 3.5.7.1 | Developer draft |  | 21d | 2007-01-03 | 2007-01-31 |  | 23d | 0d |  | Development team | 168h |
| 427 | 3.5.7.2 | Submit to BAH | milestone | 0d | 2007-01-31 | 2007-01-31 | 426 | 23d | 0d |  | Patrick |  |
| 428 | 3.5.7.3 | BAH review |  | 10d | 2007-02-01 | 2007-02-14 | 427 | 23d |  |  | BAH | 80h |
| 429 | 3.6 | **Testing** |  | 31d | 2007-01-03 | 2007-02-14 | 291 | 23d |  |  | Development team | 744h |
| 430 | 3.6.1 | Create unit tests |  | 19d | 2007-01-03 | 2007-01-29 |  | 23d | 0d |  | Development team | 152h |
| 431 | 3.6.2 | Implement integration test framework |  | 19d | 2007-01-03 | 2007-01-29 |  | 23d | 0d |  | Patrick | 152h |
| 432 | 3.6.3 | **Test report (task 2.7.3)** |  | 12d | 2007-01-30 | 2007-02-14 | 431, 430 | 23d |  |  | Development team | 192h |
| 433 | 3.6.3.1 | Developer draft |  | 2d | 2007-01-30 | 2007-01-31 |  | 23d | 0d |  | Development team | 16h |
| 434 | 3.6.3.2 | Deliver to BAH | milestone | 0d | 2007-01-31 | 2007-01-31 | 433 | 23d | 0d |  | Patrick |  |
| 435 | 3.6.3.3 | BAH review |  | 10d | 2007-02-01 | 2007-02-14 | 434 | 23d |  |  | BAH | 80h |
| 436 | 4 | **Iteration 4** |  | 33d | 2007-02-01 | 2007-03-19 |  | 0d |  |  |  | 13400h |
| 437 | 4.1 | Iteration start | milestone | 0d | 2007-02-01 | 2007-02-01 |  | 0d |  | start no earlier than 2007-02-01 |  |  |
| 438 | 4.2 | **Project Management** |  | 30d | 2007-02-01 | 2007-03-14 | 437 | 3d |  |  | Patrick | 2320h |
| 439 | 4.2.1 | **Update risk matrix (task 1.4.3)** |  | 20d | 2007-02-01 | 2007-02-28 |  | 13d |  |  | Patrick | 320h |
| 440 | 4.2.1.1 | Developer draft |  | 10d | 2007-02-01 | 2007-02-14 |  | 13d | 0d |  | Patrick | 80h |
| 441 | 4.2.1.2 | Deliver to BAH | milestone | 0d | 2007-02-14 | 2007-02-14 | 440 | 13d | 0d |  | Patrick |  |
| 442 | 4.2.1.3 | BAH review |  | 10d | 2007-02-15 | 2007-02-28 | 441 | 13d |  |  | BAH | 80h |
| 443 | 4.2.2 | **Update risk matrix (task 1.3.3)** |  | 20d | 2007-02-01 | 2007-02-28 |  | 13d |  |  | Patrick | 320h |
| 444 | 4.2.2.1 | Developer draft |  | 10d | 2007-02-01 | 2007-02-14 |  | 13d | 0d |  | Patrick | 80h |
| 445 | 4.2.2.2 | Deliver to BAH | milestone | 0d | 2007-02-14 | 2007-02-14 | 444 | 13d | 0d |  | Patrick |  |
| 446 | 4.2.2.3 | BAH review |  | 10d | 2007-02-15 | 2007-02-28 | 445 | 13d |  |  | BAH | 80h |
| 447 | 4.2.3 | **Monthly report (task 1.3.3)** |  | 30d | 2007-02-01 | 2007-03-14 |  | 3d |  |  | Patrick | 480h |
| 448 | 4.2.3.1 | Developer draft |  | 20d | 2007-02-01 | 2007-02-28 |  | 3d | 0d |  | Patrick | 160h |
| 449 | 4.2.3.2 | Deliver to BAH | milestone | 0d | 2007-02-28 | 2007-02-28 | 448 | 3d | 0d |  | Patrick |  |
| 450 | 4.2.3.3 | BAH review |  | 10d | 2007-03-01 | 2007-03-14 | 449 | 3d |  |  | BAH | 80h |

| ID | WBS | Task | Type | Duration | Start | Finish | Predecessors | Total slack | Free slack | Resources | Work |
| --- | --- | --- | --- | --- | --- | --- | --- | --- | --- | --- | --- |
| 451 | 4.2.4 | **Adoption Collaboration Report (task 1.7)** |  | 30d | 2007-02-01 | 2007-03-14 |  | 3d |  | Patrick | 480h |
| 452 | 4.2.4.1 | Developer draft |  | 10d | 2007-02-01 | 2007-02-14 |  | 3d | 0d | Patrick | 80h |
| 453 | 4.2.4.2 | Adopter review |  | 5d | 2007-02-15 | 2007-02-21 | 452 | 3d | 0d | Elaborators | 40h |
| 454 | 4.2.4.3 | Developer update |  | 5d | 2007-02-22 | 2007-02-28 | 453 | 3d | 0d | Patrick | 40h |
| 455 | 4.2.4.4 | Deliver to BAH | milestone | 0d | 2007-02-28 | 2007-02-28 | 454 | 3d | 0d | Patrick |  |
| 456 | 4.2.4.5 | BAH review |  | 10d | 2007-03-01 | 2007-03-14 | 455 | 3d |  | BAH | 80h |
| 457 | 4.2.5 | **Test plan document (task 2.6.3)** |  | 30d | 2007-02-01 | 2007-03-14 |  | 3d |  | Patrick | 480h |
| 458 | 4.2.5.1 | Developer draft |  | 10d | 2007-02-01 | 2007-02-14 |  | 3d | 0d | Patrick | 80h |
| 459 | 4.2.5.2 | Adopter review |  | 5d | 2007-02-15 | 2007-02-21 | 458 | 3d | 0d | Elaborators | 40h |
| 460 | 4.2.5.3 | Developer update |  | 5d | 2007-02-22 | 2007-02-28 | 459 | 3d | 0d | Patrick | 40h |
| 461 | 4.2.5.4 | Deliver to BAH | milestone | 0d | 2007-02-28 | 2007-02-28 | 460 | 3d | 0d | Patrick |  |
| 462 | 4.2.5.5 | BAH review |  | 10d | 2007-03-01 | 2007-03-14 | 461 | 3d |  | BAH | 80h |
| 463 | 4.3 | **Requirements** |  | 30d | 2007-02-01 | 2007-03-14 | 437 | 0d |  | Development team; Elaborators | 2416h |
| 464 | 4.3.1 | Create level 1 use cases and requirements |  | 2d | 2007-02-01 | 2007-02-02 |  | 0d |  | Ram | 16h |
| 465 | 4.3.2 | **Use case document** |  | 30d | 2007-02-01 | 2007-03-14 |  | 3d |  | Ram; Elaborators; Priyatam | 1440h |
| 466 | 4.3.2.1 | **Finalize elaboration use cases** |  | 30d | 2007-02-01 | 2007-03-14 |  | 3d |  | Ram; Elaborators | 720h |
| 467 | 4.3.2.1.1 | Developer draft |  | 10d | 2007-02-01 | 2007-02-14 |  | 3d | 0d | Ram | 80h |
| 468 | 4.3.2.1.2 | Adopter review |  | 5d | 2007-02-15 | 2007-02-21 | 467 | 3d | 0d | Elaborators | 40h |
| 469 | 4.3.2.1.3 | Developer update |  | 5d | 2007-02-22 | 2007-02-28 | 468 | 3d | 0d | Ram | 40h |
| 470 | 4.3.2.1.4 | Deliver to BAH | milestone | 0d | 2007-02-28 | 2007-02-28 | 469 | 3d | 0d | Patrick |  |
| 471 | 4.3.2.1.5 | BAH review |  | 10d | 2007-03-01 | 2007-03-14 | 470 | 3d |  | BAH | 80h |
| 472 | 4.3.3 | **SRS document** |  | 30d | 2007-02-01 | 2007-03-14 |  | 3d |  | Ram | 480h |
| 473 | 4.3.3.1 | Developer draft |  | 10d | 2007-02-01 | 2007-02-14 |  | 3d | 0d | Ram | 80h |
| 474 | 4.3.3.2 | Adopter review |  | 5d | 2007-02-15 | 2007-02-21 | 473 | 3d | 0d | Elaborators | 40h |
| 475 | 4.3.3.3 | Developer update |  | 5d | 2007-02-22 | 2007-02-28 | 474 | 3d | 0d | Ram | 40h |
| 476 | 4.3.3.4 | Deliver to BAH | milestone | 0d | 2007-02-28 | 2007-02-28 | 475 | 3d | 0d | Patrick |  |
| 477 | 4.3.3.5 | BAH review |  | 10d | 2007-03-01 | 2007-03-14 | 476 | 3d |  | BAH | 80h |

| ID | WBS | Task | Type | Duration | Start | Finish | Predecessors | Total slack | Free slack | Resources | Work |
| --- | --- | --- | --- | --- | --- | --- | --- | --- | --- | --- | --- |
| 478 | 4.4 | **Analysis and Design** |  | 30d | 2007-02-01 | 2007-03-14 | 437 | 3d |  | Development team | 2640h |
| 479 | 4.4.1 | **UML diagrams (task 2.3.2)** |  | 30d | 2007-02-01 | 2007-03-14 |  | 3d |  | Development team | 480h |
| 480 | 4.4.1.1 | Developer draft |  | 10d | 2007-02-01 | 2007-02-14 |  | 3d | 0d | Development team | 80h |
| 481 | 4.4.1.2 | Adopter review |  | 5d | 2007-02-15 | 2007-02-21 | 480 | 3d | 0d | Elaborators | 40h |
| 482 | 4.4.1.3 | Developer update |  | 5d | 2007-02-22 | 2007-02-28 | 481 | 3d | 0d | Development team | 40h |
| 483 | 4.4.1.4 | Deliver to BAH | milestone | 0d | 2007-02-28 | 2007-02-28 | 482 | 3d | 0d | Patrick |  |
| 484 | 4.4.1.5 | BAH review |  | 10d | 2007-03-01 | 2007-03-14 | 483 | 3d |  | BAH | 80h |
| 485 | 4.4.2 | **Design document (task 2.4.2)** |  | 30d | 2007-02-01 | 2007-03-14 |  | 3d |  | Development team | 480h |
| 486 | 4.4.2.1 | Developer draft |  | 10d | 2007-02-01 | 2007-02-14 |  | 3d | 0d | Development team | 80h |
| 487 | 4.4.2.2 | Adopter review |  | 5d | 2007-02-15 | 2007-02-21 | 486 | 3d | 0d | Elaborators | 40h |
| 488 | 4.4.2.3 | Developer update |  | 5d | 2007-02-22 | 2007-02-28 | 487 | 3d | 0d | Development team | 40h |
| 489 | 4.4.2.4 | Deliver to BAH | milestone | 0d | 2007-02-28 | 2007-02-28 | 488 | 3d | 0d | Patrick |  |
| 490 | 4.4.2.5 | BAH review |  | 10d | 2007-03-01 | 2007-03-14 | 489 | 3d |  | BAH | 80h |
| 491 | 4.4.3 | **Draft architecture guide (task 2.8.1)** |  | 30d | 2007-02-01 | 2007-03-14 |  | 3d |  | Development team | 480h |
| 492 | 4.4.3.1 | Developer draft |  | 10d | 2007-02-01 | 2007-02-14 |  | 3d | 0d | Development team | 80h |
| 493 | 4.4.3.2 | Adopter review |  | 5d | 2007-02-15 | 2007-02-21 | 492 | 3d | 0d | Elaborators | 40h |
| 494 | 4.4.3.3 | Developer update |  | 5d | 2007-02-22 | 2007-02-28 | 493 | 3d | 0d | Development team | 40h |
| 495 | 4.4.3.4 | Deliver to BAH | milestone | 0d | 2007-02-28 | 2007-02-28 | 494 | 3d | 0d | Patrick |  |
| 496 | 4.4.3.5 | BAH review |  | 10d | 2007-03-01 | 2007-03-14 | 495 | 3d |  | BAH | 80h |
| 497 | 4.4.4 | **Doman model** |  | 20d | 2007-02-01 | 2007-02-28 |  | 13d |  | Ram; Priyatam; Ramakrishna | 960h |
| 498 | 4.4.4.1 | Harmonize C3PR model with BRIDG |  | 10d | 2007-02-01 | 2007-02-14 |  | 13d | 0d | Ram; Priyatam; Ramakrishna | 240h |
| 499 | 4.4.4.2 | Revise elaboration models |  | 10d | 2007-02-15 | 2007-02-28 | 498 | 13d |  | Ram; Priyatam; Ramakrishna | 240h |
| 500 | 4.5 | **Implementation** |  | 31d | 2007-02-05 | 2007-03-19 | 464 | 0d |  | Development team | 5352h |
| 501 | 4.5.1 | **Web interface** |  | 18d | 2007-02-05 | 2007-02-28 |  | 13d |  | Priyatam; Kruttik | 864h |
| 502 | 4.5.1.1 | **Harden all interfaces** |  | 18d | 2007-02-05 | 2007-02-28 |  | 13d |  | Priyatam; Kruttik | 576h |
| 503 | 4.5.1.1.1 | Analyze use cases |  | 2d | 2007-02-05 | 2007-02-06 |  | 13d | 0d | Priyatam; Kruttik | 32h |
| 504 | 4.5.1.1.2 | Update interface |  | 4d | 2007-02-07 | 2007-02-12 | 503 | 13d | 0d | Priyatam; Kruttik | 64h |
| 505 | 4.5.1.1.3 | Hook into backend logic |  | 4d | 2007-02-13 | 2007-02-16 | 504 | 13d | 0d | Priyatam; Kruttik | 64h |
| 506 | 4.5.1.1.4 | Refine interface |  | 4d | 2007-02-19 | 2007-02-22 | 505 | 13d | 0d | Priyatam; Kruttik | 64h |
| 507 | 4.5.1.1.5 | Deploy and test |  | 4d | 2007-02-23 | 2007-02-28 | 506 | 13d |  | Priyatam; Kruttik | 64h |

| ID | WBS | Task | Duration | Start | Finish | Predecessors | Total slack | Free slack | Resources | Work |
| --- | --- | --- | --- | --- | --- | --- | --- | --- | --- | --- |
| 508 | 4.5.2 | **Enterprise Service Bus** | 18d | 2007-02-05 | 2007-02-28 |  | 13d |  | Manav; Kruttik | 1152h |
| 509 | 4.5.2.1 | **Harden all message routers** | 9d | 2007-02-05 | 2007-02-15 |  | 13d |  | Manav; Kruttik | 288h |
| 510 | 4.5.2.1.1 | Create router rules | 4d | 2007-02-05 | 2007-02-08 |  | 13d | 0d | Manav; Kruttik | 64h |
| 511 | 4.5.2.1.2 | Deploy and test router | 5d | 2007-02-09 | 2007-02-15 | 510 | 13d | 0d | Manav; Kruttik | 80h |
| 512 | 4.5.2.2 | **Harden all handlers for C3PR** | 9d | 2007-02-16 | 2007-02-28 | 511 | 13d |  | Manav; Kruttik | 288h |
| 513 | 4.5.2.2.1 | Create inbound binding component | 4d | 2007-02-16 | 2007-02-21 |  | 13d | 0d | Manav; Kruttik | 64h |
| 514 | 4.5.2.2.2 | Create outbound binding component | 5d | 2007-02-22 | 2007-02-28 | 513 | 13d |  | Manav; Kruttik | 80h |
| 515 | 4.5.2.3 | **Harden all handlers fo for Study Calendar** | 9d | 2007-02-16 | 2007-02-28 | 511 | 13d |  | Manav; Kruttik | 288h |
| 516 | 4.5.2.3.1 | Create inbound binding component | 4d | 2007-02-16 | 2007-02-21 |  | 13d | 0d | Manav; Kruttik | 64h |
| 517 | 4.5.2.3.2 | Create outbound binding component | 5d | 2007-02-22 | 2007-02-28 | 516 | 13d |  | Manav; Kruttik | 80h |
| 518 | 4.5.3 | **Grid service** | 18d | 2007-02-05 | 2007-02-28 |  | 13d |  | Manav | 432h |
| 519 | 4.5.3.1 | **Harden services** | 18d | 2007-02-05 | 2007-02-28 |  | 13d |  | Manav | 288h |
| 520 | 4.5.3.1.1 | Create service skeleton | 5d | 2007-02-05 | 2007-02-09 |  | 13d | 0d | Manav | 40h |
| 521 | 4.5.3.1.2 | Implement skeleton | 5d | 2007-02-12 | 2007-02-16 | 520 | 13d | 0d | Manav | 40h |
| 522 | 4.5.3.1.3 | Hook in backend database | 4d | 2007-02-19 | 2007-02-22 | 521 | 13d | 0d | Manav | 32h |
| 523 | 4.5.3.1.4 | Deploy and test | 4d | 2007-02-23 | 2007-02-28 | 522 | 13d |  | Manav | 32h |
| 524 | 4.5.4 | **Database/Domain Model** | 18d | 2007-02-05 | 2007-02-28 |  | 13d |  | Ram; Priyatam; Ramakrishna | 1296h |
| 525 | 4.5.4.1 | **Harden domain models** | 18d | 2007-02-05 | 2007-02-28 |  | 13d |  | Ram; Priyatam; Ramakrishna | 864h |
| 526 | 4.5.4.1.1 | Create database model | 5d | 2007-02-05 | 2007-02-09 |  | 13d | 0d | Ram; Priyatam; Ramakrishna | 120h |
| 527 | 4.5.4.1.2 | Create DDLs | 5d | 2007-02-12 | 2007-02-16 | 526 | 13d | 0d | Ram; Priyatam; Ramakrishna | 120h |
| 528 | 4.5.4.1.3 | Apply DDLs and create test data | 4d | 2007-02-19 | 2007-02-22 | 527 | 13d | 0d | Ram; Priyatam; Ramakrishna | 96h |
| 529 | 4.5.4.1.4 | Deploy and test | 4d | 2007-02-23 | 2007-02-28 | 528 | 13d |  | Ram; Priyatam; Ramakrishna | 96h |
| 530 | 4.5.5 | **Business layer** | 18d | 2007-02-05 | 2007-02-28 |  | 13d |  | Priyatam; Kruttik | 864h |
| 531 | 4.5.5.1 | **Harden business services** | 18d | 2007-02-05 | 2007-02-28 |  | 13d |  | Priyatam; Kruttik | 576h |
| 532 | 4.5.5.1.1 | Design APIs | 5d | 2007-02-05 | 2007-02-09 |  | 13d | 0d | Priyatam; Kruttik | 80h |
| 533 | 4.5.5.1.2 | Implement APIs | 5d | 2007-02-12 | 2007-02-16 | 532 | 13d | 0d | Priyatam; Kruttik | 80h |
| 534 | 4.5.5.1.3 | Hook in database | 4d | 2007-02-19 | 2007-02-22 | 533 | 13d | 0d | Priyatam; Kruttik | 64h |
| 535 | 4.5.5.1.4 | Deploy and test | 4d | 2007-02-23 | 2007-02-28 | 534 | 13d |  | Priyatam; Kruttik | 64h |

| ID | WBS | Task | Type | Duration | Start | Finish | Predecessors | Total slack | Free slack | Constraint | Resources | Work |
| --- | --- | --- | --- | --- | --- | --- | --- | --- | --- | --- | --- | --- |
| 536 | 4.5.6 | **Prototype code (task 2.5.3)** |  | 31d | 2007-02-05 | 2007-03-19 |  | 0d |  |  | Patrick | 496h |
| 537 | 4.5.6.1 | Developer draft |  | 21d | 2007-02-05 | 2007-03-05 |  | 0d |  |  | Development team | 168h |
| 538 | 4.5.6.2 | Submit to BAH | milestone | 0d | 2007-03-05 | 2007-03-05 | 537 | 0d |  |  | Patrick |  |
| 539 | 4.5.6.3 | BAH review |  | 10d | 2007-03-06 | 2007-03-19 | 538 | 0d |  |  | BAH | 80h |
| 540 | 4.6 | **Testing** |  | 28d | 2007-02-05 | 2007-03-14 | 464 | 3d |  |  | Development team | 672h |
| 541 | 4.6.1 | Create unit tests |  | 16d | 2007-02-05 | 2007-02-26 |  | 3d |  |  | Development team | 128h |
| 542 | 4.6.2 | Implement integration test framework |  | 16d | 2007-02-05 | 2007-02-26 |  | 3d | 0d |  | Patrick | 128h |
| 543 | 4.6.3 | **Test report (task 2.7.3)** |  | 12d | 2007-02-27 | 2007-03-14 | 541, 542 | 3d |  |  | Development team | 192h |
| 544 | 4.6.3.1 | Developer draft |  | 2d | 2007-02-27 | 2007-02-28 |  | 3d | 0d |  | Development team | 16h |
| 545 | 4.6.3.2 | Deliver to BAH | milestone | 0d | 2007-02-28 | 2007-02-28 | 544 | 3d | 0d |  | Patrick |  |
| 546 | 4.6.3.3 | BAH review |  | 10d | 2007-03-01 | 2007-03-14 | 545 | 3d |  |  | BAH | 80h |
| 547 | 4.6.4 | Deploy baseline C3PR at adopter sites |  | 8d | 2007-02-19 | 2007-02-28 |  | 13d |  | start no earlier than 2007-02-19 |  |  |
